# Andy's Coffee POS

Schedule from MS Project XML, 2026-08-10 to 2026-11-25, status date 2026-11-20, costs in $, A marks actual dates.
Cronograma desglosado con control de avance (documento 1.4): línea base 0 con cierre el 20-nov y línea base 1 reprogramada al 25-nov-2026
Andy's Café y Brunch

## Calendars

- Andy's Coffee POS (lunes a sábado, 8 h): Mon-Sat 09:00-13:00, 14:00-18:00; Sun off.

## Resources

| Resource | Group | Rate | Notes |
| --- | --- | --- | --- |
| Ruiz Campos José Fernando | Equipo del proyecto (PO, SM, AS, UX, DEV, QA, DO) | 120 | Única persona del equipo; ocupa los siete puestos del plan de recursos humanos. Tarifa integral de $120 MXN/h. |

## Schedule

| ID | WBS | Task | Type | Duration | Start | Finish | Predecessors | Complete | Remaining | Baseline start | Baseline finish | Baseline duration | Baseline 1 start | Baseline 1 finish | Resources | Work | Actual work | Cost | Baseline cost | Actual cost | Sprint | Fase (EDT) | Calidad y sostenibilidad (2.3) | Puesto (plan de RR. HH.) | Entregable | O (semanas) | M (semanas) | P (semanas) | Te (semanas) | Varianza |
| --- | --- | --- | --- | --- | --- | --- | --- | --- | --- | --- | --- | --- | --- | --- | --- | --- | --- | --- | --- | --- | --- | --- | --- | --- | --- | --- | --- | --- | --- | --- |
| 1 | 1 | **Andy's Coffee POS** |  | 93d | 2026-08-10 09:00 A | 2026-11-25 18:00 |  |  | 89d | 2026-08-10 09:00 | 2026-11-20 18:00 | 89d | 2026-08-10 09:00 | 2026-11-25 18:00 |  | 660h |  | 79,200 | 79,200 |  | S1–SC | 1.0 Andy's Coffee POS |  |  |  |  |  |  |  |  |
| 2 | 1.1 | **1.1 Iniciación** |  | 4.45d | 2026-08-10 09:00 A | 2026-08-14 12:36 A |  | 100% |  | 2026-08-10 09:00 | 2026-08-14 12:36 | 4.45d | 2026-08-10 09:00 | 2026-08-14 12:36 |  | 32h | 32h | 3,840 | 3,840 | 3,840 | S1 | 1.1 Iniciación |  |  |  |  |  |  |  |  |
| 3 | 1.1.1 | **Actividad 1 · Acta de inicio y objetivo aprobado** |  | 2.23d | 2026-08-10 09:00 A | 2026-08-12 10:48 A |  | 100% |  | 2026-08-10 09:00 | 2026-08-12 10:48 | 2.23d | 2026-08-10 09:00 | 2026-08-12 10:48 |  | 16h | 16h | 1,920 | 1,920 | 1,920 | S1 | 1.1 Iniciación | AC-16 (D1); SO-12 | PO, AS | D1 | 0.15 | 0.37 | 0.59 | 0.37 | 0.01 |
| 4 | 1.1.1.1 | **1.1.1.1 Necesidad, objetivo y justificación del proyecto** |  | 0.83d | 2026-08-10 09:00 A | 2026-08-10 16:40 A |  | 100% |  | 2026-08-10 09:00 | 2026-08-10 16:40 | 0.83d | 2026-08-10 09:00 | 2026-08-10 16:40 |  | 6h | 6h | 720 | 720 | 720 | S1 | 1.1 Iniciación |  | PO | D1 |  |  |  |  |  |
| 5 | 1.1.1.1.1 | Entrevistar a la propietaria sobre la necesidad y los problemas detectados |  | 0.42d | 2026-08-10 09:00 A | 2026-08-10 12:20 A |  | 100% |  | 2026-08-10 09:00 | 2026-08-10 12:20 | 0.42d | 2026-08-10 09:00 | 2026-08-10 12:20 | Ruiz Campos José Fernando [89.89%] | 3h | 3h | 360 | 360 | 360 | S1 | 1.1 Iniciación |  | PO | D1 |  |  |  |  |  |
| 6 | 1.1.1.1.2 | Redactar la necesidad, el objetivo y la justificación |  | 0.42d | 2026-08-10 12:20 A | 2026-08-10 16:40 A | 5 | 100% |  | 2026-08-10 12:20 | 2026-08-10 16:40 | 0.42d | 2026-08-10 12:20 | 2026-08-10 16:40 | Ruiz Campos José Fernando [89.89%] | 3h | 3h | 360 | 360 | 360 | S1 | 1.1 Iniciación |  | PO | D1 |  |  |  |  |  |
| 7 | 1.1.1.2 | **1.1.1.2 Acta de constitución aprobada** |  | 1.39d | 2026-08-10 16:40 A | 2026-08-12 10:48 A |  | 100% |  | 2026-08-10 16:40 | 2026-08-12 10:48 | 1.39d | 2026-08-10 16:40 | 2026-08-12 10:48 |  | 10h | 10h | 1,200 | 1,200 | 1,200 | S1 | 1.1 Iniciación |  | PO | D1 |  |  |  |  |  |
| 8 | 1.1.1.2.1 | Definir restricciones, supuestos y alcance inicial |  | 0.56d | 2026-08-10 16:40 A | 2026-08-11 12:08 A | 6 | 100% |  | 2026-08-10 16:40 | 2026-08-11 12:08 | 0.56d | 2026-08-10 16:40 | 2026-08-11 12:08 | Ruiz Campos José Fernando [89.89%] | 4h | 4h | 480 | 480 | 480 | S1 | 1.1 Iniciación |  | PO | D1 |  |  |  |  |  |
| 9 | 1.1.1.2.2 | Elaborar el acta de constitución del proyecto |  | 0.55d | 2026-08-11 12:08 A | 2026-08-11 17:34 A | 8 | 100% |  | 2026-08-11 12:08 | 2026-08-11 17:34 | 0.55d | 2026-08-11 12:08 | 2026-08-11 17:34 | Ruiz Campos José Fernando [89.89%] | 4h | 4h | 480 | 480 | 480 | S1 | 1.1 Iniciación |  | PO | D1 |  |  |  |  |  |
| 10 | 1.1.1.2.3 | Revisar el acta con la lista de cotejo y obtener la firma de la propietaria |  | 0.28d | 2026-08-11 17:34 A | 2026-08-12 10:48 A | 9 | 100% |  | 2026-08-11 17:34 | 2026-08-12 10:48 | 0.28d | 2026-08-11 17:34 | 2026-08-12 10:48 | Ruiz Campos José Fernando [89.89%] | 2h | 2h | 240 | 240 | 240 | S1 | 1.1 Iniciación | AC-16 (D1) | PO; PN | D1 |  |  |  |  |  |
| 11 | H1 | H1 Inicio autorizado | milestone | 0d | 2026-08-12 10:48 A | 2026-08-12 10:48 A | 10 | 100% |  | 2026-08-12 10:48 | 2026-08-12 10:48 |  | 2026-08-12 10:48 | 2026-08-12 10:48 |  |  |  |  |  |  | S1 | 1.1 Iniciación |  |  |  |  |  |  |  |  |
| 12 | 1.1.2 | **Actividad 2 · Identificación de interesados y alcance preliminar** |  | 2.23d | 2026-08-12 10:48 A | 2026-08-14 12:36 A |  | 100% |  | 2026-08-12 10:48 | 2026-08-14 12:36 | 2.23d | 2026-08-12 10:48 | 2026-08-14 12:36 |  | 16h | 16h | 1,920 | 1,920 | 1,920 | S1 | 1.1 Iniciación | AC-16 (D1) | PO, AS | D1 | 0.15 | 0.37 | 0.59 | 0.37 | 0.01 |
| 13 | 1.1.2.1 | **1.1.2.1 Registro de interesados** |  | 1.11d | 2026-08-12 10:48 A | 2026-08-13 11:42 A |  | 100% |  | 2026-08-12 10:48 | 2026-08-13 11:42 | 1.11d | 2026-08-12 10:48 | 2026-08-13 11:42 |  | 8h | 8h | 960 | 960 | 960 | S1 | 1.1 Iniciación |  | PO | D1 |  |  |  |  |  |
| 14 | 1.1.2.1.1 | Identificar a los interesados y su interés e influencia |  | 0.56d | 2026-08-12 10:48 A | 2026-08-12 16:15 A | 11 | 100% |  | 2026-08-12 10:48 | 2026-08-12 16:15 | 0.56d | 2026-08-12 10:48 | 2026-08-12 16:15 | Ruiz Campos José Fernando [89.89%] | 4h | 4h | 480 | 480 | 480 | S1 | 1.1 Iniciación |  | PO | D1 |  |  |  |  |  |
| 15 | 1.1.2.1.2 | Registrar las expectativas de la propietaria y de los cajeros |  | 0.56d | 2026-08-12 16:15 A | 2026-08-13 11:42 A | 14 | 100% |  | 2026-08-12 16:15 | 2026-08-13 11:42 | 0.56d | 2026-08-12 16:15 | 2026-08-13 11:42 | Ruiz Campos José Fernando [89.89%] | 4h | 4h | 480 | 480 | 480 | S1 | 1.1 Iniciación |  | PO | D1 |  |  |  |  |  |
| 16 | 1.1.2.2 | **1.1.2.2 Alcance preliminar y exclusiones** |  | 1.11d | 2026-08-13 11:42 A | 2026-08-14 12:36 A |  | 100% |  | 2026-08-13 11:42 | 2026-08-14 12:36 | 1.11d | 2026-08-13 11:42 | 2026-08-14 12:36 |  | 8h | 8h | 960 | 960 | 960 | S1 | 1.1 Iniciación |  | PO | D1 |  |  |  |  |  |
| 17 | 1.1.2.2.1 | Definir el alcance preliminar y las exclusiones |  | 0.7d | 2026-08-13 11:42 A | 2026-08-14 09:16 A | 15 | 100% |  | 2026-08-13 11:42 | 2026-08-14 09:16 | 0.7d | 2026-08-13 11:42 | 2026-08-14 09:16 | Ruiz Campos José Fernando [89.89%] | 5h | 5h | 600 | 600 | 600 | S1 | 1.1 Iniciación |  | PO | D1 |  |  |  |  |  |
| 18 | 1.1.2.2.2 | Validar el alcance preliminar con la propietaria |  | 0.42d | 2026-08-14 09:16 A | 2026-08-14 12:36 A | 17 | 100% |  | 2026-08-14 09:16 | 2026-08-14 12:36 | 0.42d | 2026-08-14 09:16 | 2026-08-14 12:36 | Ruiz Campos José Fernando [89.89%] | 3h | 3h | 360 | 360 | 360 | S1 | 1.1 Iniciación | AC-16 (D1) | PO; PN | D1 |  |  |  |  |  |
| 19 | 1.2 | **1.2 Planificación** |  | 17.8d | 2026-08-14 12:36 A | 2026-09-04 11:00 A |  | 100% |  | 2026-08-14 12:36 | 2026-09-04 11:00 | 17.8d | 2026-08-14 12:36 | 2026-09-04 11:00 |  | 125h | 125h | 15,000 | 15,000 | 15,000 | S1–S2 | 1.2 Planificación |  |  |  |  |  |  |  |  |
| 20 | 1.2.1 | **Actividad 3 · Requisitos funcionales, reglas y criterios** |  | 6.67d | 2026-08-14 12:36 A | 2026-08-22 10:00 A |  | 100% |  | 2026-08-14 12:36 | 2026-08-22 10:00 | 6.67d | 2026-08-14 12:36 | 2026-08-22 10:00 |  | 47h | 47h | 5,640 | 5,640 | 5,640 | S1 | 1.2 Planificación | AC-02; AC-16 (D2) | AS, PO | D2 | 0.74 | 1.11 | 1.48 | 1.11 | 0.02 |
| 21 | 1.2.1.1 | **1.2.1.1 Casos de uso e historias de usuario (CU-01 a CU-22)** |  | 3.98d | 2026-08-14 12:36 A | 2026-08-19 12:25 A |  | 100% |  | 2026-08-14 12:36 | 2026-08-19 12:25 | 3.98d | 2026-08-14 12:36 | 2026-08-19 12:25 |  | 28h | 28h | 3,360 | 3,360 | 3,360 | S1 | 1.2 Planificación |  | AS | D2 |  |  |  |  |  |
| 22 | 1.2.1.1.1 | Observar el flujo del mostrador y entrevistar a los cajeros |  | 0.85d | 2026-08-14 12:36 A | 2026-08-15 11:25 A | 18 | 100% |  | 2026-08-14 12:36 | 2026-08-15 11:25 | 0.85d | 2026-08-14 12:36 | 2026-08-15 11:25 | Ruiz Campos José Fernando [88.01%] | 6h | 6h | 720 | 720 | 720 | S1 | 1.2 Planificación |  | AS | D2 |  |  |  |  |  |
| 23 | 1.2.1.1.2 | Especificar los casos de uso CU-01 a CU-22 y su diagrama |  | 1.7d | 2026-08-15 11:25 A | 2026-08-18 09:03 A | 22 | 100% |  | 2026-08-15 11:25 | 2026-08-18 09:03 | 1.7d | 2026-08-15 11:25 | 2026-08-18 09:03 | Ruiz Campos José Fernando [88.01%] | 12h | 12h | 1,440 | 1,440 | 1,440 | S1 | 1.2 Planificación |  | AS | D2 |  |  |  |  |  |
| 24 | 1.2.1.1.3 | Redactar las 52 historias de usuario y estimarlas en puntos (193 puntos) |  | 0.85d | 2026-08-18 09:03 A | 2026-08-18 16:52 A | 23 | 100% |  | 2026-08-18 09:03 | 2026-08-18 16:52 | 0.85d | 2026-08-18 09:03 | 2026-08-18 16:52 | Ruiz Campos José Fernando [88.01%] | 6h | 6h | 720 | 720 | 720 | S1 | 1.2 Planificación |  | AS | D2 |  |  |  |  |  |
| 25 | 1.2.1.1.4 | Priorizar el Product Backlog por valor operativo y asignarlo a los sprints S3 a S6 |  | 0.57d | 2026-08-18 16:52 A | 2026-08-19 12:25 A | 24 | 100% |  | 2026-08-18 16:52 | 2026-08-19 12:25 | 0.57d | 2026-08-18 16:52 | 2026-08-19 12:25 | Ruiz Campos José Fernando [88.01%] | 4h | 4h | 480 | 480 | 480 | S1 | 1.2 Planificación |  | AS, PO | D2 |  |  |  |  |  |

Notes:
- 1: Cronograma desglosado: 5 fases, 18 actividades del cronograma (3.2), 52 paquetes de trabajo de la EDT (3.1a), 52 historias de usuario / 193 puntos del Product Backlog (3.1b) y 6 hitos. Calendario lunes a sábado, 9:00-13:00 y 14:00-18:00; descanso dominical; 89 días laborables del 10-ago al 20-nov-2026. Esfuerzo 660 h; costo $79,200 MXN ($120/h).
- 3: Actividad 1 del cronograma (3.2). PERT (semanas laborales, con f = 89/120): O = 0.1483, M = 0.3708, P = 0.5933; Te = (O + 4M + P) / 6 = 0.3708 semanas = 2.225 días; σ² = ((P − O) / 6)² = 0.0055. Esfuerzo: 16 h × $120 = $1,920 MXN. Holgura: 0 (ruta crítica única).
- 4: Paquete de trabajo 1.1.1.1 (diccionario de la EDT, 3.1a). Problema, objetivo SMART, justificación y beneficios esperados, validados con la propietaria. Responsable: PO. Esfuerzo: 6 h × $120 = $720 MXN.
- 7: Paquete de trabajo 1.1.1.2 (diccionario de la EDT, 3.1a). Acta con objetivo, alcance inicial, restricciones, supuestos y autorización firmada (H1). Responsable: PO. Esfuerzo: 10 h × $120 = $1,200 MXN.
- 11: Hito de control de duración cero (3.2, apartado 2.4). Condición de salida: Acta de constitución firmada por la propietaria, con objetivo, alcance inicial, restricciones y autorización para comenzar.
- 12: Actividad 2 del cronograma (3.2). PERT (semanas laborales, con f = 89/120): O = 0.1483, M = 0.3708, P = 0.5933; Te = (O + 4M + P) / 6 = 0.3708 semanas = 2.225 días; σ² = ((P − O) / 6)² = 0.0055. Esfuerzo: 16 h × $120 = $1,920 MXN. Holgura: 0 (ruta crítica única).
- 13: Paquete de trabajo 1.1.2.1 (diccionario de la EDT, 3.1a). Interesados identificados con su interés, influencia y expectativas. Responsable: PO. Esfuerzo: 8 h × $120 = $960 MXN.
- 16: Paquete de trabajo 1.1.2.2 (diccionario de la EDT, 3.1a). Alcance preliminar y exclusiones validados con la propietaria. Responsable: PO. Esfuerzo: 8 h × $120 = $960 MXN.
- 20: Actividad 3 del cronograma (3.2). PERT (semanas laborales, con f = 89/120): O = 0.7417, M = 1.1125, P = 1.4833; Te = (O + 4M + P) / 6 = 1.1125 semanas = 6.675 días; σ² = ((P − O) / 6)² = 0.0153. Esfuerzo: 47 h × $120 = $5,640 MXN. Holgura: 0 (ruta crítica única).
- 21: Paquete de trabajo 1.2.1.1 (diccionario de la EDT, 3.1a). Casos de uso CU-01 a CU-22 y Product Backlog de 52 historias (193 puntos) priorizado. Responsable: AS. Esfuerzo: 28 h × $120 = $3,360 MXN.

| ID | WBS | Task | Duration | Start | Finish | Predecessors | Complete | Baseline start | Baseline finish | Baseline duration | Baseline 1 start | Baseline 1 finish | Resources | Work | Actual work | Cost | Baseline cost | Actual cost | Sprint | Puesto (plan de RR. HH.) | Entregable | Fase (EDT) | Calidad y sostenibilidad (2.3) | O (semanas) | M (semanas) | P (semanas) | Te (semanas) | Varianza |
| --- | --- | --- | --- | --- | --- | --- | --- | --- | --- | --- | --- | --- | --- | --- | --- | --- | --- | --- | --- | --- | --- | --- | --- | --- | --- | --- | --- | --- |
| 26 | 1.2.1.2 | **1.2.1.2 Reglas de negocio y criterios de aceptación** | 2.7d | 2026-08-19 12:25 A | 2026-08-22 10:00 A |  | 100% | 2026-08-19 12:25 | 2026-08-22 10:00 | 2.7d | 2026-08-19 12:25 | 2026-08-22 10:00 |  | 19h | 19h | 2,280 | 2,280 | 2,280 | S1 | AS | D2 | 1.2 Planificación |  |  |  |  |  |  |
| 27 | 1.2.1.2.1 | Documentar las reglas de negocio por módulo | 0.99d | 2026-08-19 12:25 A | 2026-08-20 12:22 A | 25 | 100% | 2026-08-19 12:25 | 2026-08-20 12:22 | 0.99d | 2026-08-19 12:25 | 2026-08-20 12:22 | Ruiz Campos José Fernando [88.01%] | 7h | 7h | 840 | 840 | 840 | S1 | AS | D2 | 1.2 Planificación |  |  |  |  |  |  |
| 28 | 1.2.1.2.2 | Definir los criterios de aceptación y los escenarios PA-01 a PA-12 | 0.85d | 2026-08-20 12:22 A | 2026-08-21 11:11 A | 27 | 100% | 2026-08-20 12:22 | 2026-08-21 11:11 | 0.85d | 2026-08-20 12:22 | 2026-08-21 11:11 | Ruiz Campos José Fernando [88.01%] | 6h | 6h | 720 | 720 | 720 | S1 | AS | D2 | 1.2 Planificación |  |  |  |  |  |  |
| 29 | 1.2.1.2.3 | Revisar los requisitos con lista de verificación y matriz de criterios de las funciones críticas | 0.42d | 2026-08-21 11:11 A | 2026-08-21 15:35 A | 28 | 100% | 2026-08-21 11:11 | 2026-08-21 15:35 | 0.42d | 2026-08-21 11:11 | 2026-08-21 15:35 | Ruiz Campos José Fernando [88.01%] | 3h | 3h | 360 | 360 | 360 | S1 | AS | D2 | 1.2 Planificación | AC-02 |  |  |  |  |  |
| 30 | 1.2.1.2.4 | Validar los requisitos con la propietaria | 0.43d | 2026-08-21 15:35 A | 2026-08-22 10:00 A | 29 | 100% | 2026-08-21 15:35 | 2026-08-22 10:00 | 0.43d | 2026-08-21 15:35 | 2026-08-22 10:00 | Ruiz Campos José Fernando [88.01%] | 3h | 3h | 360 | 360 | 360 | S1 | AS, PO; PN | D2 | 1.2 Planificación | AC-16 (D2) |  |  |  |  |  |
| 31 | 1.2.2 | **Actividad 4 · Arquitectura, modelo de datos y seguridad** | 6.67d | 2026-08-22 10:00 A | 2026-08-29 16:24 A |  | 100% | 2026-08-22 10:00 | 2026-08-29 16:24 | 6.67d | 2026-08-22 10:00 | 2026-08-29 16:24 |  | 47h | 47h | 5,640 | 5,640 | 5,640 | S1–S2 | DEV, UX, AS | D3 | 1.2 Planificación | AC-03; AC-04; SO-04; SO-09 | 0.74 | 1.11 | 1.48 | 1.11 | 0.02 |
| 32 | 1.2.2.1 | **1.2.2.1 Arquitectura de la solución** | 1.7d | 2026-08-22 10:00 A | 2026-08-24 16:38 A |  | 100% | 2026-08-22 10:00 | 2026-08-24 16:38 | 1.7d | 2026-08-22 10:00 | 2026-08-24 16:38 |  | 12h | 12h | 1,440 | 1,440 | 1,440 | S1–S2 | DEV | D3 | 1.2 Planificación |  |  |  |  |  |  |
| 33 | 1.2.2.1.1 | Definir la arquitectura SPA, API REST en capas y base de datos | 1.14d | 2026-08-22 10:00 A | 2026-08-24 11:05 A | 30 | 100% | 2026-08-22 10:00 | 2026-08-24 11:05 | 1.14d | 2026-08-22 10:00 | 2026-08-24 11:05 | Ruiz Campos José Fernando [88.01%] | 8h | 8h | 960 | 960 | 960 | S1–S2 | DEV | D3 | 1.2 Planificación |  |  |  |  |  |  |
| 34 | 1.2.2.1.2 | Seleccionar los servicios administrados en la nube y el uso del equipo existente | 0.57d | 2026-08-24 11:05 A | 2026-08-24 16:38 A | 33 | 100% | 2026-08-24 11:05 | 2026-08-24 16:38 | 0.57d | 2026-08-24 11:05 | 2026-08-24 16:38 | Ruiz Campos José Fernando [88.01%] | 4h | 4h | 480 | 480 | 480 | S2 | DEV, DO | D3 | 1.2 Planificación | SO-04 |  |  |  |  |  |
| 35 | 1.2.2.2 | **1.2.2.2 Modelo de datos** | 1.99d | 2026-08-24 16:38 A | 2026-08-26 16:32 A |  | 100% | 2026-08-24 16:38 | 2026-08-26 16:32 | 1.99d | 2026-08-24 16:38 | 2026-08-26 16:32 |  | 14h | 14h | 1,680 | 1,680 | 1,680 | S2 | DEV | D3 | 1.2 Planificación |  |  |  |  |  |  |
| 36 | 1.2.2.2.1 | Diseñar el diagrama de clases | 0.71d | 2026-08-24 16:38 A | 2026-08-25 14:19 A | 34 | 100% | 2026-08-24 16:38 | 2026-08-25 14:19 | 0.71d | 2026-08-24 16:38 | 2026-08-25 14:19 | Ruiz Campos José Fernando [88.01%] | 5h | 5h | 600 | 600 | 600 | S2 | DEV | D3 | 1.2 Planificación |  |  |  |  |  |  |
| 37 | 1.2.2.2.2 | Diseñar el modelo entidad-relación y las restricciones de integridad | 1.28d | 2026-08-25 14:19 A | 2026-08-26 16:32 A | 36 | 100% | 2026-08-25 14:19 | 2026-08-26 16:32 | 1.28d | 2026-08-25 14:19 | 2026-08-26 16:32 | Ruiz Campos José Fernando [88.01%] | 9h | 9h | 1,080 | 1,080 | 1,080 | S2 | DEV | D3 | 1.2 Planificación |  |  |  |  |  |  |
| 38 | 1.2.2.3 | **1.2.2.3 Diseño de seguridad y control de acceso** | 1.28d | 2026-08-26 16:32 A | 2026-08-28 09:46 A |  | 100% | 2026-08-26 16:32 | 2026-08-28 09:46 | 1.28d | 2026-08-26 16:32 | 2026-08-28 09:46 |  | 9h | 9h | 1,080 | 1,080 | 1,080 | S2 | DEV | D3 | 1.2 Planificación |  |  |  |  |  |  |
| 39 | 1.2.2.3.1 | Diseñar los roles ADMIN y CAJERO, sus permisos y el control de acceso | 0.71d | 2026-08-26 16:32 A | 2026-08-27 14:13 A | 37 | 100% | 2026-08-26 16:32 | 2026-08-27 14:13 | 0.71d | 2026-08-26 16:32 | 2026-08-27 14:13 | Ruiz Campos José Fernando [88.01%] | 5h | 5h | 600 | 600 | 600 | S2 | DEV | D3 | 1.2 Planificación |  |  |  |  |  |  |
| 40 | 1.2.2.3.2 | Diseñar la seguridad de la sesión (JWT, CSRF, bcrypt, límite de intentos) | 0.57d | 2026-08-27 14:13 A | 2026-08-28 09:46 A | 39 | 100% | 2026-08-27 14:13 | 2026-08-28 09:46 | 0.57d | 2026-08-27 14:13 | 2026-08-28 09:46 | Ruiz Campos José Fernando [88.01%] | 4h | 4h | 480 | 480 | 480 | S2 | DEV | D3 | 1.2 Planificación |  |  |  |  |  |  |
| 41 | 1.2.2.4 | **1.2.2.4 Prototipo de interfaces** | 1.7d | 2026-08-28 09:46 A | 2026-08-29 16:24 A |  | 100% | 2026-08-28 09:46 | 2026-08-29 16:24 | 1.7d | 2026-08-28 09:46 | 2026-08-29 16:24 |  | 12h | 12h | 1,440 | 1,440 | 1,440 | S2 | UX | D3 | 1.2 Planificación |  |  |  |  |  |  |
| 42 | 1.2.2.4.1 | Elaborar el prototipo de interfaces en Figma | 1.14d | 2026-08-28 09:46 A | 2026-08-29 10:51 A | 40 | 100% | 2026-08-28 09:46 | 2026-08-29 10:51 | 1.14d | 2026-08-28 09:46 | 2026-08-29 10:51 | Ruiz Campos José Fernando [88.01%] | 8h | 8h | 960 | 960 | 960 | S2 | UX | D3 | 1.2 Planificación |  |  |  |  |  |  |
| 43 | 1.2.2.4.2 | Validar el prototipo con la propietaria y los cajeros | 0.29d | 2026-08-29 10:51 A | 2026-08-29 14:08 A | 42 | 100% | 2026-08-29 10:51 | 2026-08-29 14:08 | 0.29d | 2026-08-29 10:51 | 2026-08-29 14:08 | Ruiz Campos José Fernando [88.01%] | 2h | 2h | 240 | 240 | 240 | S2 | UX; PN, CAJ | D3 | 1.2 Planificación | AC-04; SO-09 |  |  |  |  |  |
| 44 | 1.2.2.4.3 | Revisar el diseño contra los requisitos y la arquitectura en capas | 0.28d | 2026-08-29 14:08 A | 2026-08-29 16:24 A | 43 | 100% | 2026-08-29 14:08 | 2026-08-29 16:24 | 0.28d | 2026-08-29 14:08 | 2026-08-29 16:24 | Ruiz Campos José Fernando [88.01%] | 2h | 2h | 240 | 240 | 240 | S2 | DEV, AS; PO | D3 | 1.2 Planificación | AC-03 |  |  |  |  |  |
| 45 | 1.2.3 | **Actividad 5 · Planes de cronograma, costo, calidad y riesgos** | 4.45d | 2026-08-29 16:24 A | 2026-09-04 11:00 A |  | 100% | 2026-08-29 16:24 | 2026-09-04 11:00 | 4.45d | 2026-08-29 16:24 | 2026-09-04 11:00 |  | 31h | 31h | 3,720 | 3,720 | 3,720 | S2 | SM, PO | D3 | 1.2 Planificación | AC-01; AC-16 (D3) | 0.37 | 0.74 | 1.11 | 0.74 | 0.02 |
| 46 | 1.2.3.1 | **1.2.3.1 Línea base del alcance (enunciado y EDT)** | 0.86d | 2026-08-29 16:24 A | 2026-08-31 15:17 A |  | 100% | 2026-08-29 16:24 | 2026-08-31 15:17 | 0.86d | 2026-08-29 16:24 | 2026-08-31 15:17 |  | 6h | 6h | 720 | 720 | 720 | S2 | SM | D3 | 1.2 Planificación |  |  |  |  |  |  |
| 47 | 1.2.3.1.1 | Elaborar el enunciado del alcance | 0.43d | 2026-08-29 16:24 A | 2026-08-31 10:51 A | 44 | 100% | 2026-08-29 16:24 | 2026-08-31 10:51 | 0.43d | 2026-08-29 16:24 | 2026-08-31 10:51 | Ruiz Campos José Fernando [87.08%] | 3h | 3h | 360 | 360 | 360 | S2 | SM | D3 | 1.2 Planificación |  |  |  |  |  |  |
| 48 | 1.2.3.1.2 | Elaborar la EDT y su diccionario | 0.43d | 2026-08-31 10:51 A | 2026-08-31 15:17 A | 47 | 100% | 2026-08-31 10:51 | 2026-08-31 15:17 | 0.43d | 2026-08-31 10:51 | 2026-08-31 15:17 | Ruiz Campos José Fernando [87.08%] | 3h | 3h | 360 | 360 | 360 | S2 | SM | D3 | 1.2 Planificación |  |  |  |  |  |  |
| 49 | 1.2.3.2 | **1.2.3.2 Cronograma y estimación de costos** | 1.15d | 2026-08-31 15:17 A | 2026-09-01 16:29 A |  | 100% | 2026-08-31 15:17 | 2026-09-01 16:29 | 1.15d | 2026-08-31 15:17 | 2026-09-01 16:29 |  | 8h | 8h | 960 | 960 | 960 | S2 | SM | D3 | 1.2 Planificación |  |  |  |  |  |  |
| 50 | 1.2.3.2.1 | Estimar el tamaño funcional con puntos de función | 0.43d | 2026-08-31 15:17 A | 2026-09-01 09:44 A | 48 | 100% | 2026-08-31 15:17 | 2026-09-01 09:44 | 0.43d | 2026-08-31 15:17 | 2026-09-01 09:44 | Ruiz Campos José Fernando [87.08%] | 3h | 3h | 360 | 360 | 360 | S2 | SM | D3 | 1.2 Planificación |  |  |  |  |  |  |
| 51 | 1.2.3.2.2 | Estimar duraciones con PERT, calcular la ruta crítica y elaborar el cronograma | 0.43d | 2026-09-01 09:44 A | 2026-09-01 14:11 A | 50 | 100% | 2026-09-01 09:44 | 2026-09-01 14:11 | 0.43d | 2026-09-01 09:44 | 2026-09-01 14:11 | Ruiz Campos José Fernando [87.08%] | 3h | 3h | 360 | 360 | 360 | S2 | SM | D3 | 1.2 Planificación |  |  |  |  |  |  |
| 52 | 1.2.3.2.3 | Estimar costos, costo de operación, punto de equilibrio y ROI | 0.29d | 2026-09-01 14:11 A | 2026-09-01 16:29 A | 51 | 100% | 2026-09-01 14:11 | 2026-09-01 16:29 | 0.29d | 2026-09-01 14:11 | 2026-09-01 16:29 | Ruiz Campos José Fernando [87.08%] | 2h | 2h | 240 | 240 | 240 | S2 | SM | D3 | 1.2 Planificación | Sostenibilidad económica |  |  |  |  |  |

Notes:
- 26: Paquete de trabajo 1.2.1.2 (diccionario de la EDT, 3.1a). Reglas de negocio y criterios verificables por módulo; escenarios de aceptación PA-01 a PA-12. Responsable: AS. Esfuerzo: 19 h × $120 = $2,280 MXN.
- 31: Actividad 4 del cronograma (3.2). PERT (semanas laborales, con f = 89/120): O = 0.7417, M = 1.1125, P = 1.4833; Te = (O + 4M + P) / 6 = 1.1125 semanas = 6.675 días; σ² = ((P − O) / 6)² = 0.0153. Esfuerzo: 47 h × $120 = $5,640 MXN. Holgura: 0 (ruta crítica única).
- 32: Paquete de trabajo 1.2.2.1 (diccionario de la EDT, 3.1a). Arquitectura SPA + API REST en capas (Controller → Service → Repository) + PostgreSQL. Responsable: DEV. Esfuerzo: 12 h × $120 = $1,440 MXN.
- 35: Paquete de trabajo 1.2.2.2 (diccionario de la EDT, 3.1a). Diagrama de clases y modelo entidad-relación con restricciones de integridad. Responsable: DEV. Esfuerzo: 14 h × $120 = $1,680 MXN.
- 38: Paquete de trabajo 1.2.2.3 (diccionario de la EDT, 3.1a). Roles ADMIN y CAJERO, permisos y seguridad de la sesión documentados. Responsable: DEV. Esfuerzo: 9 h × $120 = $1,080 MXN.
- 41: Paquete de trabajo 1.2.2.4 (diccionario de la EDT, 3.1a). Prototipo navegable de las pantallas principales validado con usuarios. Responsable: UX. Esfuerzo: 12 h × $120 = $1,440 MXN.
- 45: Actividad 5 del cronograma (3.2). PERT (semanas laborales, con f = 89/120): O = 0.3708, M = 0.7417, P = 1.1125; Te = (O + 4M + P) / 6 = 0.7417 semanas = 4.45 días; σ² = ((P − O) / 6)² = 0.0153. Esfuerzo: 31 h × $120 = $3,720 MXN. Holgura: 0 (ruta crítica única).
- 46: Paquete de trabajo 1.2.3.1 (diccionario de la EDT, 3.1a). Enunciado del alcance, EDT de 52 paquetes y su diccionario. Responsable: SM. Esfuerzo: 6 h × $120 = $720 MXN.
- 49: Paquete de trabajo 1.2.3.2 (diccionario de la EDT, 3.1a). Puntos de función, PERT/CPM, cronograma en MS Project, presupuesto, punto de equilibrio y ROI. Responsable: SM. Esfuerzo: 8 h × $120 = $960 MXN.

| ID | WBS | Task | Type | Duration | Start | Finish | Predecessors | Complete | Baseline start | Baseline finish | Baseline duration | Baseline 1 start | Baseline 1 finish | Resources | Work | Actual work | Cost | Baseline cost | Actual cost | Sprint | Puesto (plan de RR. HH.) | Entregable | Fase (EDT) | Calidad y sostenibilidad (2.3) | O (semanas) | M (semanas) | P (semanas) | Te (semanas) | Varianza | Historia / caso de uso (3.1b) | Puntos de historia |
| --- | --- | --- | --- | --- | --- | --- | --- | --- | --- | --- | --- | --- | --- | --- | --- | --- | --- | --- | --- | --- | --- | --- | --- | --- | --- | --- | --- | --- | --- | --- | --- |
| 53 | 1.2.3.3 | **1.2.3.3 Plan de calidad** |  | 0.86d | 2026-09-01 16:29 A | 2026-09-02 15:22 A |  | 100% | 2026-09-01 16:29 | 2026-09-02 15:22 | 0.86d | 2026-09-01 16:29 | 2026-09-02 15:22 |  | 6h | 6h | 720 | 720 | 720 | S2 | SM | D3 | 1.2 Planificación |  |  |  |  |  |  |  |  |
| 54 | 1.2.3.3.1 | Definir la política, los objetivos y las métricas de calidad |  | 0.43d | 2026-09-01 16:29 A | 2026-09-02 10:55 A | 52 | 100% | 2026-09-01 16:29 | 2026-09-02 10:55 | 0.43d | 2026-09-01 16:29 | 2026-09-02 10:55 | Ruiz Campos José Fernando [87.08%] | 3h | 3h | 360 | 360 | 360 | S2 | SM | D3 | 1.2 Planificación | AC-01 |  |  |  |  |  |  |  |
| 55 | 1.2.3.3.2 | Definir el programa de aseguramiento, control y sostenibilidad |  | 0.43d | 2026-09-02 10:55 A | 2026-09-02 15:22 A | 54 | 100% | 2026-09-02 10:55 | 2026-09-02 15:22 | 0.43d | 2026-09-02 10:55 | 2026-09-02 15:22 | Ruiz Campos José Fernando [87.08%] | 3h | 3h | 360 | 360 | 360 | S2 | SM | D3 | 1.2 Planificación | AC-01 |  |  |  |  |  |  |  |
| 56 | 1.2.3.4 | **1.2.3.4 Plan de gestión de riesgos** |  | 0.86d | 2026-09-02 15:22 A | 2026-09-03 14:15 A |  | 100% | 2026-09-02 15:22 | 2026-09-03 14:15 | 0.86d | 2026-09-02 15:22 | 2026-09-03 14:15 |  | 6h | 6h | 720 | 720 | 720 | S2 | SM | D3 | 1.2 Planificación |  |  |  |  |  |  |  |  |
| 57 | 1.2.3.4.1 | Identificar y analizar los riesgos |  | 0.43d | 2026-09-02 15:22 A | 2026-09-03 09:49 A | 55 | 100% | 2026-09-02 15:22 | 2026-09-03 09:49 | 0.43d | 2026-09-02 15:22 | 2026-09-03 09:49 | Ruiz Campos José Fernando [87.08%] | 3h | 3h | 360 | 360 | 360 | S2 | SM | D3 | 1.2 Planificación |  |  |  |  |  |  |  |  |
| 58 | 1.2.3.4.2 | Planificar las respuestas a los riesgos |  | 0.43d | 2026-09-03 09:49 A | 2026-09-03 14:15 A | 57 | 100% | 2026-09-03 09:49 | 2026-09-03 14:15 | 0.43d | 2026-09-03 09:49 | 2026-09-03 14:15 | Ruiz Campos José Fernando [87.08%] | 3h | 3h | 360 | 360 | 360 | S2 | SM | D3 | 1.2 Planificación |  |  |  |  |  |  |  |  |
| 59 | 1.2.3.5 | **1.2.3.5 Planes de comunicación y de recursos humanos** |  | 0.72d | 2026-09-03 14:15 A | 2026-09-04 11:00 A |  | 100% | 2026-09-03 14:15 | 2026-09-04 11:00 | 0.72d | 2026-09-03 14:15 | 2026-09-04 11:00 |  | 5h | 5h | 600 | 600 | 600 | S2 | SM | D3 | 1.2 Planificación |  |  |  |  |  |  |  |  |
| 60 | 1.2.3.5.1 | Elaborar el plan de comunicación |  | 0.29d | 2026-09-03 14:15 A | 2026-09-03 16:33 A | 58 | 100% | 2026-09-03 14:15 | 2026-09-03 16:33 | 0.29d | 2026-09-03 14:15 | 2026-09-03 16:33 | Ruiz Campos José Fernando [87.08%] | 2h | 2h | 240 | 240 | 240 | S2 | SM | D3 | 1.2 Planificación |  |  |  |  |  |  |  |  |
| 61 | 1.2.3.5.2 | Elaborar el plan de recursos humanos |  | 0.29d | 2026-09-03 16:33 A | 2026-09-04 09:51 A | 60 | 100% | 2026-09-03 16:33 | 2026-09-04 09:51 | 0.29d | 2026-09-03 16:33 | 2026-09-04 09:51 | Ruiz Campos José Fernando [87.08%] | 2h | 2h | 240 | 240 | 240 | S2 | SM | D3 | 1.2 Planificación |  |  |  |  |  |  |  |  |
| 62 | 1.2.3.5.3 | Integrar la línea base y presentarla para aprobación |  | 0.14d | 2026-09-04 09:51 A | 2026-09-04 11:00 A | 61 | 100% | 2026-09-04 09:51 | 2026-09-04 11:00 | 0.14d | 2026-09-04 09:51 | 2026-09-04 11:00 | Ruiz Campos José Fernando [87.08%] | 1h | 1h | 120 | 120 | 120 | S2 | SM, PO; PN | D3 | 1.2 Planificación | AC-16 (D3) |  |  |  |  |  |  |  |
| 63 | H2 | H2 Alcance y línea base aprobados | milestone | 0d | 2026-09-04 11:00 A | 2026-09-04 11:00 A | 62 | 100% | 2026-09-04 11:00 | 2026-09-04 11:00 |  | 2026-09-04 11:00 | 2026-09-04 11:00 |  |  |  |  |  |  | S2 |  |  | 1.2 Planificación |  |  |  |  |  |  |  |  |
| 64 | 1.3 | **1.3 Ejecución: producto Andy's Coffee POS** |  | 62.3d | 2026-09-04 11:00 A | 2026-11-16 14:24 A |  | 100% | 2026-09-04 11:00 | 2026-11-16 14:24 | 62.3d | 2026-09-04 11:00 | 2026-11-16 14:24 |  | 438h | 438h | 52,560 | 52,560 | 52,560 | S2–SC |  |  | 1.3 Ejecución: producto Andy's Coffee POS |  |  |  |  |  |  |  |  |
| 65 | 1.3.1.1 | **Actividad 6 · Estructura Frontend/API y ambientes** |  | 6.67d | 2026-09-04 11:00 A | 2026-09-11 17:24 A |  | 100% | 2026-09-04 11:00 | 2026-09-11 17:24 | 6.67d | 2026-09-04 11:00 | 2026-09-11 17:24 |  | 47h | 47h | 5,640 | 5,640 | 5,640 | S2–S3 | DO, DEV | D4 | 1.3 Ejecución: producto Andy's Coffee POS | AC-05; AC-06; AC-08; SO-02 | 0.74 | 1.11 | 1.48 | 1.11 | 0.02 |  |  |
| 66 | 1.3.1.1 | **1.3.1.1 Estructura Frontend/API, configuración y ambientes de prueba** |  | 6.67d | 2026-09-04 11:00 A | 2026-09-11 17:24 A |  | 100% | 2026-09-04 11:00 | 2026-09-11 17:24 | 6.67d | 2026-09-04 11:00 | 2026-09-11 17:24 |  | 47h | 47h | 5,640 | 5,640 | 5,640 | S2–S3 | DO | D4 | 1.3 Ejecución: producto Andy's Coffee POS |  |  |  |  |  |  |  |  |
| 67 | 1.3.1.1.1 | Crear el repositorio y la estructura de la SPA (React/TypeScript) y de la API en capas (Express) |  | 1.99d | 2026-09-04 11:00 A | 2026-09-07 10:54 A | 63 | 100% | 2026-09-04 11:00 | 2026-09-07 10:54 | 1.99d | 2026-09-04 11:00 | 2026-09-07 10:54 | Ruiz Campos José Fernando [88.01%] | 14h | 14h | 1,680 | 1,680 | 1,680 | S2–S3 | DO | D4 | 1.3 Ejecución: producto Andy's Coffee POS |  |  |  |  |  |  |  |  |
| 68 | 1.3.1.1.2 | Configurar el ORM, las migraciones iniciales y las variables de entorno |  | 1.28d | 2026-09-07 10:54 A | 2026-09-08 14:08 A | 67 | 100% | 2026-09-07 10:54 | 2026-09-08 14:08 | 1.28d | 2026-09-07 10:54 | 2026-09-08 14:08 | Ruiz Campos José Fernando [88.01%] | 9h | 9h | 1,080 | 1,080 | 1,080 | S3 | DO | D4 | 1.3 Ejecución: producto Andy's Coffee POS |  |  |  |  |  |  |  |  |
| 69 | 1.3.1.1.3 | Configurar la base de datos de prueba aislada en Docker |  | 1.14d | 2026-09-08 14:08 A | 2026-09-09 15:13 A | 68 | 100% | 2026-09-08 14:08 | 2026-09-09 15:13 | 1.14d | 2026-09-08 14:08 | 2026-09-09 15:13 | Ruiz Campos José Fernando [88.01%] | 8h | 8h | 960 | 960 | 960 | S3 | DO | D4 | 1.3 Ejecución: producto Andy's Coffee POS |  |  |  |  |  |  |  |  |
| 70 | 1.3.1.1.4 | Configurar la integración continua en GitHub Actions (ESLint, TypeScript, build y pruebas) |  | 1.42d | 2026-09-09 15:13 A | 2026-09-11 09:35 A | 69 | 100% | 2026-09-09 15:13 | 2026-09-11 09:35 | 1.42d | 2026-09-09 15:13 | 2026-09-11 09:35 | Ruiz Campos José Fernando [88.01%] | 10h | 10h | 1,200 | 1,200 | 1,200 | S3 | DO | D4 | 1.3 Ejecución: producto Andy's Coffee POS | AC-05; AC-06; SO-02 |  |  |  |  |  |  |  |
| 71 | 1.3.1.1.5 | Preparar el marco de pruebas unitarias y de integración y verificar el pipeline |  | 0.85d | 2026-09-11 09:35 A | 2026-09-11 17:24 A | 70 | 100% | 2026-09-11 09:35 | 2026-09-11 17:24 | 0.85d | 2026-09-11 09:35 | 2026-09-11 17:24 | Ruiz Campos José Fernando [88.01%] | 6h | 6h | 720 | 720 | 720 | S3 | DO, QA | D4 | 1.3 Ejecución: producto Andy's Coffee POS | AC-08 |  |  |  |  |  |  |  |
| 72 | 1.3.1.2 | **Actividad 7 · Autenticación, RBAC y preferencias** |  | 4.45d | 2026-09-11 17:24 A | 2026-09-17 12:00 A |  | 100% | 2026-09-11 17:24 | 2026-09-17 12:00 | 4.45d | 2026-09-11 17:24 | 2026-09-17 12:00 |  | 31h | 31h | 3,720 | 3,720 | 3,720 | S3 | DEV | D4 | 1.3 Ejecución: producto Andy's Coffee POS | AC-06; AC-07; AC-08; AC-09; AC-11 (acceso); AC-16 (D4) | 0.37 | 0.74 | 1.11 | 0.74 | 0.02 |  |  |
| 73 | 1.3.1.2 | **1.3.1.2 Autenticación, RBAC, validación y preferencias** |  | 4.45d | 2026-09-11 17:24 A | 2026-09-17 12:00 A |  | 100% | 2026-09-11 17:24 | 2026-09-17 12:00 | 4.45d | 2026-09-11 17:24 | 2026-09-17 12:00 |  | 31h | 31h | 3,720 | 3,720 | 3,720 | S3 | DEV | D4 | 1.3 Ejecución: producto Andy's Coffee POS |  |  |  |  |  |  |  |  |
| 74 | 1.3.1.2.1 | HU-01 Iniciar sesión con credenciales individuales |  | 0.36d | 2026-09-11 17:24 A | 2026-09-12 11:16 A | 71 | 100% | 2026-09-11 17:24 | 2026-09-12 11:16 | 0.36d | 2026-09-11 17:24 | 2026-09-12 11:16 | Ruiz Campos José Fernando [87.08%] | 2.5h | 2.5h | 300 | 300 | 300 | S3 | DEV | D4 | 1.3 Ejecución: producto Andy's Coffee POS | AC-06; AC-07; AC-08 |  |  |  |  |  | HU-01 · CU-01 | 3 |
| 75 | 1.3.1.2.2 | HU-02 Limitar los intentos fallidos de acceso |  | 0.22d | 2026-09-12 11:16 A | 2026-09-12 13:00 A | 74 | 100% | 2026-09-12 11:16 | 2026-09-12 13:00 | 0.22d | 2026-09-12 11:16 | 2026-09-12 13:00 | Ruiz Campos José Fernando [87.08%] | 1.5h | 1.5h | 180 | 180 | 180 | S3 | DEV | D4 | 1.3 Ejecución: producto Andy's Coffee POS | AC-06; AC-07; AC-08 |  |  |  |  |  | HU-02 · CU-01 | 2 |
| 76 | 1.3.1.2.3 | HU-03 Cerrar sesión |  | 0.14d | 2026-09-12 14:00 A | 2026-09-12 15:09 A | 75 | 100% | 2026-09-12 14:00 | 2026-09-12 15:09 | 0.14d | 2026-09-12 14:00 | 2026-09-12 15:09 | Ruiz Campos José Fernando [87.08%] | 1h | 1h | 120 | 120 | 120 | S3 | DEV | D4 | 1.3 Ejecución: producto Andy's Coffee POS | AC-06; AC-07; AC-08 |  |  |  |  |  | HU-03 · CU-22 | 1 |
| 77 | 1.3.1.2.4 | HU-05 Administrar las cuentas del personal |  | 0.57d | 2026-09-12 15:09 A | 2026-09-14 10:44 A | 76 | 100% | 2026-09-12 15:09 | 2026-09-14 10:44 | 0.57d | 2026-09-12 15:09 | 2026-09-14 10:44 | Ruiz Campos José Fernando [87.08%] | 4h | 4h | 480 | 480 | 480 | S3 | DEV | D4 | 1.3 Ejecución: producto Andy's Coffee POS | AC-06; AC-07; AC-08 |  |  |  |  |  | HU-05 · CU-02 | 5 |
| 78 | 1.3.1.2.5 | HU-06 Configurar roles y permisos |  | 1d | 2026-09-14 10:44 A | 2026-09-15 10:46 A | 77 | 100% | 2026-09-14 10:44 | 2026-09-15 10:46 | 1d | 2026-09-14 10:44 | 2026-09-15 10:46 | Ruiz Campos José Fernando [87.08%] | 7h | 7h | 840 | 840 | 840 | S3 | DEV | D4 | 1.3 Ejecución: producto Andy's Coffee POS | AC-06; AC-07; AC-08 |  |  |  |  |  | HU-06 · CU-02 | 8 |
| 79 | 1.3.1.2.6 | HU-09 Registrar la bitácora de auditoría |  | 0.57d | 2026-09-15 10:46 A | 2026-09-15 16:22 A | 78 | 100% | 2026-09-15 10:46 | 2026-09-15 16:22 | 0.57d | 2026-09-15 10:46 | 2026-09-15 16:22 | Ruiz Campos José Fernando [87.08%] | 4h | 4h | 480 | 480 | 480 | S3 | DEV | D4 | 1.3 Ejecución: producto Andy's Coffee POS | AC-06; AC-07; AC-08 |  |  |  |  |  | HU-09 · CU-01, CU-02, CU-07, CU-09 a CU-12 | 5 |
| 80 | 1.3.1.2.7 | HU-04 Actualizar mi perfil y mi contraseña |  | 0.36d | 2026-09-15 16:22 A | 2026-09-16 10:14 A | 79 | 100% | 2026-09-15 16:22 | 2026-09-16 10:14 | 0.36d | 2026-09-15 16:22 | 2026-09-16 10:14 | Ruiz Campos José Fernando [87.08%] | 2.5h | 2.5h | 300 | 300 | 300 | S3 | DEV | D4 | 1.3 Ejecución: producto Andy's Coffee POS | AC-06; AC-07; AC-08 |  |  |  |  |  | HU-04 · CU-22 | 3 |
| 81 | 1.3.1.2.8 | HU-07 Configurar las preferencias del negocio |  | 0.36d | 2026-09-16 10:14 A | 2026-09-16 14:07 A | 80 | 100% | 2026-09-16 10:14 | 2026-09-16 14:07 | 0.36d | 2026-09-16 10:14 | 2026-09-16 14:07 | Ruiz Campos José Fernando [87.08%] | 2.5h | 2.5h | 300 | 300 | 300 | S3 | DEV | D4 | 1.3 Ejecución: producto Andy's Coffee POS | AC-06; AC-07; AC-08 |  |  |  |  |  | HU-07 · CU-03 | 3 |
| 82 | 1.3.1.2.9 | HU-08 Elegir el tema claro u oscuro |  | 0.14d | 2026-09-16 14:07 A | 2026-09-16 15:15 A | 81 | 100% | 2026-09-16 14:07 | 2026-09-16 15:15 | 0.14d | 2026-09-16 14:07 | 2026-09-16 15:15 | Ruiz Campos José Fernando [87.08%] | 1h | 1h | 120 | 120 | 120 | S3 | DEV | D4 | 1.3 Ejecución: producto Andy's Coffee POS | AC-06; AC-07; AC-08 |  |  |  |  |  | HU-08 · CU-03 | 1 |
| 83 | 1.3.1.2.10 | Ejecutar las pruebas de seguridad del acceso (JWT, CSRF, RBAC, bcrypt) |  | 0.43d | 2026-09-16 15:15 A | 2026-09-17 09:42 A | 82 | 100% | 2026-09-16 15:15 | 2026-09-17 09:42 | 0.43d | 2026-09-16 15:15 | 2026-09-17 09:42 | Ruiz Campos José Fernando [87.08%] | 3h | 3h | 360 | 360 | 360 | S3 | DEV, QA | D4 | 1.3 Ejecución: producto Andy's Coffee POS | AC-11 |  |  |  |  |  |  |  |
| 84 | 1.3.1.2.11 | Integrar el incremento I1 y revisar el entregable D4 |  | 0.29d | 2026-09-17 09:42 A | 2026-09-17 12:00 A | 83 | 100% | 2026-09-17 09:42 | 2026-09-17 12:00 | 0.29d | 2026-09-17 09:42 | 2026-09-17 12:00 | Ruiz Campos José Fernando [87.08%] | 2h | 2h | 240 | 240 | 240 | S3 | DEV; PO | D4 | 1.3 Ejecución: producto Andy's Coffee POS | AC-16 (D4) |  |  |  |  |  |  |  |

Notes:
- 53: Paquete de trabajo 1.2.3.3 (diccionario de la EDT, 3.1a). Plan de calidad con política, objetivos, métricas, criterios y programa de aseguramiento. Responsable: SM. Esfuerzo: 6 h × $120 = $720 MXN.
- 56: Paquete de trabajo 1.2.3.4 (diccionario de la EDT, 3.1a). Riesgos identificados, analizados y con respuesta planificada. Responsable: SM. Esfuerzo: 6 h × $120 = $720 MXN.
- 59: Paquete de trabajo 1.2.3.5 (diccionario de la EDT, 3.1a). Plan de comunicación y plan de RR. HH.; línea base integrada y aprobada (H2). Responsable: SM. Esfuerzo: 5 h × $120 = $600 MXN.
- 63: Hito de control de duración cero (3.2, apartado 2.4). Condición de salida: Requisitos, diseño técnico, alcance y EDT, cronograma, costos y planes de calidad, riesgos, comunicación y RR. HH. revisados y aprobados.
- 65: Actividad 6 del cronograma (3.2). PERT (semanas laborales, con f = 89/120): O = 0.7417, M = 1.1125, P = 1.4833; Te = (O + 4M + P) / 6 = 1.1125 semanas = 6.675 días; σ² = ((P − O) / 6)² = 0.0153. Esfuerzo: 47 h × $120 = $5,640 MXN. Holgura: 0 (ruta crítica única).
- 66: Paquete de trabajo 1.3.1.1 (diccionario de la EDT, 3.1a). Repositorio, SPA y API en capas, base de datos de prueba en Docker y pipeline de CI en ejecución. Tareas técnicas del Sprint Backlog (sin historias de usuario). Responsable: DO. Esfuerzo: 47 h × $120 = $5,640 MXN.
- 72: Actividad 7 del cronograma (3.2). PERT (semanas laborales, con f = 89/120): O = 0.3708, M = 0.7417, P = 1.1125; Te = (O + 4M + P) / 6 = 0.7417 semanas = 4.45 días; σ² = ((P − O) / 6)² = 0.0153. Esfuerzo: 31 h × $120 = $3,720 MXN. Holgura: 0 (ruta crítica única).
- 73: Paquete de trabajo 1.3.1.2 (diccionario de la EDT, 3.1a). EP-01: HU-01 a HU-09 (31 puntos). Inicio de sesión con JWT y CSRF, roles y permisos, validación de entradas, bitácora, perfil y preferencias. Responsable: DEV. Esfuerzo: 31 h × $120 = $3,720 MXN.
- 74: Historia de usuario HU-01 (3.1b): EP-01 · CU-01 · prioridad Alta · 3 puntos · aceptación: PA-01. Paquete 1.3.1.2. Definición de terminado: criterios de aceptación cumplidos, pruebas automatizadas con CI en verde, revisión de código y demostración en la Sprint Review.
- 75: Historia de usuario HU-02 (3.1b): EP-01 · CU-01 · prioridad Alta · 2 puntos · aceptación: PA-01. Paquete 1.3.1.2. Definición de terminado: criterios de aceptación cumplidos, pruebas automatizadas con CI en verde, revisión de código y demostración en la Sprint Review.
- 76: Historia de usuario HU-03 (3.1b): EP-01 · CU-22 · prioridad Alta · 1 puntos · aceptación: PA-01. Paquete 1.3.1.2. Definición de terminado: criterios de aceptación cumplidos, pruebas automatizadas con CI en verde, revisión de código y demostración en la Sprint Review.
- 77: Historia de usuario HU-05 (3.1b): EP-01 · CU-02 · prioridad Alta · 5 puntos · aceptación: PA-01. Paquete 1.3.1.2. Definición de terminado: criterios de aceptación cumplidos, pruebas automatizadas con CI en verde, revisión de código y demostración en la Sprint Review.
- 78: Historia de usuario HU-06 (3.1b): EP-01 · CU-02 · prioridad Alta · 8 puntos · aceptación: PA-01. Paquete 1.3.1.2. Definición de terminado: criterios de aceptación cumplidos, pruebas automatizadas con CI en verde, revisión de código y demostración en la Sprint Review.
- 79: Historia de usuario HU-09 (3.1b): EP-01 · CU-01, CU-02, CU-07, CU-09 a CU-12 · prioridad Alta · 5 puntos · aceptación: PA-01, PA-09. Paquete 1.3.1.2. Definición de terminado: criterios de aceptación cumplidos, pruebas automatizadas con CI en verde, revisión de código y demostración en la Sprint Review.
- 80: Historia de usuario HU-04 (3.1b): EP-01 · CU-22 · prioridad Media · 3 puntos · aceptación: PA-01. Paquete 1.3.1.2. Definición de terminado: criterios de aceptación cumplidos, pruebas automatizadas con CI en verde, revisión de código y demostración en la Sprint Review.
- 81: Historia de usuario HU-07 (3.1b): EP-01 · CU-03 · prioridad Media · 3 puntos · aceptación: Sprint Review S3. Paquete 1.3.1.2. Definición de terminado: criterios de aceptación cumplidos, pruebas automatizadas con CI en verde, revisión de código y demostración en la Sprint Review.
- 82: Historia de usuario HU-08 (3.1b): EP-01 · CU-03 · prioridad Baja · 1 puntos · aceptación: Sprint Review S3. Paquete 1.3.1.2. Definición de terminado: criterios de aceptación cumplidos, pruebas automatizadas con CI en verde, revisión de código y demostración en la Sprint Review.

| ID | WBS | Task | Duration | Start | Finish | Predecessors | Complete | Baseline start | Baseline finish | Baseline duration | Baseline 1 start | Baseline 1 finish | Resources | Work | Actual work | Cost | Baseline cost | Actual cost | Calidad y sostenibilidad (2.3) | Sprint | Puesto (plan de RR. HH.) | Entregable | Fase (EDT) | O (semanas) | M (semanas) | P (semanas) | Te (semanas) | Varianza | Historia / caso de uso (3.1b) | Puntos de historia |
| --- | --- | --- | --- | --- | --- | --- | --- | --- | --- | --- | --- | --- | --- | --- | --- | --- | --- | --- | --- | --- | --- | --- | --- | --- | --- | --- | --- | --- | --- | --- |
| 85 | 1.3.2 | **Actividad 8 · Catálogo y recetas** | 6.67d | 2026-09-17 12:00 A | 2026-09-25 09:24 A |  | 100% | 2026-09-17 12:00 | 2026-09-25 09:24 | 6.67d | 2026-09-17 12:00 | 2026-09-25 09:24 |  | 47h | 47h | 5,640 | 5,640 | 5,640 | AC-08; AC-09; AC-13; SO-03 | S3–S4 | DEV | D5 | 1.3 Ejecución: producto Andy's Coffee POS | 0.74 | 1.11 | 1.48 | 1.11 | 0.02 |  |  |
| 86 | 1.3.2.1 | **1.3.2.1 Categorías y productos** | 2.7d | 2026-09-17 12:00 A | 2026-09-21 09:35 A |  | 100% | 2026-09-17 12:00 | 2026-09-21 09:35 | 2.7d | 2026-09-17 12:00 | 2026-09-21 09:35 |  | 19h | 19h | 2,280 | 2,280 | 2,280 |  | S3–S4 | DEV | D5 | 1.3 Ejecución: producto Andy's Coffee POS |  |  |  |  |  |  |  |
| 87 | 1.3.2.1.1 | Refinar las historias del catálogo | 0.21d | 2026-09-17 12:00 A | 2026-09-17 14:42 A | 84 | 100% | 2026-09-17 12:00 | 2026-09-17 14:42 | 0.21d | 2026-09-17 12:00 | 2026-09-17 14:42 | Ruiz Campos José Fernando [88.01%] | 1.5h | 1.5h | 180 | 180 | 180 | AC-02 | S3 | DEV | D5 | 1.3 Ejecución: producto Andy's Coffee POS |  |  |  |  |  |  |  |
| 88 | 1.3.2.1.2 | Modelar y migrar las tablas de categorías y productos | 0.5d | 2026-09-17 14:42 A | 2026-09-18 09:41 A | 87 | 100% | 2026-09-17 14:42 | 2026-09-18 09:41 | 0.5d | 2026-09-17 14:42 | 2026-09-18 09:41 | Ruiz Campos José Fernando [88.01%] | 3.5h | 3.5h | 420 | 420 | 420 |  | S3 | DEV | D5 | 1.3 Ejecución: producto Andy's Coffee POS |  |  |  |  |  |  |  |
| 89 | 1.3.2.1.3 | HU-10 Gestionar las categorías del menú | 0.5d | 2026-09-18 09:41 A | 2026-09-18 14:39 A | 88 | 100% | 2026-09-18 09:41 | 2026-09-18 14:39 | 0.5d | 2026-09-18 09:41 | 2026-09-18 14:39 | Ruiz Campos José Fernando [88.01%] | 3.5h | 3.5h | 420 | 420 | 420 | AC-06; AC-07; AC-08 | S3 | DEV | D5 | 1.3 Ejecución: producto Andy's Coffee POS |  |  |  |  |  | HU-10 · CU-08 | 2 |
| 90 | 1.3.2.1.4 | HU-11 Registrar productos con precio e imagen | 1.28d | 2026-09-18 14:39 A | 2026-09-19 16:53 A | 89 | 100% | 2026-09-18 14:39 | 2026-09-19 16:53 | 1.28d | 2026-09-18 14:39 | 2026-09-19 16:53 | Ruiz Campos José Fernando [88.01%] | 9h | 9h | 1,080 | 1,080 | 1,080 | AC-06; AC-07; AC-08; SO-03 | S3 | DEV | D5 | 1.3 Ejecución: producto Andy's Coffee POS |  |  |  |  |  | HU-11 · CU-08 | 5 |
| 91 | 1.3.2.1.5 | Ejecutar las pruebas de integración de categorías y productos | 0.21d | 2026-09-19 16:53 A | 2026-09-21 09:35 A | 90 | 100% | 2026-09-19 16:53 | 2026-09-21 09:35 | 0.21d | 2026-09-19 16:53 | 2026-09-21 09:35 | Ruiz Campos José Fernando [88.01%] | 1.5h | 1.5h | 180 | 180 | 180 | AC-09 | S3–S4 | DEV | D5 | 1.3 Ejecución: producto Andy's Coffee POS |  |  |  |  |  |  |  |
| 92 | 1.3.2.2 | **1.3.2.2 Extras, combos y promociones** | 2.27d | 2026-09-21 09:35 A | 2026-09-23 11:46 A |  | 100% | 2026-09-21 09:35 | 2026-09-23 11:46 | 2.27d | 2026-09-21 09:35 | 2026-09-23 11:46 |  | 16h | 16h | 1,920 | 1,920 | 1,920 |  | S4 | DEV | D5 | 1.3 Ejecución: producto Andy's Coffee POS |  |  |  |  |  |  |  |
| 93 | 1.3.2.2.1 | Modelar y migrar las tablas de extras, combos y promociones | 0.29d | 2026-09-21 09:35 A | 2026-09-21 11:52 A | 91 | 100% | 2026-09-21 09:35 | 2026-09-21 11:52 | 0.29d | 2026-09-21 09:35 | 2026-09-21 11:52 | Ruiz Campos José Fernando [88.01%] | 2h | 2h | 240 | 240 | 240 |  | S4 | DEV | D5 | 1.3 Ejecución: producto Andy's Coffee POS |  |  |  |  |  |  |  |
| 94 | 1.3.2.2.2 | HU-12 Configurar extras y opciones de personalización | 0.42d | 2026-09-21 11:52 A | 2026-09-21 16:16 A | 93 | 100% | 2026-09-21 11:52 | 2026-09-21 16:16 | 0.42d | 2026-09-21 11:52 | 2026-09-21 16:16 | Ruiz Campos José Fernando [88.01%] | 3h | 3h | 360 | 360 | 360 | AC-06; AC-07; AC-08 | S4 | DEV | D5 | 1.3 Ejecución: producto Andy's Coffee POS |  |  |  |  |  | HU-12 · CU-08 | 3 |
| 95 | 1.3.2.2.3 | HU-13 Configurar combos | 0.43d | 2026-09-21 16:16 A | 2026-09-22 10:41 A | 94 | 100% | 2026-09-21 16:16 | 2026-09-22 10:41 | 0.43d | 2026-09-21 16:16 | 2026-09-22 10:41 | Ruiz Campos José Fernando [88.01%] | 3h | 3h | 360 | 360 | 360 | AC-06; AC-07; AC-08 | S4 | DEV | D5 | 1.3 Ejecución: producto Andy's Coffee POS |  |  |  |  |  | HU-13 · CU-08 | 3 |
| 96 | 1.3.2.2.4 | HU-14 Aplicar automáticamente las promociones vigentes | 1.14d | 2026-09-22 10:41 A | 2026-09-23 11:46 A | 95 | 100% | 2026-09-22 10:41 | 2026-09-23 11:46 | 1.14d | 2026-09-22 10:41 | 2026-09-23 11:46 | Ruiz Campos José Fernando [88.01%] | 8h | 8h | 960 | 960 | 960 | AC-06; AC-07; AC-08 | S4 | DEV | D5 | 1.3 Ejecución: producto Andy's Coffee POS |  |  |  |  |  | HU-14 · CU-04, CU-08 | 8 |
| 97 | 1.3.2.3 | **1.3.2.3 Recetas de productos** | 1.7d | 2026-09-23 11:46 A | 2026-09-25 09:24 A |  | 100% | 2026-09-23 11:46 | 2026-09-25 09:24 | 1.7d | 2026-09-23 11:46 | 2026-09-25 09:24 |  | 12h | 12h | 1,440 | 1,440 | 1,440 |  | S4 | DEV | D5 | 1.3 Ejecución: producto Andy's Coffee POS |  |  |  |  |  |  |  |
| 98 | 1.3.2.3.1 | Cargar como datos iniciales los ingredientes que requieren las recetas (supuesto de HU-15) | 0.28d | 2026-09-23 11:46 A | 2026-09-23 15:02 A | 96 | 100% | 2026-09-23 11:46 | 2026-09-23 15:02 | 0.28d | 2026-09-23 11:46 | 2026-09-23 15:02 | Ruiz Campos José Fernando [88.01%] | 2h | 2h | 240 | 240 | 240 |  | S4 | DEV | D5 | 1.3 Ejecución: producto Andy's Coffee POS |  |  |  |  |  |  |  |
| 99 | 1.3.2.3.2 | HU-15 Registrar recetas de productos y extras | 0.85d | 2026-09-23 15:02 A | 2026-09-24 12:51 A | 98 | 100% | 2026-09-23 15:02 | 2026-09-24 12:51 | 0.85d | 2026-09-23 15:02 | 2026-09-24 12:51 | Ruiz Campos José Fernando [88.01%] | 6h | 6h | 720 | 720 | 720 | AC-06; AC-07; AC-08 | S4 | DEV | D5 | 1.3 Ejecución: producto Andy's Coffee POS |  |  |  |  |  | HU-15 · CU-08, CU-13 | 5 |
| 100 | 1.3.2.3.3 | Ejecutar las pruebas del catálogo y preparar su demostración | 0.57d | 2026-09-24 12:51 A | 2026-09-25 09:24 A | 99 | 100% | 2026-09-24 12:51 | 2026-09-25 09:24 | 0.57d | 2026-09-24 12:51 | 2026-09-25 09:24 | Ruiz Campos José Fernando [88.01%] | 4h | 4h | 480 | 480 | 480 | AC-08; AC-09; AC-13 | S4 | DEV | D5 | 1.3 Ejecución: producto Andy's Coffee POS |  |  |  |  |  |  |  |
| 101 | 1.3.4 | **Actividad 9 · Caja: apertura, cierres, movimientos y conciliación** | 6.67d | 2026-09-25 09:24 A | 2026-10-02 15:48 A |  | 100% | 2026-09-25 09:24 | 2026-10-02 15:48 | 6.67d | 2026-09-25 09:24 | 2026-10-02 15:48 |  | 47h | 47h | 5,640 | 5,640 | 5,640 | AC-04 (caja); AC-08; AC-09; AC-13; AC-16 (D5, D7) | S4 | DEV, UX | D7 | 1.3 Ejecución: producto Andy's Coffee POS | 0.74 | 1.11 | 1.48 | 1.11 | 0.02 |  |  |
| 102 | 1.3.4.1 | **1.3.4.1 Apertura de caja y movimientos** | 2.27d | 2026-09-25 09:24 A | 2026-09-28 11:35 A |  | 100% | 2026-09-25 09:24 | 2026-09-28 11:35 | 2.27d | 2026-09-25 09:24 | 2026-09-28 11:35 |  | 16h | 16h | 1,920 | 1,920 | 1,920 |  | S4 | DEV | D7 | 1.3 Ejecución: producto Andy's Coffee POS |  |  |  |  |  |  |  |
| 103 | 1.3.4.1.1 | Refinar las reglas de apertura, cierre y corrección y validar el flujo de caja con usuarios | 0.43d | 2026-09-25 09:24 A | 2026-09-25 12:49 A | 100 | 100% | 2026-09-25 09:24 | 2026-09-25 12:49 | 0.43d | 2026-09-25 09:24 | 2026-09-25 12:49 | Ruiz Campos José Fernando [88.01%] | 3h | 3h | 360 | 360 | 360 | AC-02; AC-04 (caja) | S4 | DEV, UX; CAJ | D7 | 1.3 Ejecución: producto Andy's Coffee POS |  |  |  |  |  |  |  |
| 104 | 1.3.4.1.2 | HU-16 Abrir la caja con fondo inicial | 0.71d | 2026-09-25 12:49 A | 2026-09-26 10:29 A | 103 | 100% | 2026-09-25 12:49 | 2026-09-26 10:29 | 0.71d | 2026-09-25 12:49 | 2026-09-26 10:29 | Ruiz Campos José Fernando [88.01%] | 5h | 5h | 600 | 600 | 600 | AC-06; AC-07; AC-08 | S4 | DEV | D7 | 1.3 Ejecución: producto Andy's Coffee POS |  |  |  |  |  | HU-16 · CU-09 | 3 |
| 105 | 1.3.4.1.3 | HU-17 Registrar automáticamente los movimientos de efectivo | 1.14d | 2026-09-26 10:29 A | 2026-09-28 11:35 A | 104 | 100% | 2026-09-26 10:29 | 2026-09-28 11:35 | 1.14d | 2026-09-26 10:29 | 2026-09-28 11:35 | Ruiz Campos José Fernando [88.01%] | 8h | 8h | 960 | 960 | 960 | AC-06; AC-07; AC-08 | S4 | DEV | D7 | 1.3 Ejecución: producto Andy's Coffee POS |  |  |  |  |  | HU-17 · CU-09, CU-10 | 5 |
| 106 | 1.3.4.2 | **1.3.4.2 Cierre, arqueo y cierre automático** | 2.7d | 2026-09-28 11:35 A | 2026-10-01 09:10 A |  | 100% | 2026-09-28 11:35 | 2026-10-01 09:10 | 2.7d | 2026-09-28 11:35 | 2026-10-01 09:10 |  | 19h | 19h | 2,280 | 2,280 | 2,280 |  | S4 | DEV | D7 | 1.3 Ejecución: producto Andy's Coffee POS |  |  |  |  |  |  |  |
| 107 | 1.3.4.2.1 | HU-18 Cerrar la caja con arqueo | 1.14d | 2026-09-28 11:35 A | 2026-09-29 12:40 A | 105 | 100% | 2026-09-28 11:35 | 2026-09-29 12:40 | 1.14d | 2026-09-28 11:35 | 2026-09-29 12:40 | Ruiz Campos José Fernando [88.01%] | 8h | 8h | 960 | 960 | 960 | AC-06; AC-07; AC-08 | S4 | DEV | D7 | 1.3 Ejecución: producto Andy's Coffee POS |  |  |  |  |  | HU-18 · CU-10 | 5 |
| 108 | 1.3.4.2.2 | HU-19 Consultar el historial de cortes | 0.43d | 2026-09-29 12:40 A | 2026-09-29 17:05 A | 107 | 100% | 2026-09-29 12:40 | 2026-09-29 17:05 | 0.43d | 2026-09-29 12:40 | 2026-09-29 17:05 | Ruiz Campos José Fernando [88.01%] | 3h | 3h | 360 | 360 | 360 | AC-06; AC-07; AC-08 | S4 | DEV | D7 | 1.3 Ejecución: producto Andy's Coffee POS |  |  |  |  |  | HU-19 · CU-10 | 2 |
| 109 | 1.3.4.2.3 | HU-22 Cerrar automáticamente la caja al terminar el día | 1.14d | 2026-09-29 17:05 A | 2026-10-01 09:10 A | 108 | 100% | 2026-09-29 17:05 | 2026-10-01 09:10 | 1.14d | 2026-09-29 17:05 | 2026-10-01 09:10 | Ruiz Campos José Fernando [88.01%] | 8h | 8h | 960 | 960 | 960 | AC-06; AC-07; AC-08 | S4 | DEV | D7 | 1.3 Ejecución: producto Andy's Coffee POS |  |  |  |  |  | HU-22 · CU-20 | 5 |

Notes:
- 85: Actividad 8 del cronograma (3.2). PERT (semanas laborales, con f = 89/120): O = 0.7417, M = 1.1125, P = 1.4833; Te = (O + 4M + P) / 6 = 1.1125 semanas = 6.675 días; σ² = ((P − O) / 6)² = 0.0153. Esfuerzo: 47 h × $120 = $5,640 MXN. Holgura: 0 (ruta crítica única).
- 86: Paquete de trabajo 1.3.2.1 (diccionario de la EDT, 3.1a). HU-10 y HU-11 (7 puntos). Categorías y productos con variantes, tamaños, temperaturas, precio e imagen. Responsable: DEV. Esfuerzo: 19 h × $120 = $2,280 MXN.
- 89: Historia de usuario HU-10 (3.1b): EP-02 · CU-08 · prioridad Alta · 2 puntos · aceptación: PA-02. Paquete 1.3.2.1. Definición de terminado: criterios de aceptación cumplidos, pruebas automatizadas con CI en verde, revisión de código y demostración en la Sprint Review.
- 90: Historia de usuario HU-11 (3.1b): EP-02 · CU-08 · prioridad Alta · 5 puntos · aceptación: PA-02. Paquete 1.3.2.1. Definición de terminado: criterios de aceptación cumplidos, pruebas automatizadas con CI en verde, revisión de código y demostración en la Sprint Review.
- 92: Paquete de trabajo 1.3.2.2 (diccionario de la EDT, 3.1a). HU-12 a HU-14 (14 puntos). Extras, combos y aplicación automática de promociones. Responsable: DEV. Esfuerzo: 16 h × $120 = $1,920 MXN.
- 94: Historia de usuario HU-12 (3.1b): EP-02 · CU-08 · prioridad Media · 3 puntos · aceptación: PA-02. Paquete 1.3.2.2. Definición de terminado: criterios de aceptación cumplidos, pruebas automatizadas con CI en verde, revisión de código y demostración en la Sprint Review.
- 95: Historia de usuario HU-13 (3.1b): EP-02 · CU-08 · prioridad Media · 3 puntos · aceptación: PA-02. Paquete 1.3.2.2. Definición de terminado: criterios de aceptación cumplidos, pruebas automatizadas con CI en verde, revisión de código y demostración en la Sprint Review.
- 96: Historia de usuario HU-14 (3.1b): EP-02 · CU-04, CU-08 · prioridad Media · 8 puntos · aceptación: PA-02. Paquete 1.3.2.2. Definición de terminado: criterios de aceptación cumplidos, pruebas automatizadas con CI en verde, revisión de código y demostración en la Sprint Review.
- 97: Paquete de trabajo 1.3.2.3 (diccionario de la EDT, 3.1a). HU-15 (5 puntos). Recetas por tamaño y temperatura con costo sugerido. Supuesto: los ingredientes que requieren las recetas se cargan como datos iniciales en S4 (3.1b, nota de HU-15). Responsable: DEV. Esfuerzo: 12 h × $120 = $1,440 MXN.
- 99: Historia de usuario HU-15 (3.1b): EP-02 · CU-08, CU-13 · prioridad Alta · 5 puntos · aceptación: PA-02, PA-11. Paquete 1.3.2.3. Definición de terminado: criterios de aceptación cumplidos, pruebas automatizadas con CI en verde, revisión de código y demostración en la Sprint Review.
- 101: Actividad 9 del cronograma (3.2). PERT (semanas laborales, con f = 89/120): O = 0.7417, M = 1.1125, P = 1.4833; Te = (O + 4M + P) / 6 = 1.1125 semanas = 6.675 días; σ² = ((P − O) / 6)² = 0.0153. Esfuerzo: 47 h × $120 = $5,640 MXN. Holgura: 0 (ruta crítica única).
- 102: Paquete de trabajo 1.3.4.1 (diccionario de la EDT, 3.1a). HU-16 y HU-17 (8 puntos). Apertura con fondo inicial y registro automático de movimientos de efectivo. Responsable: DEV. Esfuerzo: 16 h × $120 = $1,920 MXN.
- 104: Historia de usuario HU-16 (3.1b): EP-03 · CU-09 · prioridad Alta · 3 puntos · aceptación: PA-04, PA-08. Paquete 1.3.4.1. Definición de terminado: criterios de aceptación cumplidos, pruebas automatizadas con CI en verde, revisión de código y demostración en la Sprint Review.
- 105: Historia de usuario HU-17 (3.1b): EP-03 · CU-09, CU-10 · prioridad Alta · 5 puntos · aceptación: PA-03, PA-08. Paquete 1.3.4.1. Definición de terminado: criterios de aceptación cumplidos, pruebas automatizadas con CI en verde, revisión de código y demostración en la Sprint Review.
- 106: Paquete de trabajo 1.3.4.2 (diccionario de la EDT, 3.1a). HU-18, HU-19 y HU-22 (12 puntos). Cierre con arqueo, historial de cortes y cierre automático. Responsable: DEV. Esfuerzo: 19 h × $120 = $2,280 MXN.
- 107: Historia de usuario HU-18 (3.1b): EP-03 · CU-10 · prioridad Alta · 5 puntos · aceptación: PA-08. Paquete 1.3.4.2. Definición de terminado: criterios de aceptación cumplidos, pruebas automatizadas con CI en verde, revisión de código y demostración en la Sprint Review.
- 108: Historia de usuario HU-19 (3.1b): EP-03 · CU-10 · prioridad Media · 2 puntos · aceptación: PA-08. Paquete 1.3.4.2. Definición de terminado: criterios de aceptación cumplidos, pruebas automatizadas con CI en verde, revisión de código y demostración en la Sprint Review.
- 109: Historia de usuario HU-22 (3.1b): EP-03 · CU-20 · prioridad Alta · 5 puntos · aceptación: PA-10. Paquete 1.3.4.2. Definición de terminado: criterios de aceptación cumplidos, pruebas automatizadas con CI en verde, revisión de código y demostración en la Sprint Review.

| ID | WBS | Task | Duration | Start | Finish | Predecessors | Complete | Baseline start | Baseline finish | Baseline duration | Baseline 1 start | Baseline 1 finish | Resources | Work | Actual work | Cost | Baseline cost | Actual cost | Sprint | Puesto (plan de RR. HH.) | Entregable | Fase (EDT) | Historia / caso de uso (3.1b) | Puntos de historia | O (semanas) | M (semanas) | P (semanas) | Te (semanas) | Varianza |
| --- | --- | --- | --- | --- | --- | --- | --- | --- | --- | --- | --- | --- | --- | --- | --- | --- | --- | --- | --- | --- | --- | --- | --- | --- | --- | --- | --- | --- | --- |
| 110 | 1.3.4.3 | **1.3.4.3 Corrección y reapertura auditada** | 1.7d | 2026-10-01 09:10 A | 2026-10-02 15:48 A |  | 100% | 2026-10-01 09:10 | 2026-10-02 15:48 | 1.7d | 2026-10-01 09:10 | 2026-10-02 15:48 |  | 12h | 12h | 1,440 | 1,440 | 1,440 | S4 | DEV | D7 | 1.3 Ejecución: producto Andy's Coffee POS |  |  |  |  |  |  |  |
| 111 | 1.3.4.3.1 | HU-20 Corregir un corte con motivo | 0.57d | 2026-10-01 09:10 A | 2026-10-01 14:43 A | 109 | 100% | 2026-10-01 09:10 | 2026-10-01 14:43 | 0.57d | 2026-10-01 09:10 | 2026-10-01 14:43 | Ruiz Campos José Fernando [88.01%] | 4h | 4h | 480 | 480 | 480 | S4 | DEV | D7 | 1.3 Ejecución: producto Andy's Coffee POS | HU-20 · CU-11 | 3 |  |  |  |  |  |
| 112 | 1.3.4.3.2 | HU-21 Reabrir una sesión de caja | 0.57d | 2026-10-01 14:43 A | 2026-10-02 10:15 A | 111 | 100% | 2026-10-01 14:43 | 2026-10-02 10:15 | 0.57d | 2026-10-01 14:43 | 2026-10-02 10:15 | Ruiz Campos José Fernando [88.01%] | 4h | 4h | 480 | 480 | 480 | S4 | DEV | D7 | 1.3 Ejecución: producto Andy's Coffee POS | HU-21 · CU-12 | 3 |  |  |  |  |  |
| 113 | 1.3.4.3.3 | Probar la conciliación de caja y revisar los entregables D5 y D7 | 0.57d | 2026-10-02 10:15 A | 2026-10-02 15:48 A | 112 | 100% | 2026-10-02 10:15 | 2026-10-02 15:48 | 0.57d | 2026-10-02 10:15 | 2026-10-02 15:48 | Ruiz Campos José Fernando [88.01%] | 4h | 4h | 480 | 480 | 480 | S4 | DEV, QA; PO | D7 | 1.3 Ejecución: producto Andy's Coffee POS |  |  |  |  |  |  |  |
| 114 | 1.3.3 | **Actividad 10 · Punto de venta y pedidos** | 11.12d | 2026-10-02 15:48 A | 2026-10-15 16:48 A |  | 100% | 2026-10-02 15:48 | 2026-10-15 16:48 | 11.12d | 2026-10-02 15:48 | 2026-10-15 16:48 |  | 78h | 78h | 9,360 | 9,360 | 9,360 | S4–S5 | DEV, UX | D6 | 1.3 Ejecución: producto Andy's Coffee POS |  |  | 1.11 | 1.85 | 2.6 | 1.85 | 0.06 |
| 115 | 1.3.3.1 | **1.3.3.1 Registro de venta y carrito** | 3.85d | 2026-10-02 15:48 A | 2026-10-07 14:36 A |  | 100% | 2026-10-02 15:48 | 2026-10-07 14:36 | 3.85d | 2026-10-02 15:48 | 2026-10-07 14:36 |  | 27h | 27h | 3,240 | 3,240 | 3,240 | S4–S5 | DEV | D6 | 1.3 Ejecución: producto Andy's Coffee POS |  |  |  |  |  |  |  |
| 116 | 1.3.3.1.1 | Refinar las historias de venta y cobro y planear el sprint S5 | 0.43d | 2026-10-02 15:48 A | 2026-10-03 10:13 A | 113 | 100% | 2026-10-02 15:48 | 2026-10-03 10:13 | 0.43d | 2026-10-02 15:48 | 2026-10-03 10:13 | Ruiz Campos José Fernando [87.64%] | 3h | 3h | 360 | 360 | 360 | S4 | DEV, PO | D6 | 1.3 Ejecución: producto Andy's Coffee POS |  |  |  |  |  |  |  |
| 117 | 1.3.3.1.2 | Modelar y migrar las tablas de órdenes, partidas y pagos con clave de idempotencia | 0.86d | 2026-10-03 10:13 A | 2026-10-05 09:04 A | 116 | 100% | 2026-10-03 10:13 | 2026-10-05 09:04 | 0.86d | 2026-10-03 10:13 | 2026-10-05 09:04 | Ruiz Campos José Fernando [87.64%] | 6h | 6h | 720 | 720 | 720 | S4–S5 | DEV | D6 | 1.3 Ejecución: producto Andy's Coffee POS |  |  |  |  |  |  |  |
| 118 | 1.3.3.1.3 | HU-23 Buscar y agregar productos al pedido | 0.71d | 2026-10-05 09:04 A | 2026-10-05 15:46 A | 117 | 100% | 2026-10-05 09:04 | 2026-10-05 15:46 | 0.71d | 2026-10-05 09:04 | 2026-10-05 15:46 | Ruiz Campos José Fernando [87.64%] | 5h | 5h | 600 | 600 | 600 | S5 | DEV | D6 | 1.3 Ejecución: producto Andy's Coffee POS | HU-23 · CU-04 | 3 |  |  |  |  |  |
| 119 | 1.3.3.1.4 | HU-24 Personalizar un producto del pedido | 0.71d | 2026-10-05 15:46 A | 2026-10-06 12:29 A | 118 | 100% | 2026-10-05 15:46 | 2026-10-06 12:29 | 0.71d | 2026-10-05 15:46 | 2026-10-06 12:29 | Ruiz Campos José Fernando [87.64%] | 5h | 5h | 600 | 600 | 600 | S5 | DEV | D6 | 1.3 Ejecución: producto Andy's Coffee POS | HU-24 · CU-04 | 3 |  |  |  |  |  |
| 120 | 1.3.3.1.5 | HU-25 Registrar la orden | 1.14d | 2026-10-06 12:29 A | 2026-10-07 14:36 A | 119 | 100% | 2026-10-06 12:29 | 2026-10-07 14:36 | 1.14d | 2026-10-06 12:29 | 2026-10-07 14:36 | Ruiz Campos José Fernando [87.64%] | 8h | 8h | 960 | 960 | 960 | S5 | DEV | D6 | 1.3 Ejecución: producto Andy's Coffee POS | HU-25 · CU-04 | 5 |  |  |  |  |  |
| 121 | 1.3.3.2 | **1.3.3.2 Procesamiento de pagos y pagos pendientes** | 3.28d | 2026-10-07 14:36 A | 2026-10-10 16:51 A |  | 100% | 2026-10-07 14:36 | 2026-10-10 16:51 | 3.28d | 2026-10-07 14:36 | 2026-10-10 16:51 |  | 23h | 23h | 2,760 | 2,760 | 2,760 | S5 | DEV | D6 | 1.3 Ejecución: producto Andy's Coffee POS |  |  |  |  |  |  |  |
| 122 | 1.3.3.2.1 | HU-26 Cobrar en efectivo con cálculo del cambio | 0.86d | 2026-10-07 14:36 A | 2026-10-08 12:27 A | 120 | 100% | 2026-10-07 14:36 | 2026-10-08 12:27 | 0.86d | 2026-10-07 14:36 | 2026-10-08 12:27 | Ruiz Campos José Fernando [87.64%] | 6h | 6h | 720 | 720 | 720 | S5 | DEV | D6 | 1.3 Ejecución: producto Andy's Coffee POS | HU-26 · CU-05 | 3 |  |  |  |  |  |
| 123 | 1.3.3.2.2 | HU-27 Registrar pagos con tarjeta o transferencia | 0.57d | 2026-10-08 12:27 A | 2026-10-09 09:01 A | 122 | 100% | 2026-10-08 12:27 | 2026-10-09 09:01 | 0.57d | 2026-10-08 12:27 | 2026-10-09 09:01 | Ruiz Campos José Fernando [87.64%] | 4h | 4h | 480 | 480 | 480 | S5 | DEV | D6 | 1.3 Ejecución: producto Andy's Coffee POS | HU-27 · CU-05 | 2 |  |  |  |  |  |
| 124 | 1.3.3.2.3 | HU-28 Registrar una venta con pago pendiente | 0.71d | 2026-10-09 09:01 A | 2026-10-09 15:43 A | 123 | 100% | 2026-10-09 09:01 | 2026-10-09 15:43 | 0.71d | 2026-10-09 09:01 | 2026-10-09 15:43 | Ruiz Campos José Fernando [87.64%] | 5h | 5h | 600 | 600 | 600 | S5 | DEV | D6 | 1.3 Ejecución: producto Andy's Coffee POS | HU-28 · CU-05 | 3 |  |  |  |  |  |
| 125 | 1.3.3.2.4 | HU-29 Liquidar un pago pendiente | 0.71d | 2026-10-09 15:43 A | 2026-10-10 12:26 A | 124 | 100% | 2026-10-09 15:43 | 2026-10-10 12:26 | 0.71d | 2026-10-09 15:43 | 2026-10-10 12:26 | Ruiz Campos José Fernando [87.64%] | 5h | 5h | 600 | 600 | 600 | S5 | DEV | D6 | 1.3 Ejecución: producto Andy's Coffee POS | HU-29 · CU-05 | 3 |  |  |  |  |  |
| 126 | 1.3.3.2.5 | Ejecutar las pruebas de integración de pagos con caja | 0.43d | 2026-10-10 12:26 A | 2026-10-10 16:51 A | 125 | 100% | 2026-10-10 12:26 | 2026-10-10 16:51 | 0.43d | 2026-10-10 12:26 | 2026-10-10 16:51 | Ruiz Campos José Fernando [87.64%] | 3h | 3h | 360 | 360 | 360 | S5 | DEV | D6 | 1.3 Ejecución: producto Andy's Coffee POS |  |  |  |  |  |  |  |
| 127 | 1.3.3.3 | **1.3.3.3 Órdenes del día, entregas y notificaciones** | 2.28d | 2026-10-10 16:51 A | 2026-10-14 10:06 A |  | 100% | 2026-10-10 16:51 | 2026-10-14 10:06 | 2.28d | 2026-10-10 16:51 | 2026-10-14 10:06 |  | 16h | 16h | 1,920 | 1,920 | 1,920 | S5 | DEV | D6 | 1.3 Ejecución: producto Andy's Coffee POS |  |  |  |  |  |  |  |
| 128 | 1.3.3.3.1 | HU-30 Programar un pedido | 0.29d | 2026-10-10 16:51 A | 2026-10-12 10:08 A | 126 | 100% | 2026-10-10 16:51 | 2026-10-12 10:08 | 0.29d | 2026-10-10 16:51 | 2026-10-12 10:08 | Ruiz Campos José Fernando [87.64%] | 2h | 2h | 240 | 240 | 240 | S5 | DEV | D6 | 1.3 Ejecución: producto Andy's Coffee POS | HU-30 · CU-04, CU-06 | 3 |  |  |  |  |  |
| 129 | 1.3.3.3.2 | HU-31 Dar seguimiento a las órdenes del día | 0.5d | 2026-10-12 10:08 A | 2026-10-12 15:08 A | 128 | 100% | 2026-10-12 10:08 | 2026-10-12 15:08 | 0.5d | 2026-10-12 10:08 | 2026-10-12 15:08 | Ruiz Campos José Fernando [87.64%] | 3.5h | 3.5h | 420 | 420 | 420 | S5 | DEV | D6 | 1.3 Ejecución: producto Andy's Coffee POS | HU-31 · CU-06 | 5 |  |  |  |  |  |
| 130 | 1.3.3.3.3 | HU-32 Consultar órdenes de días anteriores | 0.14d | 2026-10-12 15:08 A | 2026-10-12 16:16 A | 129 | 100% | 2026-10-12 15:08 | 2026-10-12 16:16 | 0.14d | 2026-10-12 15:08 | 2026-10-12 16:16 | Ruiz Campos José Fernando [87.64%] | 1h | 1h | 120 | 120 | 120 | S5 | DEV | D6 | 1.3 Ejecución: producto Andy's Coffee POS | HU-32 · CU-06 | 2 |  |  |  |  |  |
| 131 | 1.3.3.3.4 | HU-33 Registrar un pedido a domicilio («mandadito») | 0.29d | 2026-10-12 16:16 A | 2026-10-13 09:33 A | 130 | 100% | 2026-10-12 16:16 | 2026-10-13 09:33 | 0.29d | 2026-10-12 16:16 | 2026-10-13 09:33 | Ruiz Campos José Fernando [87.64%] | 2h | 2h | 240 | 240 | 240 | S5 | DEV | D6 | 1.3 Ejecución: producto Andy's Coffee POS | HU-33 · CU-04, CU-06 | 3 |  |  |  |  |  |
| 132 | 1.3.3.3.5 | HU-34 Confirmar la entrega de un mandadito | 0.21d | 2026-10-13 09:33 A | 2026-10-13 11:16 A | 131 | 100% | 2026-10-13 09:33 | 2026-10-13 11:16 | 0.21d | 2026-10-13 09:33 | 2026-10-13 11:16 | Ruiz Campos José Fernando [87.64%] | 1.5h | 1.5h | 180 | 180 | 180 | S5 | DEV | D6 | 1.3 Ejecución: producto Andy's Coffee POS | HU-34 · CU-06 | 2 |  |  |  |  |  |
| 133 | 1.3.3.3.6 | HU-35 Recibir avisos de pedidos y eventos del negocio | 0.29d | 2026-10-13 11:16 A | 2026-10-13 14:33 A | 132 | 100% | 2026-10-13 11:16 | 2026-10-13 14:33 | 0.29d | 2026-10-13 11:16 | 2026-10-13 14:33 | Ruiz Campos José Fernando [87.64%] | 2h | 2h | 240 | 240 | 240 | S5 | DEV | D6 | 1.3 Ejecución: producto Andy's Coffee POS | HU-35 · CU-21 | 3 |  |  |  |  |  |
| 134 | 1.3.3.3.7 | HU-36 Administrar mis notificaciones | 0.14d | 2026-10-13 14:33 A | 2026-10-13 15:41 A | 133 | 100% | 2026-10-13 14:33 | 2026-10-13 15:41 | 0.14d | 2026-10-13 14:33 | 2026-10-13 15:41 | Ruiz Campos José Fernando [87.64%] | 1h | 1h | 120 | 120 | 120 | S5 | DEV | D6 | 1.3 Ejecución: producto Andy's Coffee POS | HU-36 · CU-21 | 2 |  |  |  |  |  |
| 135 | 1.3.3.3.8 | Validar la interfaz del punto de venta con los cajeros (tableta y laptop) | 0.43d | 2026-10-13 15:41 A | 2026-10-14 10:06 A | 134 | 100% | 2026-10-13 15:41 | 2026-10-14 10:06 | 0.43d | 2026-10-13 15:41 | 2026-10-14 10:06 | Ruiz Campos José Fernando [87.64%] | 3h | 3h | 360 | 360 | 360 | S5 | UX; CAJ | D6 | 1.3 Ejecución: producto Andy's Coffee POS |  |  |  |  |  |  |  |

Notes:
- 110: Paquete de trabajo 1.3.4.3 (diccionario de la EDT, 3.1a). HU-20 y HU-21 (6 puntos). Corrección de cortes con motivo y reapertura con bitácora. Responsable: DEV. Esfuerzo: 12 h × $120 = $1,440 MXN.
- 111: Historia de usuario HU-20 (3.1b): EP-03 · CU-11 · prioridad Alta · 3 puntos · aceptación: PA-09. Paquete 1.3.4.3. Definición de terminado: criterios de aceptación cumplidos, pruebas automatizadas con CI en verde, revisión de código y demostración en la Sprint Review. / Calidad y sostenibilidad (2.3): AC-06; AC-07; AC-08
- 112: Historia de usuario HU-21 (3.1b): EP-03 · CU-12 · prioridad Media · 3 puntos · aceptación: PA-09. Paquete 1.3.4.3. Definición de terminado: criterios de aceptación cumplidos, pruebas automatizadas con CI en verde, revisión de código y demostración en la Sprint Review. / Calidad y sostenibilidad (2.3): AC-06; AC-07; AC-08
- 113: Calidad y sostenibilidad (2.3): AC-08; AC-09; AC-16 (D5, D7)
- 114: Actividad 10 del cronograma (3.2). PERT (semanas laborales, con f = 89/120): O = 1.1125, M = 1.8542, P = 2.5958; Te = (O + 4M + P) / 6 = 1.8542 semanas = 11.12 días; σ² = ((P − O) / 6)² = 0.0611. Esfuerzo: 78 h × $120 = $9,360 MXN. Holgura: 0 (ruta crítica única). / Calidad y sostenibilidad (2.3): AC-04 (venta); AC-08; AC-09; AC-10; AC-13; AC-16 (D6); SO-09
- 115: Paquete de trabajo 1.3.3.1 (diccionario de la EDT, 3.1a). HU-23 a HU-25 (11 puntos). Venta con precio calculado en el servidor y protección contra registros duplicados. Responsable: DEV. Esfuerzo: 27 h × $120 = $3,240 MXN.
- 116: Calidad y sostenibilidad (2.3): AC-02
- 118: Historia de usuario HU-23 (3.1b): EP-04 · CU-04 · prioridad Alta · 3 puntos · aceptación: PA-02. Paquete 1.3.3.1. Definición de terminado: criterios de aceptación cumplidos, pruebas automatizadas con CI en verde, revisión de código y demostración en la Sprint Review. / Calidad y sostenibilidad (2.3): AC-06; AC-07; AC-08
- 119: Historia de usuario HU-24 (3.1b): EP-04 · CU-04 · prioridad Alta · 3 puntos · aceptación: PA-02. Paquete 1.3.3.1. Definición de terminado: criterios de aceptación cumplidos, pruebas automatizadas con CI en verde, revisión de código y demostración en la Sprint Review. / Calidad y sostenibilidad (2.3): AC-06; AC-07; AC-08
- 120: Historia de usuario HU-25 (3.1b): EP-04 · CU-04 · prioridad Alta · 5 puntos · aceptación: PA-02, PA-04. Paquete 1.3.3.1. Definición de terminado: criterios de aceptación cumplidos, pruebas automatizadas con CI en verde, revisión de código y demostración en la Sprint Review. / Calidad y sostenibilidad (2.3): AC-06; AC-07; AC-08; Sostenibilidad ambiental (sustituye la comanda en papel)
- 121: Paquete de trabajo 1.3.3.2 (diccionario de la EDT, 3.1a). HU-26 a HU-29 (11 puntos). Pagos en efectivo, tarjeta y transferencia, y pagos pendientes conectados con caja. Responsable: DEV. Esfuerzo: 23 h × $120 = $2,760 MXN.
- 122: Historia de usuario HU-26 (3.1b): EP-04 · CU-05 · prioridad Alta · 3 puntos · aceptación: PA-03. Paquete 1.3.3.2. Definición de terminado: criterios de aceptación cumplidos, pruebas automatizadas con CI en verde, revisión de código y demostración en la Sprint Review. / Calidad y sostenibilidad (2.3): AC-06; AC-07; AC-08
- 123: Historia de usuario HU-27 (3.1b): EP-04 · CU-05 · prioridad Alta · 2 puntos · aceptación: PA-03. Paquete 1.3.3.2. Definición de terminado: criterios de aceptación cumplidos, pruebas automatizadas con CI en verde, revisión de código y demostración en la Sprint Review. / Calidad y sostenibilidad (2.3): AC-06; AC-07; AC-08
- 124: Historia de usuario HU-28 (3.1b): EP-04 · CU-05 · prioridad Media · 3 puntos · aceptación: PA-03. Paquete 1.3.3.2. Definición de terminado: criterios de aceptación cumplidos, pruebas automatizadas con CI en verde, revisión de código y demostración en la Sprint Review. / Calidad y sostenibilidad (2.3): AC-06; AC-07; AC-08
- 125: Historia de usuario HU-29 (3.1b): EP-04 · CU-05 · prioridad Media · 3 puntos · aceptación: PA-03. Paquete 1.3.3.2. Definición de terminado: criterios de aceptación cumplidos, pruebas automatizadas con CI en verde, revisión de código y demostración en la Sprint Review. / Calidad y sostenibilidad (2.3): AC-06; AC-07; AC-08
- 126: Calidad y sostenibilidad (2.3): AC-09
- 127: Paquete de trabajo 1.3.3.3 (diccionario de la EDT, 3.1a). HU-30 a HU-36 (20 puntos). Pedidos programados, órdenes del día, mandaditos y notificaciones. Responsable: DEV. Esfuerzo: 16 h × $120 = $1,920 MXN.
- 128: Historia de usuario HU-30 (3.1b): EP-04 · CU-04, CU-06 · prioridad Baja · 3 puntos · aceptación: PA-05. Paquete 1.3.3.3. Definición de terminado: criterios de aceptación cumplidos, pruebas automatizadas con CI en verde, revisión de código y demostración en la Sprint Review. / Calidad y sostenibilidad (2.3): AC-06; AC-07; AC-08
- 129: Historia de usuario HU-31 (3.1b): EP-05 · CU-06 · prioridad Alta · 5 puntos · aceptación: PA-05. Paquete 1.3.3.3. Definición de terminado: criterios de aceptación cumplidos, pruebas automatizadas con CI en verde, revisión de código y demostración en la Sprint Review. / Calidad y sostenibilidad (2.3): AC-06; AC-07; AC-08
- 130: Historia de usuario HU-32 (3.1b): EP-05 · CU-06 · prioridad Baja · 2 puntos · aceptación: PA-05. Paquete 1.3.3.3. Definición de terminado: criterios de aceptación cumplidos, pruebas automatizadas con CI en verde, revisión de código y demostración en la Sprint Review. / Calidad y sostenibilidad (2.3): AC-06; AC-07; AC-08
- 131: Historia de usuario HU-33 (3.1b): EP-05 · CU-04, CU-06 · prioridad Media · 3 puntos · aceptación: PA-06. Paquete 1.3.3.3. Definición de terminado: criterios de aceptación cumplidos, pruebas automatizadas con CI en verde, revisión de código y demostración en la Sprint Review. / Calidad y sostenibilidad (2.3): AC-06; AC-07; AC-08
- 132: Historia de usuario HU-34 (3.1b): EP-05 · CU-06 · prioridad Media · 2 puntos · aceptación: PA-06. Paquete 1.3.3.3. Definición de terminado: criterios de aceptación cumplidos, pruebas automatizadas con CI en verde, revisión de código y demostración en la Sprint Review. / Calidad y sostenibilidad (2.3): AC-06; AC-07; AC-08
- 133: Historia de usuario HU-35 (3.1b): EP-05 · CU-21 · prioridad Media · 3 puntos · aceptación: PA-05. Paquete 1.3.3.3. Definición de terminado: criterios de aceptación cumplidos, pruebas automatizadas con CI en verde, revisión de código y demostración en la Sprint Review. / Calidad y sostenibilidad (2.3): AC-06; AC-07; AC-08
- 134: Historia de usuario HU-36 (3.1b): EP-05 · CU-21 · prioridad Baja · 2 puntos · aceptación: PA-05. Paquete 1.3.3.3. Definición de terminado: criterios de aceptación cumplidos, pruebas automatizadas con CI en verde, revisión de código y demostración en la Sprint Review. / Calidad y sostenibilidad (2.3): AC-06; AC-07; AC-08
- 135: Calidad y sostenibilidad (2.3): AC-04 (venta); SO-09

| ID | WBS | Task | Duration | Start | Finish | Predecessors | Complete | Baseline start | Baseline finish | Baseline duration | Baseline 1 start | Baseline 1 finish | Resources | Work | Actual work | Cost | Baseline cost | Actual cost | Sprint | Puesto (plan de RR. HH.) | Entregable | Fase (EDT) | Calidad y sostenibilidad (2.3) | Historia / caso de uso (3.1b) | Puntos de historia | O (semanas) | M (semanas) | P (semanas) | Te (semanas) | Varianza |
| --- | --- | --- | --- | --- | --- | --- | --- | --- | --- | --- | --- | --- | --- | --- | --- | --- | --- | --- | --- | --- | --- | --- | --- | --- | --- | --- | --- | --- | --- | --- |
| 136 | 1.3.3.4 | **1.3.3.4 Cancelación de órdenes con reversa** | 1.71d | 2026-10-14 10:06 A | 2026-10-15 16:48 A |  | 100% | 2026-10-14 10:06 | 2026-10-15 16:48 | 1.71d | 2026-10-14 10:06 | 2026-10-15 16:48 |  | 12h | 12h | 1,440 | 1,440 | 1,440 | S5 | DEV | D6 | 1.3 Ejecución: producto Andy's Coffee POS |  |  |  |  |  |  |  |  |
| 137 | 1.3.3.4.1 | HU-37 Cancelar una orden con reversa | 0.71d | 2026-10-14 10:06 A | 2026-10-14 16:49 A | 135 | 100% | 2026-10-14 10:06 | 2026-10-14 16:49 | 0.71d | 2026-10-14 10:06 | 2026-10-14 16:49 | Ruiz Campos José Fernando [87.64%] | 5h | 5h | 600 | 600 | 600 | S5 | DEV | D6 | 1.3 Ejecución: producto Andy's Coffee POS | AC-06; AC-07; AC-08 | HU-37 · CU-07 | 8 |  |  |  |  |  |
| 138 | 1.3.3.4.2 | HU-52 Solicitar y aprobar la cancelación de una venta completada | 0.43d | 2026-10-14 16:49 A | 2026-10-15 11:14 A | 137 | 100% | 2026-10-14 16:49 | 2026-10-15 11:14 | 0.43d | 2026-10-14 16:49 | 2026-10-15 11:14 | Ruiz Campos José Fernando [87.64%] | 3h | 3h | 360 | 360 | 360 | S5 | DEV | D6 | 1.3 Ejecución: producto Andy's Coffee POS | AC-06; AC-07; AC-08 | HU-52 · CU-07, CU-21 | 5 |  |  |  |  |  |
| 139 | 1.3.3.4.3 | Ejecutar pruebas E2E de venta con cajeros y revisar el entregable D6 | 0.57d | 2026-10-15 11:14 A | 2026-10-15 16:48 A | 138 | 100% | 2026-10-15 11:14 | 2026-10-15 16:48 | 0.57d | 2026-10-15 11:14 | 2026-10-15 16:48 | Ruiz Campos José Fernando [87.64%] | 4h | 4h | 480 | 480 | 480 | S5 | DEV, QA; CAJ | D6 | 1.3 Ejecución: producto Andy's Coffee POS | AC-10; AC-16 (D6) |  |  |  |  |  |  |  |
| 140 | 1.3.5 | **Actividad 11 · Inventario, proveedores, compras y conteos** | 8.9d | 2026-10-15 16:48 A | 2026-10-26 16:00 A |  | 100% | 2026-10-15 16:48 | 2026-10-26 16:00 | 8.9d | 2026-10-15 16:48 | 2026-10-26 16:00 |  | 63h | 63h | 7,560 | 7,560 | 7,560 | S5–S6 | DEV | D8 | 1.3 Ejecución: producto Andy's Coffee POS | AC-08; AC-09; AC-10; AC-13 |  |  | 0.74 | 1.48 | 2.23 | 1.48 | 0.06 |
| 141 | 1.3.5.1 | **1.3.5.1 Ingredientes, existencias y costo promedio** | 3.53d | 2026-10-15 16:48 A | 2026-10-20 12:03 A |  | 100% | 2026-10-15 16:48 | 2026-10-20 12:03 | 3.53d | 2026-10-15 16:48 | 2026-10-20 12:03 |  | 25h | 25h | 3,000 | 3,000 | 3,000 | S5–S6 | DEV | D8 | 1.3 Ejecución: producto Andy's Coffee POS |  |  |  |  |  |  |  |  |
| 142 | 1.3.5.1.1 | Refinar las reglas de existencias, costo promedio y descuento por receta | 0.56d | 2026-10-15 16:48 A | 2026-10-16 12:19 A | 139 | 100% | 2026-10-15 16:48 | 2026-10-16 12:19 | 0.56d | 2026-10-15 16:48 | 2026-10-16 12:19 | Ruiz Campos José Fernando [88.48%] | 4h | 4h | 480 | 480 | 480 | S5 | DEV, PO | D8 | 1.3 Ejecución: producto Andy's Coffee POS | AC-02 |  |  |  |  |  |  |  |
| 143 | 1.3.5.1.2 | Modelar y migrar las tablas de ingredientes, movimientos, proveedores, compras y conteos | 1.13d | 2026-10-16 12:19 A | 2026-10-17 14:22 A | 142 | 100% | 2026-10-16 12:19 | 2026-10-17 14:22 | 1.13d | 2026-10-16 12:19 | 2026-10-17 14:22 | Ruiz Campos José Fernando [88.48%] | 8h | 8h | 960 | 960 | 960 | S5 | DEV | D8 | 1.3 Ejecución: producto Andy's Coffee POS |  |  |  |  |  |  |  |  |
| 144 | 1.3.5.1.3 | Preparar los datos y escenarios de prueba de inventario en la base de datos de prueba | 0.49d | 2026-10-17 14:22 A | 2026-10-19 09:19 A | 143 | 100% | 2026-10-17 14:22 | 2026-10-19 09:19 | 0.49d | 2026-10-17 14:22 | 2026-10-19 09:19 | Ruiz Campos José Fernando [88.48%] | 3.5h | 3.5h | 420 | 420 | 420 | S5–S6 | DEV, QA | D8 | 1.3 Ejecución: producto Andy's Coffee POS | AC-09 |  |  |  |  |  |  |  |
| 145 | 1.3.5.1.4 | HU-38 Registrar ingredientes | 0.42d | 2026-10-19 09:19 A | 2026-10-19 12:42 A | 144 | 100% | 2026-10-19 09:19 | 2026-10-19 12:42 | 0.42d | 2026-10-19 09:19 | 2026-10-19 12:42 | Ruiz Campos José Fernando [88.48%] | 3h | 3h | 360 | 360 | 360 | S6 | DEV | D8 | 1.3 Ejecución: producto Andy's Coffee POS | AC-06; AC-07; AC-08 | HU-38 · CU-13 | 3 |  |  |  |  |  |
| 146 | 1.3.5.1.5 | HU-39 Consultar existencias y alertas de stock bajo | 0.21d | 2026-10-19 12:42 A | 2026-10-19 15:24 A | 145 | 100% | 2026-10-19 12:42 | 2026-10-19 15:24 | 0.21d | 2026-10-19 12:42 | 2026-10-19 15:24 | Ruiz Campos José Fernando [88.48%] | 1.5h | 1.5h | 180 | 180 | 180 | S6 | DEV | D8 | 1.3 Ejecución: producto Andy's Coffee POS | AC-06; AC-07; AC-08 | HU-39 · CU-13 | 2 |  |  |  |  |  |
| 147 | 1.3.5.1.6 | HU-40 Descontar insumos por receta al vender | 0.56d | 2026-10-19 15:24 A | 2026-10-20 10:55 A | 146 | 100% | 2026-10-19 15:24 | 2026-10-20 10:55 | 0.56d | 2026-10-19 15:24 | 2026-10-20 10:55 | Ruiz Campos José Fernando [88.48%] | 4h | 4h | 480 | 480 | 480 | S6 | DEV | D8 | 1.3 Ejecución: producto Andy's Coffee POS | AC-06; AC-07; AC-08 | HU-40 · CU-04, CU-13 | 5 |  |  |  |  |  |
| 148 | 1.3.5.1.7 | HU-45 Consultar el historial de movimientos de inventario | 0.14d | 2026-10-20 10:55 A | 2026-10-20 12:03 A | 147 | 100% | 2026-10-20 10:55 | 2026-10-20 12:03 | 0.14d | 2026-10-20 10:55 | 2026-10-20 12:03 | Ruiz Campos José Fernando [88.48%] | 1h | 1h | 120 | 120 | 120 | S6 | DEV | D8 | 1.3 Ejecución: producto Andy's Coffee POS | AC-06; AC-07; AC-08 | HU-45 · CU-13 | 2 |  |  |  |  |  |
| 149 | 1.3.5.2 | **1.3.5.2 Proveedores, compras y recepción** | 3.11d | 2026-10-20 12:03 A | 2026-10-23 12:55 A |  | 100% | 2026-10-20 12:03 | 2026-10-23 12:55 | 3.11d | 2026-10-20 12:03 | 2026-10-23 12:55 |  | 22h | 22h | 2,640 | 2,640 | 2,640 | S6 | DEV | D8 | 1.3 Ejecución: producto Andy's Coffee POS |  |  |  |  |  |  |  |  |
| 150 | 1.3.5.2.1 | HU-41 Gestionar proveedores | 0.42d | 2026-10-20 12:03 A | 2026-10-20 16:27 A | 148 | 100% | 2026-10-20 12:03 | 2026-10-20 16:27 | 0.42d | 2026-10-20 12:03 | 2026-10-20 16:27 | Ruiz Campos José Fernando [88.48%] | 3h | 3h | 360 | 360 | 360 | S6 | DEV | D8 | 1.3 Ejecución: producto Andy's Coffee POS | AC-06; AC-07; AC-08 | HU-41 · CU-14 | 2 |  |  |  |  |  |
| 151 | 1.3.5.2.2 | HU-42 Registrar compras y recepción de mercancía | 1.41d | 2026-10-20 16:27 A | 2026-10-22 10:45 A | 150 | 100% | 2026-10-20 16:27 | 2026-10-22 10:45 | 1.41d | 2026-10-20 16:27 | 2026-10-22 10:45 | Ruiz Campos José Fernando [88.48%] | 10h | 10h | 1,200 | 1,200 | 1,200 | S6 | DEV | D8 | 1.3 Ejecución: producto Andy's Coffee POS | AC-06; AC-07; AC-08 | HU-42 · CU-14 | 8 |  |  |  |  |  |
| 152 | 1.3.5.2.3 | HU-51 Generar sugerencias de compra | 0.85d | 2026-10-22 10:45 A | 2026-10-23 09:32 A | 151 | 100% | 2026-10-22 10:45 | 2026-10-23 09:32 | 0.85d | 2026-10-22 10:45 | 2026-10-23 09:32 | Ruiz Campos José Fernando [88.48%] | 6h | 6h | 720 | 720 | 720 | S6 | DEV | D8 | 1.3 Ejecución: producto Andy's Coffee POS | AC-06; AC-07; AC-08 | HU-51 · CU-14 | 5 |  |  |  |  |  |
| 153 | 1.3.5.2.4 | Ejecutar las pruebas de integración de compras y recepción | 0.42d | 2026-10-23 09:32 A | 2026-10-23 12:55 A | 152 | 100% | 2026-10-23 09:32 | 2026-10-23 12:55 | 0.42d | 2026-10-23 09:32 | 2026-10-23 12:55 | Ruiz Campos José Fernando [88.48%] | 3h | 3h | 360 | 360 | 360 | S6 | DEV | D8 | 1.3 Ejecución: producto Andy's Coffee POS | AC-09 |  |  |  |  |  |  |  |
| 154 | 1.3.5.3 | **1.3.5.3 Salidas manuales y conteos físicos** | 2.26d | 2026-10-23 12:55 A | 2026-10-26 16:00 A |  | 100% | 2026-10-23 12:55 | 2026-10-26 16:00 | 2.26d | 2026-10-23 12:55 | 2026-10-26 16:00 |  | 16h | 16h | 1,920 | 1,920 | 1,920 | S6 | DEV | D8 | 1.3 Ejecución: producto Andy's Coffee POS |  |  |  |  |  |  |  |  |
| 155 | 1.3.5.3.1 | HU-43 Registrar salidas manuales de inventario | 0.56d | 2026-10-23 12:55 A | 2026-10-24 09:26 A | 153 | 100% | 2026-10-23 12:55 | 2026-10-24 09:26 | 0.56d | 2026-10-23 12:55 | 2026-10-24 09:26 | Ruiz Campos José Fernando [88.48%] | 4h | 4h | 480 | 480 | 480 | S6 | DEV | D8 | 1.3 Ejecución: producto Andy's Coffee POS | AC-06; AC-07; AC-08 | HU-43 · CU-15 | 3 |  |  |  |  |  |
| 156 | 1.3.5.3.2 | HU-44 Realizar un conteo físico | 0.99d | 2026-10-24 09:26 A | 2026-10-26 09:21 A | 155 | 100% | 2026-10-24 09:26 | 2026-10-26 09:21 | 0.99d | 2026-10-24 09:26 | 2026-10-26 09:21 | Ruiz Campos José Fernando [88.48%] | 7h | 7h | 840 | 840 | 840 | S6 | DEV | D8 | 1.3 Ejecución: producto Andy's Coffee POS | AC-06; AC-07; AC-08 | HU-44 · CU-16 | 5 |  |  |  |  |  |
| 157 | 1.3.5.3.3 | Probar la afectación de existencias (E2E) y preparar la demostración | 0.71d | 2026-10-26 09:21 A | 2026-10-26 16:00 A | 156 | 100% | 2026-10-26 09:21 | 2026-10-26 16:00 | 0.71d | 2026-10-26 09:21 | 2026-10-26 16:00 | Ruiz Campos José Fernando [88.48%] | 5h | 5h | 600 | 600 | 600 | S6 | DEV, QA | D8 | 1.3 Ejecución: producto Andy's Coffee POS | AC-10; AC-13 |  |  |  |  |  |  |  |
| 158 | 1.3.6 | **Actividad 12 · Gastos y finanzas: gastos, indicadores y estado de resultados** | 4.45d | 2026-10-26 16:00 A | 2026-10-31 10:36 A |  | 100% | 2026-10-26 16:00 | 2026-10-31 10:36 | 4.45d | 2026-10-26 16:00 | 2026-10-31 10:36 |  | 31h | 31h | 3,720 | 3,720 | 3,720 | S6 | DEV | D9 | 1.3 Ejecución: producto Andy's Coffee POS | AC-08; AC-09; AC-13; AC-16 (D8, D9) |  |  | 0.37 | 0.74 | 1.11 | 0.74 | 0.02 |
| 159 | 1.3.6.1 | **1.3.6.1 Gastos y gastos fijos** | 1.29d | 2026-10-26 16:00 A | 2026-10-28 09:20 A |  | 100% | 2026-10-26 16:00 | 2026-10-28 09:20 | 1.29d | 2026-10-26 16:00 | 2026-10-28 09:20 |  | 9h | 9h | 1,080 | 1,080 | 1,080 | S6 | DEV | D9 | 1.3 Ejecución: producto Andy's Coffee POS |  |  |  |  |  |  |  |  |
| 160 | 1.3.6.1.1 | HU-46 Registrar gastos del negocio | 0.72d | 2026-10-26 16:00 A | 2026-10-27 12:45 A | 157 | 100% | 2026-10-26 16:00 | 2026-10-27 12:45 | 0.72d | 2026-10-26 16:00 | 2026-10-27 12:45 | Ruiz Campos José Fernando [87.08%] | 5h | 5h | 600 | 600 | 600 | S6 | DEV | D9 | 1.3 Ejecución: producto Andy's Coffee POS | AC-06; AC-07; AC-08 | HU-46 · CU-17 | 3 |  |  |  |  |  |
| 161 | 1.3.6.1.2 | HU-47 Configurar los gastos fijos diarios | 0.57d | 2026-10-27 12:45 A | 2026-10-28 09:20 A | 160 | 100% | 2026-10-27 12:45 | 2026-10-28 09:20 | 0.57d | 2026-10-27 12:45 | 2026-10-28 09:20 | Ruiz Campos José Fernando [87.08%] | 4h | 4h | 480 | 480 | 480 | S6 | DEV | D9 | 1.3 Ejecución: producto Andy's Coffee POS | AC-06; AC-07; AC-08 | HU-47 · CU-17 | 2 |  |  |  |  |  |

Notes:
- 136: Paquete de trabajo 1.3.3.4 (diccionario de la EDT, 3.1a). HU-37 y HU-52 (13 puntos). Cancelación con reversa de pago e inventario y aprobación de cancelaciones de ventas completadas. Responsable: DEV. Esfuerzo: 12 h × $120 = $1,440 MXN.
- 137: Historia de usuario HU-37 (3.1b): EP-05 · CU-07 · prioridad Alta · 8 puntos · aceptación: PA-01, PA-07. Paquete 1.3.3.4. Definición de terminado: criterios de aceptación cumplidos, pruebas automatizadas con CI en verde, revisión de código y demostración en la Sprint Review.
- 138: Historia de usuario HU-52 (3.1b): EP-05 · CU-07, CU-21 · prioridad Alta · 5 puntos · aceptación: PA-07. Paquete 1.3.3.4. Definición de terminado: criterios de aceptación cumplidos, pruebas automatizadas con CI en verde, revisión de código y demostración en la Sprint Review.
- 140: Actividad 11 del cronograma (3.2). PERT (semanas laborales, con f = 89/120): O = 0.7417, M = 1.4833, P = 2.2250; Te = (O + 4M + P) / 6 = 1.4833 semanas = 8.9 días; σ² = ((P − O) / 6)² = 0.0611. Esfuerzo: 63 h × $120 = $7,560 MXN. Holgura: 0 (ruta crítica única).
- 141: Paquete de trabajo 1.3.5.1 (diccionario de la EDT, 3.1a). HU-38 a HU-40 y HU-45 (12 puntos). Ingredientes, existencias, costo promedio, descuento automático por receta e historial de movimientos. Responsable: DEV. Esfuerzo: 25 h × $120 = $3,000 MXN.
- 145: Historia de usuario HU-38 (3.1b): EP-06 · CU-13 · prioridad Alta · 3 puntos · aceptación: PA-11. Paquete 1.3.5.1. Definición de terminado: criterios de aceptación cumplidos, pruebas automatizadas con CI en verde, revisión de código y demostración en la Sprint Review.
- 146: Historia de usuario HU-39 (3.1b): EP-06 · CU-13 · prioridad Media · 2 puntos · aceptación: PA-11. Paquete 1.3.5.1. Definición de terminado: criterios de aceptación cumplidos, pruebas automatizadas con CI en verde, revisión de código y demostración en la Sprint Review.
- 147: Historia de usuario HU-40 (3.1b): EP-06 · CU-04, CU-13 · prioridad Alta · 5 puntos · aceptación: PA-11. Paquete 1.3.5.1. Definición de terminado: criterios de aceptación cumplidos, pruebas automatizadas con CI en verde, revisión de código y demostración en la Sprint Review.
- 148: Historia de usuario HU-45 (3.1b): EP-06 · CU-13 · prioridad Baja · 2 puntos · aceptación: PA-11. Paquete 1.3.5.1. Definición de terminado: criterios de aceptación cumplidos, pruebas automatizadas con CI en verde, revisión de código y demostración en la Sprint Review.
- 149: Paquete de trabajo 1.3.5.2 (diccionario de la EDT, 3.1a). HU-41, HU-42 y HU-51 (15 puntos). Proveedores, compras, recepción de borradores y sugerencias de compra. Responsable: DEV. Esfuerzo: 22 h × $120 = $2,640 MXN.
- 150: Historia de usuario HU-41 (3.1b): EP-06 · CU-14 · prioridad Media · 2 puntos · aceptación: PA-11. Paquete 1.3.5.2. Definición de terminado: criterios de aceptación cumplidos, pruebas automatizadas con CI en verde, revisión de código y demostración en la Sprint Review.
- 151: Historia de usuario HU-42 (3.1b): EP-06 · CU-14 · prioridad Alta · 8 puntos · aceptación: PA-11. Paquete 1.3.5.2. Definición de terminado: criterios de aceptación cumplidos, pruebas automatizadas con CI en verde, revisión de código y demostración en la Sprint Review.
- 152: Historia de usuario HU-51 (3.1b): EP-06 · CU-14 · prioridad Media · 5 puntos · aceptación: PA-11. Paquete 1.3.5.2. Definición de terminado: criterios de aceptación cumplidos, pruebas automatizadas con CI en verde, revisión de código y demostración en la Sprint Review.
- 154: Paquete de trabajo 1.3.5.3 (diccionario de la EDT, 3.1a). HU-43 y HU-44 (8 puntos). Salidas manuales con motivo y conteos físicos con ajuste. Responsable: DEV. Esfuerzo: 16 h × $120 = $1,920 MXN.
- 155: Historia de usuario HU-43 (3.1b): EP-06 · CU-15 · prioridad Media · 3 puntos · aceptación: PA-11. Paquete 1.3.5.3. Definición de terminado: criterios de aceptación cumplidos, pruebas automatizadas con CI en verde, revisión de código y demostración en la Sprint Review.
- 156: Historia de usuario HU-44 (3.1b): EP-06 · CU-16 · prioridad Media · 5 puntos · aceptación: PA-11. Paquete 1.3.5.3. Definición de terminado: criterios de aceptación cumplidos, pruebas automatizadas con CI en verde, revisión de código y demostración en la Sprint Review.
- 158: Actividad 12 del cronograma (3.2). PERT (semanas laborales, con f = 89/120): O = 0.3708, M = 0.7417, P = 1.1125; Te = (O + 4M + P) / 6 = 0.7417 semanas = 4.45 días; σ² = ((P − O) / 6)² = 0.0153. Esfuerzo: 31 h × $120 = $3,720 MXN. Holgura: 0 (ruta crítica única).
- 159: Paquete de trabajo 1.3.6.1 (diccionario de la EDT, 3.1a). HU-46 y HU-47 (5 puntos). Registro de gastos y gastos fijos diarios. Responsable: DEV. Esfuerzo: 9 h × $120 = $1,080 MXN.
- 160: Historia de usuario HU-46 (3.1b): EP-07 · CU-17 · prioridad Alta · 3 puntos · aceptación: PA-12. Paquete 1.3.6.1. Definición de terminado: criterios de aceptación cumplidos, pruebas automatizadas con CI en verde, revisión de código y demostración en la Sprint Review.
- 161: Historia de usuario HU-47 (3.1b): EP-07 · CU-17 · prioridad Media · 2 puntos · aceptación: PA-12. Paquete 1.3.6.1. Definición de terminado: criterios de aceptación cumplidos, pruebas automatizadas con CI en verde, revisión de código y demostración en la Sprint Review.

| ID | WBS | Task | Type | Duration | Start | Finish | Predecessors | Complete | Baseline start | Baseline finish | Baseline duration | Baseline 1 start | Baseline 1 finish | Constraint | Resources | Work | Actual work | Cost | Baseline cost | Actual cost | Sprint | Puesto (plan de RR. HH.) | Entregable | Fase (EDT) | Calidad y sostenibilidad (2.3) | Historia / caso de uso (3.1b) | Puntos de historia | O (semanas) | M (semanas) | P (semanas) | Te (semanas) | Varianza |
| --- | --- | --- | --- | --- | --- | --- | --- | --- | --- | --- | --- | --- | --- | --- | --- | --- | --- | --- | --- | --- | --- | --- | --- | --- | --- | --- | --- | --- | --- | --- | --- | --- |
| 162 | 1.3.6.2 | **1.3.6.2 Dashboard de indicadores** |  | 1.58d | 2026-10-28 09:20 A | 2026-10-29 14:58 A |  | 100% | 2026-10-28 09:20 | 2026-10-29 14:58 | 1.58d | 2026-10-28 09:20 | 2026-10-29 14:58 |  |  | 11h | 11h | 1,320 | 1,320 | 1,320 | S6 | DEV | D9 | 1.3 Ejecución: producto Andy's Coffee POS |  |  |  |  |  |  |  |  |
| 163 | 1.3.6.2.1 | HU-48 Consultar el dashboard de indicadores |  | 1.29d | 2026-10-28 09:20 A | 2026-10-29 11:40 A | 161 | 100% | 2026-10-28 09:20 | 2026-10-29 11:40 | 1.29d | 2026-10-28 09:20 | 2026-10-29 11:40 |  | Ruiz Campos José Fernando [87.08%] | 9h | 9h | 1,080 | 1,080 | 1,080 | S6 | DEV | D9 | 1.3 Ejecución: producto Andy's Coffee POS | AC-06; AC-07; AC-08 | HU-48 · CU-19 | 5 |  |  |  |  |  |
| 164 | 1.3.6.2.2 | Verificar las consultas del dashboard con datos de prueba |  | 0.29d | 2026-10-29 11:40 A | 2026-10-29 14:58 A | 163 | 100% | 2026-10-29 11:40 | 2026-10-29 14:58 | 0.29d | 2026-10-29 11:40 | 2026-10-29 14:58 |  | Ruiz Campos José Fernando [87.08%] | 2h | 2h | 240 | 240 | 240 | S6 | DEV | D9 | 1.3 Ejecución: producto Andy's Coffee POS | AC-09 |  |  |  |  |  |  |  |
| 165 | 1.3.6.3 | **1.3.6.3 Estado de resultados** |  | 1.58d | 2026-10-29 14:58 A | 2026-10-31 10:36 A |  | 100% | 2026-10-29 14:58 | 2026-10-31 10:36 | 1.58d | 2026-10-29 14:58 | 2026-10-31 10:36 |  |  | 11h | 11h | 1,320 | 1,320 | 1,320 | S6 | DEV | D9 | 1.3 Ejecución: producto Andy's Coffee POS |  |  |  |  |  |  |  |  |
| 166 | 1.3.6.3.1 | HU-49 Consultar el estado de resultados |  | 0.86d | 2026-10-29 14:58 A | 2026-10-30 12:51 A | 164 | 100% | 2026-10-29 14:58 | 2026-10-30 12:51 | 0.86d | 2026-10-29 14:58 | 2026-10-30 12:51 |  | Ruiz Campos José Fernando [87.08%] | 6h | 6h | 720 | 720 | 720 | S6 | DEV | D9 | 1.3 Ejecución: producto Andy's Coffee POS | AC-06; AC-07; AC-08 | HU-49 · CU-18 | 8 |  |  |  |  |  |
| 167 | 1.3.6.3.2 | HU-50 Definir la distribución de la utilidad |  | 0.29d | 2026-10-30 12:51 A | 2026-10-30 16:09 A | 166 | 100% | 2026-10-30 12:51 | 2026-10-30 16:09 | 0.29d | 2026-10-30 12:51 | 2026-10-30 16:09 |  | Ruiz Campos José Fernando [87.08%] | 2h | 2h | 240 | 240 | 240 | S6 | DEV | D9 | 1.3 Ejecución: producto Andy's Coffee POS | AC-06; AC-07; AC-08 | HU-50 · CU-03, CU-18 | 2 |  |  |  |  |  |
| 168 | 1.3.6.3.3 | Verificar los cálculos financieros con casos de prueba y revisar los entregables D8 y D9 |  | 0.43d | 2026-10-30 16:09 A | 2026-10-31 10:36 A | 167 | 100% | 2026-10-30 16:09 | 2026-10-31 10:36 | 0.43d | 2026-10-30 16:09 | 2026-10-31 10:36 |  | Ruiz Campos José Fernando [87.08%] | 3h | 3h | 360 | 360 | 360 | S6 | DEV, QA; PO | D9 | 1.3 Ejecución: producto Andy's Coffee POS | AC-08; AC-09; AC-16 (D8, D9) |  |  |  |  |  |  |  |
| 169 | 1.3.7 | **Actividad 13 · Integración, estabilización y aceptación** |  | 8.9d | 2026-10-31 10:36 A | 2026-11-11 09:48 A |  | 100% | 2026-10-31 10:36 | 2026-11-11 09:48 | 8.9d | 2026-10-31 10:36 | 2026-11-11 09:48 |  |  | 63h | 63h | 7,560 | 7,560 | 7,560 | S6–S7 | QA, DEV | D10 | 1.3 Ejecución: producto Andy's Coffee POS | AC-09; AC-10; AC-11; AC-12; AC-14; AC-15; AC-16 (D10); AC-20 |  |  | 1.11 | 1.48 | 1.85 | 1.48 | 0.02 |
| 170 | 1.3.7.1 | **1.3.7.1 Pruebas unitarias y de integración** |  | 3.5d | 2026-10-31 10:36 A | 2026-11-04 15:34 A |  | 100% | 2026-10-31 10:36 | 2026-11-04 15:34 | 3.5d | 2026-10-31 10:36 | 2026-11-04 15:34 |  |  | 22h | 22h | 2,640 | 2,640 | 2,640 | S6–S7 | QA | D10 | 1.3 Ejecución: producto Andy's Coffee POS |  |  |  |  |  |  |  |  |
| 171 | 1.3.7.1.1 | Completar la regresión de pruebas unitarias y de integración (cobertura ≥ 80 % en servicios críticos) |  | 2.23d | 2026-10-31 10:36 A | 2026-11-03 12:24 A | 168 | 100% | 2026-10-31 10:36 | 2026-11-03 12:24 | 2.23d | 2026-10-31 10:36 | 2026-11-03 12:24 |  | Ruiz Campos José Fernando [78.65%] | 14h | 14h | 1,680 | 1,680 | 1,680 | S6–S7 | QA, DEV | D10 | 1.3 Ejecución: producto Andy's Coffee POS | AC-08; AC-09 |  |  |  |  |  |  |  |
| 172 | 1.3.7.1.2 | Ejecutar las pruebas de concurrencia e integridad de caja, inventario y finanzas |  | 1.27d | 2026-11-03 12:24 A | 2026-11-04 15:34 A | 171 | 100% | 2026-11-03 12:24 | 2026-11-04 15:34 | 1.27d | 2026-11-03 12:24 | 2026-11-04 15:34 |  | Ruiz Campos José Fernando [78.65%] | 8h | 8h | 960 | 960 | 960 | S7 | QA, DEV | D10 | 1.3 Ejecución: producto Andy's Coffee POS | AC-09 |  |  |  |  |  |  |  |
| 173 | 1.3.7.2 | **1.3.7.2 Pruebas E2E y de seguridad** |  | 3.5d | 2026-11-04 15:34 A | 2026-11-09 10:33 A |  | 100% | 2026-11-04 15:34 | 2026-11-09 10:33 | 3.5d | 2026-11-04 15:34 | 2026-11-09 10:33 |  |  | 22h | 22h | 2,640 | 2,640 | 2,640 | S7 | QA | D10 | 1.3 Ejecución: producto Andy's Coffee POS |  |  |  |  |  |  |  |  |
| 174 | 1.3.7.2.1 | Ejecutar la regresión completa de pruebas E2E |  | 1.43d | 2026-11-04 15:34 A | 2026-11-06 10:01 A | 172 | 100% | 2026-11-04 15:34 | 2026-11-06 10:01 | 1.43d | 2026-11-04 15:34 | 2026-11-06 10:01 |  | Ruiz Campos José Fernando [78.65%] | 9h | 9h | 1,080 | 1,080 | 1,080 | S7 | QA | D10 | 1.3 Ejecución: producto Andy's Coffee POS | AC-10 |  |  |  |  |  |  |  |
| 175 | 1.3.7.2.2 | Ejecutar las pruebas de seguridad (JWT, CSRF, RBAC, bcrypt, Helmet; OWASP Top 10 y npm audit) |  | 1.27d | 2026-11-06 10:01 A | 2026-11-07 12:11 A | 174 | 100% | 2026-11-06 10:01 | 2026-11-07 12:11 | 1.27d | 2026-11-06 10:01 | 2026-11-07 12:11 |  | Ruiz Campos José Fernando [78.65%] | 8h | 8h | 960 | 960 | 960 | S7 | QA, DEV | D10 | 1.3 Ejecución: producto Andy's Coffee POS | AC-11 |  |  |  |  |  |  |  |
| 176 | 1.3.7.2.3 | Medir el rendimiento (carga ≤ 2 s, API ≤ 300 ms) y la cobertura de la bitácora (100 %) |  | 0.8d | 2026-11-07 12:11 A | 2026-11-09 10:33 A | 175 | 100% | 2026-11-07 12:11 | 2026-11-09 10:33 | 0.8d | 2026-11-07 12:11 | 2026-11-09 10:33 |  | Ruiz Campos José Fernando [78.65%] | 5h | 5h | 600 | 600 | 600 | S7 | QA, DO | D10 | 1.3 Ejecución: producto Andy's Coffee POS | AC-12 |  |  |  |  |  |  |  |
| 177 | 1.3.7.3 | **1.3.7.3 Pruebas de aceptación (UAT) e informe de defectos** |  | 8.1d | 2026-11-02 09:00 A | 2026-11-11 09:48 A |  | 100% | 2026-11-02 09:00 | 2026-11-11 09:48 | 8.1d | 2026-11-02 09:00 | 2026-11-11 09:48 |  |  | 19h | 19h | 2,280 | 2,280 | 2,280 | S7 | QA | D10 | 1.3 Ejecución: producto Andy's Coffee POS |  |  |  |  |  |  |  |  |
| 178 | 1.3.7.3.1 | Conducir la UAT en el local con la propietaria y los cajeros (escenarios PA-01 a PA-12) |  | 6d | 2026-11-02 09:00 A | 2026-11-07 18:00 A | 168 | 100% | 2026-11-02 09:00 | 2026-11-07 18:00 | 6d | 2026-11-02 09:00 | 2026-11-07 18:00 | start no earlier than 2026-11-02 09:00 | Ruiz Campos José Fernando [14.58%] | 7h | 7h | 840 | 840 | 840 | S7 | QA conduce; PN y CAJ ejecutan; PO acepta | D10 | 1.3 Ejecución: producto Andy's Coffee POS | AC-14; SO-09 |  |  |  |  |  |  |  |
| 179 | 1.3.7.3.2 | Corregir los defectos críticos y altos y repetir las pruebas afectadas |  | 1.11d | 2026-11-09 10:33 A | 2026-11-10 11:27 A | 176, 178 | 100% | 2026-11-09 10:33 | 2026-11-10 11:27 | 1.11d | 2026-11-09 10:33 | 2026-11-10 11:27 |  | Ruiz Campos José Fernando [78.65%] | 7h | 7h | 840 | 840 | 840 | S7 | DEV, QA | D10 | 1.3 Ejecución: producto Andy's Coffee POS | AC-15 |  |  |  |  |  |  |  |
| 180 | 1.3.7.3.3 | Emitir el informe de aceptación y de defectos y la recomendación de liberación |  | 0.79d | 2026-11-10 11:27 A | 2026-11-11 09:48 A | 179 | 100% | 2026-11-10 11:27 | 2026-11-11 09:48 | 0.79d | 2026-11-10 11:27 | 2026-11-11 09:48 |  | Ruiz Campos José Fernando [78.65%] | 5h | 5h | 600 | 600 | 600 | S7 | QA; PO | D10 | 1.3 Ejecución: producto Andy's Coffee POS | AC-16 (D10); AC-20 |  |  |  |  |  |  |  |
| 181 | H3 | H3 Funcionalidades integradas y aceptadas | milestone | 0d | 2026-11-11 09:48 A | 2026-11-11 09:48 A | 180 | 100% | 2026-11-11 09:48 | 2026-11-11 09:48 |  | 2026-11-11 09:48 | 2026-11-11 09:48 |  |  |  |  |  |  |  | S7 |  |  | 1.3 Ejecución: producto Andy's Coffee POS |  |  |  |  |  |  |  |  |
| 182 | 1.3.8 | **Actividad 14 · Despliegue, guía y capacitación** |  | 4.45d | 2026-11-11 09:48 A | 2026-11-16 14:24 A |  | 100% | 2026-11-11 09:48 | 2026-11-16 14:24 | 4.45d | 2026-11-11 09:48 | 2026-11-16 14:24 |  |  | 31h | 31h | 3,720 | 3,720 | 3,720 | S7–SC | DO, AS | D11 | 1.3 Ejecución: producto Andy's Coffee POS | AC-16 (D11); AC-20; SO-01; SO-06; SO-07; SO-08; SO-10 |  |  | 0.37 | 0.74 | 1.11 | 0.74 | 0.02 |
| 183 | 1.3.8.1 | **1.3.8.1 Despliegue en producción** |  | 1.87d | 2026-11-11 09:48 A | 2026-11-12 17:44 A |  | 100% | 2026-11-11 09:48 | 2026-11-12 17:44 | 1.87d | 2026-11-11 09:48 | 2026-11-12 17:44 |  |  | 13h | 13h | 1,560 | 1,560 | 1,560 | S7 | DO | D11 | 1.3 Ejecución: producto Andy's Coffee POS |  |  |  |  |  |  |  |  |
| 184 | 1.3.8.1.1 | Preparar los ambientes de producción y sus variables |  | 0.43d | 2026-11-11 09:48 A | 2026-11-11 14:15 A | 181 | 100% | 2026-11-11 09:48 | 2026-11-11 14:15 | 0.43d | 2026-11-11 09:48 | 2026-11-11 14:15 |  | Ruiz Campos José Fernando [87.08%] | 3h | 3h | 360 | 360 | 360 | S7 | DO | D11 | 1.3 Ejecución: producto Andy's Coffee POS |  |  |  |  |  |  |  |  |
| 185 | 1.3.8.1.2 | Generar el respaldo SQL previo a las migraciones y probar su restauración en desarrollo |  | 0.29d | 2026-11-11 14:15 A | 2026-11-11 16:33 A | 184 | 100% | 2026-11-11 14:15 | 2026-11-11 16:33 | 0.29d | 2026-11-11 14:15 | 2026-11-11 16:33 |  | Ruiz Campos José Fernando [87.08%] | 2h | 2h | 240 | 240 | 240 | S7 | DO | D11 | 1.3 Ejecución: producto Andy's Coffee POS | AC-20 |  |  |  |  |  |  |  |
| 186 | 1.3.8.1.3 | Desplegar la SPA, la API y la base de datos; aplicar migraciones y la carga inicial de existencias |  | 0.72d | 2026-11-11 16:33 A | 2026-11-12 14:17 A | 185 | 100% | 2026-11-11 16:33 | 2026-11-12 14:17 | 0.72d | 2026-11-11 16:33 | 2026-11-12 14:17 |  | Ruiz Campos José Fernando [87.08%] | 5h | 5h | 600 | 600 | 600 | S7 | DO | D11 | 1.3 Ejecución: producto Andy's Coffee POS |  |  |  |  |  |  |  |  |
| 187 | 1.3.8.1.4 | Verificar el funcionamiento posterior al despliegue |  | 0.43d | 2026-11-12 14:17 A | 2026-11-12 17:44 A | 186 | 100% | 2026-11-12 14:17 | 2026-11-12 17:44 | 0.43d | 2026-11-12 14:17 | 2026-11-12 17:44 |  | Ruiz Campos José Fernando [87.08%] | 3h | 3h | 360 | 360 | 360 | S7 | DO, QA | D11 | 1.3 Ejecución: producto Andy's Coffee POS | AC-20 |  |  |  |  |  |  |  |

Notes:
- 162: Paquete de trabajo 1.3.6.2 (diccionario de la EDT, 3.1a). HU-48 (5 puntos). Panel de administración con indicadores. Responsable: DEV. Esfuerzo: 11 h × $120 = $1,320 MXN.
- 163: Historia de usuario HU-48 (3.1b): EP-07 · CU-19 · prioridad Alta · 5 puntos · aceptación: PA-12. Paquete 1.3.6.2. Definición de terminado: criterios de aceptación cumplidos, pruebas automatizadas con CI en verde, revisión de código y demostración en la Sprint Review.
- 165: Paquete de trabajo 1.3.6.3 (diccionario de la EDT, 3.1a). HU-49 y HU-50 (10 puntos). Estado de resultados con días congelados y distribución de la utilidad. Responsable: DEV. Esfuerzo: 11 h × $120 = $1,320 MXN.
- 166: Historia de usuario HU-49 (3.1b): EP-07 · CU-18 · prioridad Alta · 8 puntos · aceptación: PA-12. Paquete 1.3.6.3. Definición de terminado: criterios de aceptación cumplidos, pruebas automatizadas con CI en verde, revisión de código y demostración en la Sprint Review.
- 167: Historia de usuario HU-50 (3.1b): EP-07 · CU-03, CU-18 · prioridad Baja · 2 puntos · aceptación: PA-12. Paquete 1.3.6.3. Definición de terminado: criterios de aceptación cumplidos, pruebas automatizadas con CI en verde, revisión de código y demostración en la Sprint Review.
- 169: Actividad 13 del cronograma (3.2). PERT (semanas laborales, con f = 89/120): O = 1.1125, M = 1.4833, P = 1.8542; Te = (O + 4M + P) / 6 = 1.4833 semanas = 8.9 días; σ² = ((P − O) / 6)² = 0.0153. Esfuerzo: 63 h × $120 = $7,560 MXN. Holgura: 0 (ruta crítica única).
- 170: Paquete de trabajo 1.3.7.1 (diccionario de la EDT, 3.1a). Regresión unitaria y de integración en CI; cobertura mínima de 80 % en servicios críticos; pruebas de concurrencia. Responsable: QA. Esfuerzo: 22 h × $120 = $2,640 MXN.
- 173: Paquete de trabajo 1.3.7.2 (diccionario de la EDT, 3.1a). Regresión E2E con Playwright, pruebas de seguridad (OWASP Top 10, npm audit) y medición de rendimiento. Responsable: QA. Esfuerzo: 22 h × $120 = $2,640 MXN.
- 177: Paquete de trabajo 1.3.7.3 (diccionario de la EDT, 3.1a). Escenarios PA-01 a PA-12 aceptados por la propietaria y los cajeros; sin defectos críticos ni altos abiertos (H3). Responsable: QA. Esfuerzo: 19 h × $120 = $2,280 MXN.
- 178: Ventana de la UAT del 2 al 7-nov-2026 en el local (2.3: OCAL-01, OCAL-09, AC-14; 3.2: actividades de calidad). La propietaria y los cajeros ejecutan los escenarios PA-01 a PA-12; el QA conduce las sesiones (7 h en la semana). Se programa en paralelo con la regresión E2E y de seguridad y no forma parte de la ruta crítica.
- 181: Hito de control de duración cero (3.2, apartado 2.4). Condición de salida: Pruebas unitarias, de integración, E2E, de seguridad y UAT completadas; sin defectos críticos ni altos abiertos.
- 182: Actividad 14 del cronograma (3.2). PERT (semanas laborales, con f = 89/120): O = 0.3708, M = 0.7417, P = 1.1125; Te = (O + 4M + P) / 6 = 0.7417 semanas = 4.45 días; σ² = ((P − O) / 6)² = 0.0153. Esfuerzo: 31 h × $120 = $3,720 MXN. Holgura: 0 (ruta crítica única).
- 183: Paquete de trabajo 1.3.8.1 (diccionario de la EDT, 3.1a). SPA en Vercel, API en Render y base de datos en Supabase operando, con la carga inicial de existencias aplicada y verificación posterior. Responsable: DO. Esfuerzo: 13 h × $120 = $1,560 MXN.

| ID | WBS | Task | Type | Duration | Start | Finish | Predecessors | Complete | Remaining | Baseline start | Baseline finish | Baseline duration | Baseline 1 start | Baseline 1 finish | Constraint | Resources | Work | Actual work | Cost | Baseline cost | Actual cost | Sprint | Puesto (plan de RR. HH.) | Entregable | Fase (EDT) |
| --- | --- | --- | --- | --- | --- | --- | --- | --- | --- | --- | --- | --- | --- | --- | --- | --- | --- | --- | --- | --- | --- | --- | --- | --- | --- |
| 188 | 1.3.8.2 | **1.3.8.2 Guía de operación y soporte** |  | 1.29d | 2026-11-12 17:44 A | 2026-11-14 11:04 A |  | 100% |  | 2026-11-12 17:44 | 2026-11-14 11:04 | 1.29d | 2026-11-12 17:44 | 2026-11-14 11:04 |  |  | 9h | 9h | 1,080 | 1,080 | 1,080 | S7 | AS | D11 | 1.3 Ejecución: producto Andy's Coffee POS |
| 189 | 1.3.8.2.1 | Elaborar la guía de operación y soporte (respaldo y restauración) |  | 0.86d | 2026-11-12 17:44 A | 2026-11-13 16:37 A | 187 | 100% |  | 2026-11-12 17:44 | 2026-11-13 16:37 | 0.86d | 2026-11-12 17:44 | 2026-11-13 16:37 |  | Ruiz Campos José Fernando [87.08%] | 6h | 6h | 720 | 720 | 720 | S7 | AS, DO | D11 | 1.3 Ejecución: producto Andy's Coffee POS |
| 190 | 1.3.8.2.2 | Elaborar el aviso de privacidad y el procedimiento ARCO |  | 0.29d | 2026-11-13 16:37 A | 2026-11-14 09:55 A | 189 | 100% |  | 2026-11-13 16:37 | 2026-11-14 09:55 | 0.29d | 2026-11-13 16:37 | 2026-11-14 09:55 |  | Ruiz Campos José Fernando [87.08%] | 2h | 2h | 240 | 240 | 240 | S7 | AS, PO | D11 | 1.3 Ejecución: producto Andy's Coffee POS |
| 191 | 1.3.8.2.3 | Revisar el entregable D11 con la lista de cotejo |  | 0.14d | 2026-11-14 09:55 A | 2026-11-14 11:04 A | 190 | 100% |  | 2026-11-14 09:55 | 2026-11-14 11:04 | 0.14d | 2026-11-14 09:55 | 2026-11-14 11:04 |  | Ruiz Campos José Fernando [87.08%] | 1h | 1h | 120 | 120 | 120 | S7 | AS; PO | D11 | 1.3 Ejecución: producto Andy's Coffee POS |
| 192 | 1.3.8.3 | **1.3.8.3 Capacitación de usuarios** |  | 1.29d | 2026-11-14 11:04 A | 2026-11-16 14:24 A |  | 100% |  | 2026-11-14 11:04 | 2026-11-16 14:24 | 1.29d | 2026-11-14 11:04 | 2026-11-16 14:24 |  |  | 9h | 9h | 1,080 | 1,080 | 1,080 | S7–SC | AS | D11 | 1.3 Ejecución: producto Andy's Coffee POS |
| 193 | 1.3.8.3.1 | Capacitar a la usuaria ADMIN (propietaria) |  | 0.43d | 2026-11-14 11:04 A | 2026-11-14 15:31 A | 191 | 100% |  | 2026-11-14 11:04 | 2026-11-14 15:31 | 0.43d | 2026-11-14 11:04 | 2026-11-14 15:31 |  | Ruiz Campos José Fernando [87.08%] | 3h | 3h | 360 | 360 | 360 | S7 | AS; PN | D11 | 1.3 Ejecución: producto Andy's Coffee POS |
| 194 | 1.3.8.3.2 | Capacitar a los usuarios CAJERO fuera de las horas de mayor afluencia |  | 0.57d | 2026-11-14 15:31 A | 2026-11-16 11:06 A | 193 | 100% |  | 2026-11-14 15:31 | 2026-11-16 11:06 | 0.57d | 2026-11-14 15:31 | 2026-11-16 11:06 |  | Ruiz Campos José Fernando [87.08%] | 4h | 4h | 480 | 480 | 480 | S7–SC | AS; CAJ | D11 | 1.3 Ejecución: producto Andy's Coffee POS |
| 195 | 1.3.8.3.3 | Acordar los indicadores de beneficio y registrar su valor inicial |  | 0.29d | 2026-11-16 11:06 A | 2026-11-16 14:24 A | 194 | 100% |  | 2026-11-16 11:06 | 2026-11-16 14:24 | 0.29d | 2026-11-16 11:06 | 2026-11-16 14:24 |  | Ruiz Campos José Fernando [87.08%] | 2h | 2h | 240 | 240 | 240 | SC | PO, AS; PN | D11 | 1.3 Ejecución: producto Andy's Coffee POS |
| 196 | H4 | H4 Despliegue y transferencia completados | milestone | 0d | 2026-11-16 14:24 A | 2026-11-16 14:24 A | 195 | 100% |  | 2026-11-16 14:24 | 2026-11-16 14:24 |  | 2026-11-16 14:24 | 2026-11-16 14:24 |  |  |  |  |  |  |  | SC |  |  | 1.3 Ejecución: producto Andy's Coffee POS |
| 197 | 1.4 | **1.4 Monitoreo y control** |  | 93d | 2026-08-10 09:00 A | 2026-11-25 18:00 |  |  | 89d | 2026-08-10 09:00 | 2026-11-20 18:00 | 89d | 2026-08-10 09:00 | 2026-11-25 18:00 |  |  | 33h |  | 3,960 | 3,960 |  | S1–SC |  |  | 1.4 Monitoreo y control |
| 198 | 1.4 | **Actividad 15 · Monitoreo y control (transversal)** |  | 93d | 2026-08-10 09:00 A | 2026-11-25 18:00 |  |  | 89d | 2026-08-10 09:00 | 2026-11-20 18:00 | 89d | 2026-08-10 09:00 | 2026-11-25 18:00 |  |  | 33h |  | 3,960 | 3,960 |  | S1–SC | SM, PO, DO | Reportes y registros | 1.4 Monitoreo y control |
| 199 | 1.4.1.1 | 1.4.1.1 Reportes semanales de avance |  | 93d | 2026-08-10 09:00 A | 2026-11-25 18:00 |  | 95% | 4.45d | 2026-08-10 09:00 | 2026-11-20 18:00 | 89d | 2026-08-10 09:00 | 2026-11-25 18:00 |  | Ruiz Campos José Fernando [0.84%] | 6.27h | 5.97h | 752.36 | 720 | 716.36 | S1–SC | SM | Reportes y registros | 1.4 Monitoreo y control |
| 200 | 1.4.1.2 | 1.4.1.2 Cronograma y presupuesto actualizados (valor ganado cada viernes) |  | 93d | 2026-08-10 09:00 A | 2026-11-25 18:00 |  | 95% | 4.45d | 2026-08-10 09:00 | 2026-11-20 18:00 | 89d | 2026-08-10 09:00 | 2026-11-25 18:00 |  | Ruiz Campos José Fernando [0.84%] | 6.27h | 5.97h | 752.36 | 720 | 716.36 | S1–SC | SM | Reportes y registros | 1.4 Monitoreo y control |
| 201 | 1.4.2.1 | 1.4.2.1 Registro de riesgos e incidencias |  | 93d | 2026-08-10 09:00 A | 2026-11-25 18:00 |  | 95% | 4.45d | 2026-08-10 09:00 | 2026-11-20 18:00 | 89d | 2026-08-10 09:00 | 2026-11-25 18:00 |  | Ruiz Campos José Fernando [0.7%] | 5.22h | 4.97h | 626.97 | 600 | 596.97 | S1–SC | SM | Reportes y registros | 1.4 Monitoreo y control |
| 202 | 1.4.2.2 | 1.4.2.2 Registro de métricas y revisiones de calidad |  | 93d | 2026-08-10 09:00 A | 2026-11-25 18:00 |  | 95% | 4.45d | 2026-08-10 09:00 | 2026-11-20 18:00 | 89d | 2026-08-10 09:00 | 2026-11-25 18:00 |  | Ruiz Campos José Fernando [0.7%] | 5.22h | 4.97h | 626.97 | 600 | 596.97 | S1–SC | SM | Reportes y registros | 1.4 Monitoreo y control |
| 203 | 1.4.2.3 | 1.4.2.3 Registro de solicitudes de cambio |  | 93d | 2026-08-10 09:00 A | 2026-11-25 18:00 |  | 95% | 4.45d | 2026-08-10 09:00 | 2026-11-20 18:00 | 89d | 2026-08-10 09:00 | 2026-11-25 18:00 |  | Ruiz Campos José Fernando [0.42%] | 3.13h | 2.98h | 376.18 | 360 | 358.18 | S1–SC | SM | Reportes y registros | 1.4 Monitoreo y control |
| 204 | 1.4.3.1 | 1.4.3.1 Actas de Sprint Review y retrospectiva |  | 93d | 2026-08-10 09:00 A | 2026-11-25 18:00 |  | 95% | 4.45d | 2026-08-10 09:00 | 2026-11-20 18:00 | 89d | 2026-08-10 09:00 | 2026-11-25 18:00 |  | Ruiz Campos José Fernando [0.7%] | 5.22h | 4.97h | 626.97 | 600 | 596.97 | S1–SC | PO | Reportes y registros | 1.4 Monitoreo y control |
| 205 | 1.4.3.2 | 1.4.3.2 Registro de versiones liberadas |  | 93d | 2026-08-10 09:00 A | 2026-11-25 18:00 |  | 95% | 4.45d | 2026-08-10 09:00 | 2026-11-20 18:00 | 89d | 2026-08-10 09:00 | 2026-11-25 18:00 |  | Ruiz Campos José Fernando [0.42%] | 3.13h | 2.98h | 376.18 | 360 | 358.18 | S1–SC | DO | Reportes y registros | 1.4 Monitoreo y control |
| 206 | 1.4.3.1-S1 | Sprint Review y retrospectiva S1 | milestone | 0d | 2026-08-22 18:00 A | 2026-08-22 18:00 A |  | 100% |  | 2026-08-22 18:00 | 2026-08-22 18:00 |  | 2026-08-22 18:00 | 2026-08-22 18:00 | start no earlier than 2026-08-22 18:00 |  |  |  |  |  |  | S2 | PO, SM; PN, CAJ |  | 1.4 Monitoreo y control |
| 207 | 1.4.3.1-S2 | Sprint Review y retrospectiva S2 | milestone | 0d | 2026-09-05 18:00 A | 2026-09-05 18:00 A |  | 100% |  | 2026-09-05 18:00 | 2026-09-05 18:00 |  | 2026-09-05 18:00 | 2026-09-05 18:00 | start no earlier than 2026-09-05 18:00 |  |  |  |  |  |  | S3 | PO, SM; PN, CAJ |  | 1.4 Monitoreo y control |
| 208 | 1.4.3.1-S3 | Sprint Review y retrospectiva S3 | milestone | 0d | 2026-09-19 18:00 A | 2026-09-19 18:00 A |  | 100% |  | 2026-09-19 18:00 | 2026-09-19 18:00 |  | 2026-09-19 18:00 | 2026-09-19 18:00 | start no earlier than 2026-09-19 18:00 |  |  |  |  |  |  | S4 | PO, SM; PN, CAJ |  | 1.4 Monitoreo y control |
| 209 | 1.4.3.1-S4 | Sprint Review y retrospectiva S4 | milestone | 0d | 2026-10-03 18:00 A | 2026-10-03 18:00 A |  | 100% |  | 2026-10-03 18:00 | 2026-10-03 18:00 |  | 2026-10-03 18:00 | 2026-10-03 18:00 | start no earlier than 2026-10-03 18:00 |  |  |  |  |  |  | S5 | PO, SM; PN, CAJ |  | 1.4 Monitoreo y control |
| 210 | 1.4.3.1-S5 | Sprint Review y retrospectiva S5 | milestone | 0d | 2026-10-17 18:00 A | 2026-10-17 18:00 A |  | 100% |  | 2026-10-17 18:00 | 2026-10-17 18:00 |  | 2026-10-17 18:00 | 2026-10-17 18:00 | start no earlier than 2026-10-17 18:00 |  |  |  |  |  |  | S6 | PO, SM; PN, CAJ |  | 1.4 Monitoreo y control |
| 211 | 1.4.3.1-S6 | Sprint Review y retrospectiva S6 | milestone | 0d | 2026-10-31 18:00 A | 2026-10-31 18:00 A |  | 100% |  | 2026-10-31 18:00 | 2026-10-31 18:00 |  | 2026-10-31 18:00 | 2026-10-31 18:00 | start no earlier than 2026-10-31 18:00 |  |  |  |  |  |  | S7 | PO, SM; PN, CAJ |  | 1.4 Monitoreo y control |
| 212 | 1.4.3.1-S7 | Sprint Review y retrospectiva S7 | milestone | 0d | 2026-11-14 18:00 A | 2026-11-14 18:00 A |  | 100% |  | 2026-11-14 18:00 | 2026-11-14 18:00 |  | 2026-11-14 18:00 | 2026-11-14 18:00 | start no earlier than 2026-11-14 18:00 |  |  |  |  |  |  | SC | PO, SM; PN, CAJ |  | 1.4 Monitoreo y control |

Notes:
- 188: Paquete de trabajo 1.3.8.2 (diccionario de la EDT, 3.1a). Guía de operación, soporte, respaldo y restauración; aviso de privacidad. Responsable: AS. Esfuerzo: 9 h × $120 = $1,080 MXN.
- 189: Calidad y sostenibilidad (2.3): SO-10
- 190: Calidad y sostenibilidad (2.3): SO-08
- 191: Calidad y sostenibilidad (2.3): AC-16 (D11)
- 192: Paquete de trabajo 1.3.8.3 (diccionario de la EDT, 3.1a). Usuarios ADMIN y CAJERO capacitados fuera de las horas de mayor afluencia (H4). Responsable: AS. Esfuerzo: 9 h × $120 = $1,080 MXN.
- 193: Calidad y sostenibilidad (2.3): SO-07
- 194: Calidad y sostenibilidad (2.3): SO-01; SO-07
- 195: Calidad y sostenibilidad (2.3): SO-06
- 196: Hito de control de duración cero (3.2, apartado 2.4). Condición de salida: Aplicación desplegada y verificada; guía de operación entregada y usuarios capacitados.
- 198: Actividad transversal: no forma parte de la red secuencial ni de la ruta crítica (3.2). 33 h de trabajo periódico repartidas en los 89 días (0.37 h/día). Cada semana: registrar horas, actualizar cronograma y valor ganado (viernes), revisar riesgos, incidencias, métricas y cambios y emitir el reporte (sábado). Cada sprint: acta de Sprint Review y retrospectiva y etiqueta de la versión liberada. / Calidad y sostenibilidad (2.3): AC-07; AC-13; AC-15; AC-17; AC-18; AC-19; AC-22; SO-05; SO-12
- 199: Paquete de trabajo 1.4.1.1 (3.1a). Esfuerzo continuo: 6 h distribuidas del 10-ago al 20-nov. Responsable: SM. $720 MXN. Reprogramación al 25-nov: se extiende 4 días laborables con las mismas unidades (de 89 a 93 días); esfuerzo de 6.00 h a 6.27 h. / Calidad y sostenibilidad (2.3): AC-18; sostenibilidad ambiental (reportes en PDF por correo)
- 200: Paquete de trabajo 1.4.1.2 (3.1a). Esfuerzo continuo: 6 h distribuidas del 10-ago al 20-nov. Responsable: SM. $720 MXN. Reprogramación al 25-nov: se extiende 4 días laborables con las mismas unidades (de 89 a 93 días); esfuerzo de 6.00 h a 6.27 h. / Calidad y sostenibilidad (2.3): Sostenibilidad económica; SO-05
- 201: Paquete de trabajo 1.4.2.1 (3.1a). Esfuerzo continuo: 5 h distribuidas del 10-ago al 20-nov. Responsable: SM. $600 MXN. Reprogramación al 25-nov: se extiende 4 días laborables con las mismas unidades (de 89 a 93 días); esfuerzo de 5.00 h a 5.22 h.
- 202: Paquete de trabajo 1.4.2.2 (3.1a). Esfuerzo continuo: 5 h distribuidas del 10-ago al 20-nov. Responsable: SM. $600 MXN. Reprogramación al 25-nov: se extiende 4 días laborables con las mismas unidades (de 89 a 93 días); esfuerzo de 5.00 h a 5.22 h. / Calidad y sostenibilidad (2.3): AC-07; AC-15; AC-17; AC-22; SO-12
- 203: Paquete de trabajo 1.4.2.3 (3.1a). Esfuerzo continuo: 3 h distribuidas del 10-ago al 20-nov. Responsable: SM. $360 MXN. Reprogramación al 25-nov: se extiende 4 días laborables con las mismas unidades (de 89 a 93 días); esfuerzo de 3.00 h a 3.13 h.
- 204: Paquete de trabajo 1.4.3.1 (3.1a). Esfuerzo continuo: 5 h distribuidas del 10-ago al 20-nov. Responsable: PO. $600 MXN. Reprogramación al 25-nov: se extiende 4 días laborables con las mismas unidades (de 89 a 93 días); esfuerzo de 5.00 h a 5.22 h. / Calidad y sostenibilidad (2.3): AC-13; AC-19
- 205: Paquete de trabajo 1.4.3.2 (3.1a). Esfuerzo continuo: 3 h distribuidas del 10-ago al 20-nov. Responsable: DO. $360 MXN. Reprogramación al 25-nov: se extiende 4 días laborables con las mismas unidades (de 89 a 93 días); esfuerzo de 3.00 h a 3.13 h.
- 206: Sábado de cierre del sprint S1: demostración y aceptación de D1 y D2 (documentos); acta (1.4.3.1) y etiqueta de versión (1.4.3.2). / Calidad y sostenibilidad (2.3): AC-13; AC-17; AC-19
- 207: Sábado de cierre del sprint S2: demostración y aceptación de D3 (documentos y prototipo); acta (1.4.3.1) y etiqueta de versión (1.4.3.2). / Calidad y sostenibilidad (2.3): AC-13; AC-17; AC-19
- 208: Sábado de cierre del sprint S3: demostración y aceptación de I1: estructura, ambientes, acceso, roles y preferencias; acta (1.4.3.1) y etiqueta de versión (1.4.3.2). / Calidad y sostenibilidad (2.3): AC-13; AC-17; AC-19
- 209: Sábado de cierre del sprint S4: demostración y aceptación de I2: catálogo comercial y caja; acta (1.4.3.1) y etiqueta de versión (1.4.3.2). / Calidad y sostenibilidad (2.3): AC-13; AC-17; AC-19
- 210: Sábado de cierre del sprint S5: demostración y aceptación de I3: venta, pagos, órdenes, entregas y notificaciones; acta (1.4.3.1) y etiqueta de versión (1.4.3.2). / Calidad y sostenibilidad (2.3): AC-13; AC-17; AC-19
- 211: Sábado de cierre del sprint S6: demostración y aceptación de I4: inventario, compras y finanzas; acta (1.4.3.1) y etiqueta de versión (1.4.3.2). / Calidad y sostenibilidad (2.3): AC-13; AC-17; AC-19
- 212: Sábado de cierre del sprint S7: demostración y aceptación de I5: versión aceptada; acta (1.4.3.1) y etiqueta de versión (1.4.3.2). / Calidad y sostenibilidad (2.3): AC-13; AC-17; AC-19

| ID | WBS | Task | Type | Duration | Start | Finish | Predecessors | Baseline start | Baseline finish | Baseline duration | Baseline 1 start | Baseline 1 finish | Constraint | Resources | Work | Cost | Baseline cost | Sprint | Fase (EDT) | Calidad y sostenibilidad (2.3) | Puesto (plan de RR. HH.) | Entregable | O (semanas) | M (semanas) | P (semanas) | Te (semanas) |
| --- | --- | --- | --- | --- | --- | --- | --- | --- | --- | --- | --- | --- | --- | --- | --- | --- | --- | --- | --- | --- | --- | --- | --- | --- | --- | --- |
| 213 | 1.5 | **1.5 Cierre** |  | 4.45d | 2026-11-20 14:24 | 2026-11-25 18:00 |  | 2026-11-16 14:24 | 2026-11-20 18:00 | 4.45d | 2026-11-20 14:24 | 2026-11-25 18:00 |  |  | 32h | 3,840 | 3,840 | SC | 1.5 Cierre |  |  |  |  |  |  |  |
| 214 | 1.5.1 | **Actividad 16 · Acta de aceptación y entrega formal** |  | 1.34d | 2026-11-20 14:24 | 2026-11-21 17:05 |  | 2026-11-16 14:24 | 2026-11-17 17:05 | 1.34d | 2026-11-20 14:24 | 2026-11-21 17:05 |  |  | 10h | 1,200 | 1,200 | SC | 1.5 Cierre | AC-16 (D12) | PO | D12 | 0.07 | 0.22 | 0.37 | 0.22 |
| 215 | 1.5.1.1 | **1.5.1.1 Acta de aceptación firmada** |  | 0.8d | 2026-11-20 14:24 | 2026-11-21 11:48 |  | 2026-11-16 14:24 | 2026-11-17 11:48 | 0.8d | 2026-11-20 14:24 | 2026-11-21 11:48 |  |  | 6h | 720 | 720 | SC | 1.5 Cierre |  | PO | D12 |  |  |  |  |
| 216 | 1.5.1.1.1 | Integrar el paquete de entregables |  | 0.27d | 2026-11-20 14:24 | 2026-11-20 16:32 | 196 | 2026-11-16 14:24 | 2026-11-16 16:32 | 0.27d | 2026-11-20 14:24 | 2026-11-20 16:32 | start no earlier than 2026-11-20 14:24 | Ruiz Campos José Fernando [93.63%] | 2h | 240 | 240 | SC | 1.5 Cierre |  | PO | D12 |  |  |  |  |
| 217 | 1.5.1.1.2 | Realizar la revisión final con la propietaria |  | 0.27d | 2026-11-20 16:32 | 2026-11-21 09:40 | 216 | 2026-11-16 16:32 | 2026-11-17 09:40 | 0.27d | 2026-11-20 16:32 | 2026-11-21 09:40 |  | Ruiz Campos José Fernando [93.63%] | 2h | 240 | 240 | SC | 1.5 Cierre | AC-16 (D12) | PO; PN | D12 |  |  |  |  |
| 218 | 1.5.1.1.3 | Firmar el acta de aceptación |  | 0.27d | 2026-11-21 09:40 | 2026-11-21 11:48 | 217 | 2026-11-17 09:40 | 2026-11-17 11:48 | 0.27d | 2026-11-21 09:40 | 2026-11-21 11:48 |  | Ruiz Campos José Fernando [93.63%] | 2h | 240 | 240 | SC | 1.5 Cierre |  | PO; PN | D12 |  |  |  |  |
| 219 | 1.5.1.2 | **1.5.1.2 Transferencia de entregables y accesos** |  | 0.54d | 2026-11-21 11:48 | 2026-11-21 17:05 |  | 2026-11-17 11:48 | 2026-11-17 17:05 | 0.54d | 2026-11-21 11:48 | 2026-11-21 17:05 |  |  | 4h | 480 | 480 | SC | 1.5 Cierre |  | PO | D12 |  |  |  |  |
| 220 | 1.5.1.2.1 | Transferir el código, la documentación y los accesos |  | 0.54d | 2026-11-21 11:48 | 2026-11-21 17:05 | 218 | 2026-11-17 11:48 | 2026-11-17 17:05 | 0.54d | 2026-11-21 11:48 | 2026-11-21 17:05 |  | Ruiz Campos José Fernando [93.63%] | 4h | 480 | 480 | SC | 1.5 Cierre |  | PO, DO | D12 |  |  |  |  |
| 221 | H5 | H5 Entrega formal aceptada | milestone | 0d | 2026-11-21 17:05 | 2026-11-21 17:05 | 220 | 2026-11-17 17:05 | 2026-11-17 17:05 |  | 2026-11-21 17:05 | 2026-11-21 17:05 |  |  |  |  |  | SC | 1.5 Cierre |  |  |  |  |  |  |  |
| 222 | 1.5.2 | **Actividad 17 · Lecciones aprendidas y registro de pendientes V2** |  | 1.78d | 2026-11-21 17:05 | 2026-11-24 15:19 |  | 2026-11-17 17:05 | 2026-11-19 15:19 | 1.78d | 2026-11-21 17:05 | 2026-11-24 15:19 |  |  | 13h | 1,560 | 1,560 | SC | 1.5 Cierre | AC-19; AC-21; SO-06; SO-11 | SM, PO | D12 | 0.15 | 0.3 | 0.45 | 0.3 |
| 223 | 1.5.2.1 | **1.5.2.1 Registro de lecciones aprendidas** |  | 0.96d | 2026-11-21 17:05 | 2026-11-23 16:45 |  | 2026-11-17 17:05 | 2026-11-18 16:45 | 0.96d | 2026-11-21 17:05 | 2026-11-23 16:45 |  |  | 7h | 840 | 840 | SC | 1.5 Cierre |  | SM | D12 |  |  |  |  |
| 224 | 1.5.2.1.1 | Realizar la retrospectiva final |  | 0.41d | 2026-11-21 17:05 | 2026-11-23 11:22 | 221 | 2026-11-17 17:05 | 2026-11-18 11:22 | 0.41d | 2026-11-21 17:05 | 2026-11-23 11:22 |  | Ruiz Campos José Fernando [91.29%] | 3h | 360 | 360 | SC | 1.5 Cierre | AC-19 | SM | D12 |  |  |  |  |
| 225 | 1.5.2.1.2 | Documentar las lecciones aprendidas y el informe final de calidad |  | 0.55d | 2026-11-23 11:22 | 2026-11-23 16:45 | 224 | 2026-11-18 11:22 | 2026-11-18 16:45 | 0.55d | 2026-11-23 11:22 | 2026-11-23 16:45 |  | Ruiz Campos José Fernando [91.29%] | 4h | 480 | 480 | SC | 1.5 Cierre | AC-21 | SM | D12 |  |  |  |  |
| 226 | 1.5.2.2 | **1.5.2.2 Backlog de la versión 2** |  | 0.82d | 2026-11-23 16:45 | 2026-11-24 15:19 |  | 2026-11-18 16:45 | 2026-11-19 15:19 | 0.82d | 2026-11-23 16:45 | 2026-11-24 15:19 |  |  | 6h | 720 | 720 | SC | 1.5 Cierre |  | SM | D12 |  |  |  |  |
| 227 | 1.5.2.2.1 | Registrar y priorizar los pendientes de la versión 2 |  | 0.55d | 2026-11-23 16:45 | 2026-11-24 12:08 | 225 | 2026-11-18 16:45 | 2026-11-19 12:08 | 0.55d | 2026-11-23 16:45 | 2026-11-24 12:08 |  | Ruiz Campos José Fernando [91.29%] | 4h | 480 | 480 | SC | 1.5 Cierre | SO-11 | SM, PO | D12 |  |  |  |  |
| 228 | 1.5.2.2.2 | Documentar los indicadores de beneficio para el seguimiento posterior al cierre |  | 0.27d | 2026-11-24 12:08 | 2026-11-24 15:19 | 227 | 2026-11-19 12:08 | 2026-11-19 15:19 | 0.27d | 2026-11-24 12:08 | 2026-11-24 15:19 |  | Ruiz Campos José Fernando [91.29%] | 2h | 240 | 240 | SC | 1.5 Cierre | SO-06 | SM | D12 |  |  |  |  |
| 229 | 1.5.3 | **Actividad 18 · Cierre administrativo y reporte final** |  | 1.34d | 2026-11-24 15:19 | 2026-11-25 18:00 |  | 2026-11-19 15:19 | 2026-11-20 18:00 | 1.34d | 2026-11-24 15:19 | 2026-11-25 18:00 |  |  | 9h | 1,080 | 1,080 | SC | 1.5 Cierre | AC-16 (D12); sostenibilidad ambiental (archivo digital) | SM | D12 | 0.07 | 0.22 | 0.37 | 0.22 |
| 230 | 1.5.3.1 | **1.5.3.1 Reporte final de costo y plazo** |  | 0.74d | 2026-11-24 15:19 | 2026-11-25 12:15 |  | 2026-11-19 15:19 | 2026-11-20 12:15 | 0.74d | 2026-11-24 15:19 | 2026-11-25 12:15 |  |  | 5h | 600 | 600 | SC | 1.5 Cierre |  | SM | D12 |  |  |  |  |
| 231 | 1.5.3.1.1 | Comparar las horas, el costo y las fechas reales contra la línea base |  | 0.3d | 2026-11-24 15:19 | 2026-11-24 17:42 | 228 | 2026-11-19 15:19 | 2026-11-19 17:42 | 0.3d | 2026-11-24 15:19 | 2026-11-24 17:42 |  | Ruiz Campos José Fernando [84.27%] | 2h | 240 | 240 | SC | 1.5 Cierre |  | SM | D12 |  |  |  |  |
| 232 | 1.5.3.1.2 | Elaborar el reporte final de costo y plazo |  | 0.44d | 2026-11-24 17:42 | 2026-11-25 12:15 | 231 | 2026-11-19 17:42 | 2026-11-20 12:15 | 0.44d | 2026-11-24 17:42 | 2026-11-25 12:15 |  | Ruiz Campos José Fernando [84.27%] | 3h | 360 | 360 | SC | 1.5 Cierre |  | SM | D12 |  |  |  |  |
| 233 | 1.5.3.2 | **1.5.3.2 Archivo del proyecto** |  | 0.59d | 2026-11-25 12:15 | 2026-11-25 18:00 |  | 2026-11-20 12:15 | 2026-11-20 18:00 | 0.59d | 2026-11-25 12:15 | 2026-11-25 18:00 |  |  | 4h | 480 | 480 | SC | 1.5 Cierre |  | SM | D12 |  |  |  |  |
| 234 | 1.5.3.2.1 | Archivar la documentación en la carpeta compartida (formato digital, sin impresión) |  | 0.45d | 2026-11-25 12:15 | 2026-11-25 16:49 | 232 | 2026-11-20 12:15 | 2026-11-20 16:49 | 0.45d | 2026-11-25 12:15 | 2026-11-25 16:49 |  | Ruiz Campos José Fernando [84.27%] | 3h | 360 | 360 | SC | 1.5 Cierre | Sostenibilidad ambiental | SM | D12 |  |  |  |  |
| 235 | 1.5.3.2.2 | Cerrar formalmente el proyecto |  | 0.15d | 2026-11-25 16:49 | 2026-11-25 18:00 | 234 | 2026-11-20 16:49 | 2026-11-20 18:00 | 0.15d | 2026-11-25 16:49 | 2026-11-25 18:00 |  | Ruiz Campos José Fernando [84.27%] | 1h | 120 | 120 | SC | 1.5 Cierre |  | SM, PO | D12 |  |  |  |  |
| 236 | H6 | H6 Proyecto cerrado | milestone | 0d | 2026-11-25 18:00 | 2026-11-25 18:00 | 235 | 2026-11-20 18:00 | 2026-11-20 18:00 |  | 2026-11-25 18:00 | 2026-11-25 18:00 |  |  |  |  |  | SC | 1.5 Cierre |  |  |  |  |  |  |  |

Notes:
- 214: Actividad 16 del cronograma (3.2). PERT (semanas laborales, con f = 89/120): O = 0.0742, M = 0.2225, P = 0.3708; Te = (O + 4M + P) / 6 = 0.2225 semanas = 1.335 días; σ² = ((P − O) / 6)² = 0.0024. Esfuerzo: 10 h × $120 = $1,200 MXN. Holgura: 0 (ruta crítica única).
- 215: Paquete de trabajo 1.5.1.1 (diccionario de la EDT, 3.1a). Acta de aceptación del producto firmada por la propietaria. Responsable: PO. Esfuerzo: 6 h × $120 = $720 MXN.
- 216: Reprogramación aprobada por control de cambios (documento 1.4, sección 7): al corte del viernes 20-nov-2026 a las 14:24 el cierre no había iniciado; las actividades 16 a 18 se recorren 4 días laborables y el cierre del proyecto pasa del 20-nov al miércoles 25-nov-2026. Restricción: no comenzar antes del 20-nov-2026 14:24.
- 219: Paquete de trabajo 1.5.1.2 (diccionario de la EDT, 3.1a). Código, documentación y accesos transferidos a la propietaria. Responsable: PO. Esfuerzo: 4 h × $120 = $480 MXN.
- 221: Hito de control de duración cero (3.2, apartado 2.4). Condición de salida: Acta de aceptación firmada y entregables y accesos transferidos a la propietaria.
- 222: Actividad 17 del cronograma (3.2). PERT (semanas laborales, con f = 89/120): O = 0.1483, M = 0.2967, P = 0.4450; Te = (O + 4M + P) / 6 = 0.2967 semanas = 1.78 días; σ² = ((P − O) / 6)² = 0.0024. Esfuerzo: 13 h × $120 = $1,560 MXN. Holgura: 0 (ruta crítica única).
- 223: Paquete de trabajo 1.5.2.1 (diccionario de la EDT, 3.1a). Lecciones aprendidas e informe final de calidad. Responsable: SM. Esfuerzo: 7 h × $120 = $840 MXN.
- 226: Paquete de trabajo 1.5.2.2 (diccionario de la EDT, 3.1a). Pendientes fuera del alcance registrados y priorizados para la versión 2. Responsable: SM. Esfuerzo: 6 h × $120 = $720 MXN.
- 229: Actividad 18 del cronograma (3.2). PERT (semanas laborales, con f = 89/120): O = 0.0742, M = 0.2225, P = 0.3708; Te = (O + 4M + P) / 6 = 0.2225 semanas = 1.335 días; σ² = ((P − O) / 6)² = 0.0024. Esfuerzo: 9 h × $120 = $1,080 MXN. Holgura: 0 (ruta crítica única).
- 230: Paquete de trabajo 1.5.3.1 (diccionario de la EDT, 3.1a). Comparación de horas, costo y fechas reales contra la línea base. Responsable: SM. Esfuerzo: 5 h × $120 = $600 MXN.
- 233: Paquete de trabajo 1.5.3.2 (diccionario de la EDT, 3.1a). Documentación archivada en formato digital y proyecto cerrado (H6). Responsable: SM. Esfuerzo: 4 h × $120 = $480 MXN.
- 236: Hito de control de duración cero (3.2, apartado 2.4). Condición de salida: Lecciones aprendidas y backlog V2 registrados; reporte final de costo y plazo y archivo del proyecto completados.
