# Andy's Coffee POS

Schedule from MS Project XML, 2026-08-10 to 2026-11-20, status date 2026-08-10, costs in $.
Cronograma secuencial PERT/CPM (documento 3.2)
Andy's Café y Brunch

## Calendars

- Andy's Coffee POS (lunes a sábado, 8 h): Mon-Sat 09:00-13:00, 14:00-18:00; Sun off.

## Resources

| Resource | Group | Rate | Notes |
| --- | --- | --- | --- |
| Ruiz Campos José Fernando | Equipo del proyecto (PO, SM, AS, UX, DEV, QA, DO) | 120 | Única persona del equipo; ocupa los siete puestos del plan de recursos humanos. Tarifa integral de $120 MXN/h. |

## Schedule

| ID | WBS | Task | Type | Duration | Start | Finish | Predecessors | Baseline start | Baseline finish | Baseline duration | Resources | Work | Cost | Baseline cost | Sprint | Puesto (plan de RR. HH.) | Entregable | Fase (EDT) | O (semanas) | M (semanas) | P (semanas) | Te (semanas) | Varianza |
| --- | --- | --- | --- | --- | --- | --- | --- | --- | --- | --- | --- | --- | --- | --- | --- | --- | --- | --- | --- | --- | --- | --- | --- |
| 1 | 1.1.1 | 1. Acta de inicio y objetivo aprobado |  | 2.23d | 2026-08-10 | 2026-08-12 |  | 2026-08-10 | 2026-08-12 | 2.23d | Ruiz Campos José Fernando [89.89%] | 16h | 1,920 | 1,920 | S1 | PO, AS | D1 | 1.1 Iniciación | 0.15 | 0.37 | 0.59 | 0.37 | 0.01 |
| 2 | H1 | H1 Inicio autorizado | milestone | 0d | 2026-08-12 | 2026-08-12 | 1 | 2026-08-12 | 2026-08-12 |  |  |  |  |  |  |  |  | 1.1 Iniciación |  |  |  |  |  |
| 3 | 1.1.2 | 2. Identificación de interesados y alcance preliminar |  | 2.23d | 2026-08-12 | 2026-08-14 | 2 | 2026-08-12 | 2026-08-14 | 2.23d | Ruiz Campos José Fernando [89.89%] | 16h | 1,920 | 1,920 | S1 | PO, AS | D1 | 1.1 Iniciación | 0.15 | 0.37 | 0.59 | 0.37 | 0.01 |
| 4 | 1.2.1 | 3. Requisitos funcionales, reglas y criterios |  | 6.67d | 2026-08-14 | 2026-08-22 | 3 | 2026-08-14 | 2026-08-22 | 6.67d | Ruiz Campos José Fernando [88.01%] | 47h | 5,640 | 5,640 | S1 | AS, PO | D2 | 1.2 Planificación | 0.74 | 1.11 | 1.48 | 1.11 | 0.02 |
| 5 | 1.2.2 | 4. Arquitectura, modelo de datos y seguridad |  | 6.67d | 2026-08-22 | 2026-08-29 | 4 | 2026-08-22 | 2026-08-29 | 6.67d | Ruiz Campos José Fernando [88.01%] | 47h | 5,640 | 5,640 | S1–S2 | UX, DEV | D3 | 1.2 Planificación | 0.74 | 1.11 | 1.48 | 1.11 | 0.02 |
| 6 | 1.2.3 | 5. Planes de cronograma, costo, calidad y riesgos |  | 4.45d | 2026-08-29 | 2026-09-04 | 5 | 2026-08-29 | 2026-09-04 | 4.45d | Ruiz Campos José Fernando [87.08%] | 31h | 3,720 | 3,720 | S2 | SM | D3 | 1.2 Planificación | 0.37 | 0.74 | 1.11 | 0.74 | 0.02 |
| 7 | H2 | H2 Alcance y línea base aprobados | milestone | 0d | 2026-09-04 | 2026-09-04 | 6 | 2026-09-04 | 2026-09-04 |  |  |  |  |  |  |  |  | 1.2 Planificación |  |  |  |  |  |
| 8 | 1.3.1.1 | 6. Estructura Frontend/API y ambientes |  | 6.67d | 2026-09-04 | 2026-09-11 | 7 | 2026-09-04 | 2026-09-11 | 6.67d | Ruiz Campos José Fernando [88.01%] | 47h | 5,640 | 5,640 | S2–S3 | DO, DEV | D4 | 1.3 Ejecución: construcción, pruebas e implantación | 0.74 | 1.11 | 1.48 | 1.11 | 0.02 |
| 9 | 1.3.1.2 | 7. Autenticación, RBAC y preferencias |  | 4.45d | 2026-09-11 | 2026-09-17 | 8 | 2026-09-11 | 2026-09-17 | 4.45d | Ruiz Campos José Fernando [87.08%] | 31h | 3,720 | 3,720 | S3 | DEV | D4 | 1.3 Ejecución: construcción, pruebas e implantación | 0.37 | 0.74 | 1.11 | 0.74 | 0.02 |
| 10 | 1.3.2 | 8. Catálogo y recetas |  | 6.67d | 2026-09-17 | 2026-09-25 | 9 | 2026-09-17 | 2026-09-25 | 6.67d | Ruiz Campos José Fernando [88.01%] | 47h | 5,640 | 5,640 | S3–S4 | DEV, UX | D5 | 1.3 Ejecución: construcción, pruebas e implantación | 0.74 | 1.11 | 1.48 | 1.11 | 0.02 |
| 11 | 1.3.4 | 9. Caja: apertura, cierres, movimientos y conciliación |  | 6.67d | 2026-09-25 | 2026-10-02 | 10 | 2026-09-25 | 2026-10-02 | 6.67d | Ruiz Campos José Fernando [88.01%] | 47h | 5,640 | 5,640 | S4 | DEV, UX | D7 | 1.3 Ejecución: construcción, pruebas e implantación | 0.74 | 1.11 | 1.48 | 1.11 | 0.02 |
| 12 | 1.3.3 | 10. Punto de venta y pedidos |  | 11.12d | 2026-10-02 | 2026-10-15 | 11 | 2026-10-02 | 2026-10-15 | 11.12d | Ruiz Campos José Fernando [87.64%] | 78h | 9,360 | 9,360 | S4–S5 | DEV, UX | D6 | 1.3 Ejecución: construcción, pruebas e implantación | 1.11 | 1.85 | 2.6 | 1.85 | 0.06 |
| 13 | 1.3.5 | 11. Inventario, proveedores, compras y conteos |  | 8.9d | 2026-10-15 | 2026-10-26 | 12 | 2026-10-15 | 2026-10-26 | 8.9d | Ruiz Campos José Fernando [88.48%] | 63h | 7,560 | 7,560 | S5–S6 | DEV, UX | D8 | 1.3 Ejecución: construcción, pruebas e implantación | 0.74 | 1.48 | 2.23 | 1.48 | 0.06 |
| 14 | 1.3.6 | 12. Gastos y finanzas: gastos, indicadores y estado de resultados |  | 4.45d | 2026-10-26 | 2026-10-31 | 13 | 2026-10-26 | 2026-10-31 | 4.45d | Ruiz Campos José Fernando [87.08%] | 31h | 3,720 | 3,720 | S6 | DEV | D9 | 1.3 Ejecución: construcción, pruebas e implantación | 0.37 | 0.74 | 1.11 | 0.74 | 0.02 |
| 15 | 1.3.7 | 13. Integración, estabilización y aceptación |  | 8.9d | 2026-10-31 | 2026-11-11 | 14 | 2026-10-31 | 2026-11-11 | 8.9d | Ruiz Campos José Fernando [88.48%] | 63h | 7,560 | 7,560 | S6–S7 | QA, DEV | D10 | 1.3 Ejecución: construcción, pruebas e implantación | 1.11 | 1.48 | 1.85 | 1.48 | 0.02 |
| 16 | H3 | H3 Versión aceptada para liberación | milestone | 0d | 2026-11-11 | 2026-11-11 | 15 | 2026-11-11 | 2026-11-11 |  |  |  |  |  |  |  |  | 1.3 Ejecución: construcción, pruebas e implantación |  |  |  |  |  |
| 17 | 1.3.8 | 14. Despliegue, guía y capacitación |  | 4.45d | 2026-11-11 | 2026-11-16 | 16 | 2026-11-11 | 2026-11-16 | 4.45d | Ruiz Campos José Fernando [87.08%] | 31h | 3,720 | 3,720 | S7–SC | DO, AS | D11 | 1.3 Ejecución: construcción, pruebas e implantación | 0.37 | 0.74 | 1.11 | 0.74 | 0.02 |
| 18 | H4 | H4 Sistema liberado y personal capacitado | milestone | 0d | 2026-11-16 | 2026-11-16 | 17 | 2026-11-16 | 2026-11-16 |  |  |  |  |  |  |  |  | 1.3 Ejecución: construcción, pruebas e implantación |  |  |  |  |  |
| 19 | 1.5.1 | 16. Acta de aceptación y entrega formal |  | 1.34d | 2026-11-16 | 2026-11-17 | 18 | 2026-11-16 | 2026-11-17 | 1.34d | Ruiz Campos José Fernando [93.6%] | 10h | 1,200 | 1,200 | SC | PO | D12 | 1.5 Cierre | 0.07 | 0.22 | 0.37 | 0.22 |  |
| 20 | H5 | H5 Entrega formal aceptada | milestone | 0d | 2026-11-17 | 2026-11-17 | 19 | 2026-11-17 | 2026-11-17 |  |  |  |  |  |  |  |  | 1.5 Cierre |  |  |  |  |  |
| 21 | 1.5.2 | 17. Lecciones aprendidas y registro de pendientes V2 |  | 1.78d | 2026-11-17 | 2026-11-19 | 20 | 2026-11-17 | 2026-11-19 | 1.78d | Ruiz Campos José Fernando [91.33%] | 13h | 1,560 | 1,560 | SC | SM | D12 | 1.5 Cierre | 0.15 | 0.3 | 0.45 | 0.3 |  |
| 22 | 1.5.3 | 18. Cierre administrativo y reporte final |  | 1.34d | 2026-11-19 | 2026-11-20 | 21 | 2026-11-19 | 2026-11-20 | 1.34d | Ruiz Campos José Fernando [84.24%] | 9h | 1,080 | 1,080 | SC | SM | D12 | 1.5 Cierre | 0.07 | 0.22 | 0.37 | 0.22 |  |
| 23 | H6 | H6 Proyecto cerrado | milestone | 0d | 2026-11-20 | 2026-11-20 | 22 | 2026-11-20 | 2026-11-20 |  |  |  |  |  |  |  |  | 1.5 Cierre |  |  |  |  |  |
| 24 | 1.4 | 15. Monitoreo y control (transversal, fuera de la red) |  | 89d | 2026-08-10 | 2026-11-20 |  | 2026-08-10 | 2026-11-20 | 89d | Ruiz Campos José Fernando [4.63%] | 33h | 3,960 | 3,960 | S1–SC | SM | Reportes y actas | 1.4 Monitoreo y control |  |  |  |  |  |

Notes:
- 1: Desglose de la actividad (3.1a, Tabla 10): / 1. Entrevistar a la propietaria sobre la necesidad y los problemas detectados / 2. Redactar necesidad, objetivo y justificación (1.1.1.1) / 3. Definir restricciones, supuestos y alcance inicial / 4. Elaborar el acta de constitución y obtener la firma de la propietaria (1.1.1.2) / PERT: O = 0.1483, M = 0.3708, P = 0.5933 semanas; Te = (O + 4M + P) / 6 = 0.3708 semanas = 2.225 días; σ² = ((P − O) / 6)² = 0.0055. Esfuerzo: 16 h × $120 = $1,920 MXN. Holgura: 0 (ruta crítica única). / Calidad y sostenibilidad (2.3): AC-16 (D1); SO-12
- 3: Desglose de la actividad (3.1a, Tabla 10): / 1. Identificar a los interesados y su interés e influencia (1.1.2.1) / 2. Registrar las expectativas de la propietaria y de los cajeros / 3. Definir el alcance preliminar y las exclusiones (1.1.2.2) / 4. Validar el alcance preliminar con la propietaria / PERT: O = 0.1483, M = 0.3708, P = 0.5933 semanas; Te = (O + 4M + P) / 6 = 0.3708 semanas = 2.225 días; σ² = ((P − O) / 6)² = 0.0055. Esfuerzo: 16 h × $120 = $1,920 MXN. Holgura: 0 (ruta crítica única). / Calidad y sostenibilidad (2.3): AC-16 (D1)
- 4: Desglose de la actividad (3.1a, Tabla 10): / 1. Observar el flujo del mostrador y entrevistar a los cajeros / 2. Especificar los casos de uso CU-01 a CU-22 y las historias de usuario (1.2.1.1) / 3. Documentar reglas de negocio y criterios de aceptación (1.2.1.2) / 4. Priorizar el Product Backlog por valor operativo / 5. Validar los requisitos con la propietaria / PERT: O = 0.7417, M = 1.1125, P = 1.4833 semanas; Te = (O + 4M + P) / 6 = 1.1125 semanas = 6.675 días; σ² = ((P − O) / 6)² = 0.0153. Esfuerzo: 47 h × $120 = $5,640 MXN. Holgura: 0 (ruta crítica única). / Calidad y sostenibilidad (2.3): AC-02; AC-16 (D2)
- 5: Desglose de la actividad (3.1a, Tabla 10): / 1. Definir la arquitectura SPA, API REST y base de datos (1.2.2.1) / 2. Diseñar el modelo de datos (1.2.2.2) / 3. Diseñar roles, permisos y seguridad de la sesión (1.2.2.3) / 4. Elaborar el prototipo de interfaces en Figma (1.2.2.4) / 5. Revisar el diseño contra los requisitos con la propietaria / PERT: O = 0.7417, M = 1.1125, P = 1.4833 semanas; Te = (O + 4M + P) / 6 = 1.1125 semanas = 6.675 días; σ² = ((P − O) / 6)² = 0.0153. Esfuerzo: 47 h × $120 = $5,640 MXN. Holgura: 0 (ruta crítica única). / Calidad y sostenibilidad (2.3): AC-03; AC-04 (prototipos); SO-04; SO-09
- 6: Desglose de la actividad (3.1a, Tabla 10): / 1. Elaborar el enunciado del alcance, la EDT y su diccionario (1.2.3.1) / 2. Estimar tamaño, duraciones (PERT) y costos; elaborar el cronograma (1.2.3.2) / 3. Elaborar el plan de calidad (1.2.3.3) / 4. Elaborar el plan de gestión de riesgos (1.2.3.4) / 5. Elaborar los planes de comunicación y de RR. HH. (1.2.3.5) / 6. Integrar la línea base y presentarla para aprobación / PERT: O = 0.3708, M = 0.7417, P = 1.1125 semanas; Te = (O + 4M + P) / 6 = 0.7417 semanas = 4.450 días; σ² = ((P − O) / 6)² = 0.0153. Esfuerzo: 31 h × $120 = $3,720 MXN. Holgura: 0 (ruta crítica única). / Calidad y sostenibilidad (2.3): AC-01; AC-16 (D3)
- 8: Desglose de la actividad (3.1a, Tabla 10): / 1. Crear el repositorio y la estructura de la SPA y de la API / 2. Configurar la base de datos de prueba en Docker y las variables de entorno / 3. Configurar la integración continua en GitHub Actions (1.3.1.1) / PERT: O = 0.7417, M = 1.1125, P = 1.4833 semanas; Te = (O + 4M + P) / 6 = 1.1125 semanas = 6.675 días; σ² = ((P − O) / 6)² = 0.0153. Esfuerzo: 47 h × $120 = $5,640 MXN. Holgura: 0 (ruta crítica única). / Calidad y sostenibilidad (2.3): AC-05; AC-06; AC-08; SO-02; SO-05
- 9: Desglose de la actividad (3.1a, Tabla 10): / 1. Implementar la autenticación con JWT y CSRF / 2. Implementar roles, permisos y validación de entradas / 3. Implementar el perfil y las preferencias del negocio (1.3.1.2) / 4. Probar y demostrar el incremento en la Sprint Review / PERT: O = 0.3708, M = 0.7417, P = 1.1125 semanas; Te = (O + 4M + P) / 6 = 0.7417 semanas = 4.450 días; σ² = ((P − O) / 6)² = 0.0153. Esfuerzo: 31 h × $120 = $3,720 MXN. Holgura: 0 (ruta crítica única). / Calidad y sostenibilidad (2.3): AC-08; AC-09; AC-11 (acceso); AC-13; AC-16 (D4)
- 10: Desglose de la actividad (3.1a, Tabla 10): / 1. Refinar las historias del catálogo / 2. Modelar y migrar las tablas de categorías, productos, extras y combos / 3. Implementar la API y las pantallas de categorías y productos (1.3.2.1) / 4. Implementar extras, combos y promociones (1.3.2.2) / 5. Implementar las recetas de los productos (1.3.2.3) / 6. Ejecutar pruebas y demostrar en la Sprint Review / PERT: O = 0.7417, M = 1.1125, P = 1.4833 semanas; Te = (O + 4M + P) / 6 = 1.1125 semanas = 6.675 días; σ² = ((P − O) / 6)² = 0.0153. Esfuerzo: 47 h × $120 = $5,640 MXN. Holgura: 0 (ruta crítica única). / Calidad y sostenibilidad (2.3): AC-08; AC-09; AC-13; AC-16 (D5); SO-03
- 11: Desglose de la actividad (3.1a, Tabla 10): / 1. Refinar las reglas de apertura, cierre y corrección / 2. Implementar la apertura y los movimientos de efectivo (1.3.4.1) / 3. Implementar el cierre, el arqueo y el cierre automático (1.3.4.2) / 4. Implementar la corrección y la reapertura con bitácora (1.3.4.3) / 5. Probar la conciliación y demostrar en la Sprint Review / PERT: O = 0.7417, M = 1.1125, P = 1.4833 semanas; Te = (O + 4M + P) / 6 = 1.1125 semanas = 6.675 días; σ² = ((P − O) / 6)² = 0.0153. Esfuerzo: 47 h × $120 = $5,640 MXN. Holgura: 0 (ruta crítica única). / Calidad y sostenibilidad (2.3): AC-04 (caja); AC-08; AC-09; AC-13; AC-16 (D7)
- 12: Desglose de la actividad (3.1a, Tabla 10): / 1. Refinar las historias de venta y cobro / 2. Implementar el registro de venta y el carrito (1.3.3.1) / 3. Implementar los pagos y los pagos pendientes conectados con caja (1.3.3.2) / 4. Implementar las órdenes del día, entregas y notificaciones (1.3.3.3) / 5. Implementar la cancelación con reversa de pago e inventario (1.3.3.4) / 6. Ejecutar pruebas con cajeros y demostrar en la Sprint Review / PERT: O = 1.1125, M = 1.8542, P = 2.5958 semanas; Te = (O + 4M + P) / 6 = 1.8542 semanas = 11.125 días; σ² = ((P − O) / 6)² = 0.0611. Esfuerzo: 78 h × $120 = $9,360 MXN. Holgura: 0 (ruta crítica única). / Calidad y sostenibilidad (2.3): AC-04 (venta); AC-08; AC-09; AC-10; AC-13; AC-16 (D6); SO-09
- 13: Desglose de la actividad (3.1a, Tabla 10): / 1. Refinar las reglas de existencias y costo promedio / 2. Implementar ingredientes, existencias y costo promedio (1.3.5.1) / 3. Implementar proveedores, compras y recepción (1.3.5.2) / 4. Implementar salidas manuales y conteos físicos (1.3.5.3) / 5. Probar la afectación de existencias y demostrar en la Sprint Review / PERT: O = 0.7417, M = 1.4833, P = 2.2250 semanas; Te = (O + 4M + P) / 6 = 1.4833 semanas = 8.900 días; σ² = ((P − O) / 6)² = 0.0611. Esfuerzo: 63 h × $120 = $7,560 MXN. Holgura: 0 (ruta crítica única). / Calidad y sostenibilidad (2.3): AC-08; AC-09; AC-10; AC-13; AC-16 (D8)
- 14: Desglose de la actividad (3.1a, Tabla 10): / 1. Implementar el registro de gastos y gastos fijos (1.3.6.1) / 2. Implementar el dashboard de indicadores (1.3.6.2) / 3. Implementar el estado de resultados (1.3.6.3) / 4. Verificar los cálculos con casos de prueba y demostrar en la Sprint Review / PERT: O = 0.3708, M = 0.7417, P = 1.1125 semanas; Te = (O + 4M + P) / 6 = 0.7417 semanas = 4.450 días; σ² = ((P − O) / 6)² = 0.0153. Esfuerzo: 31 h × $120 = $3,720 MXN. Holgura: 0 (ruta crítica única). / Calidad y sostenibilidad (2.3): AC-08; AC-09; AC-13; AC-16 (D9); SO-08 (elaboración)
- 15: Desglose de la actividad (3.1a, Tabla 10): / 1. Completar las pruebas unitarias y de integración (1.3.7.1) / 2. Ejecutar las pruebas E2E y de seguridad (1.3.7.2) / 3. Corregir los defectos críticos y altos / 4. Ejecutar las pruebas de aceptación con la propietaria y los cajeros / 5. Emitir el informe de aceptación y de defectos (1.3.7.3) / PERT: O = 1.1125, M = 1.4833, P = 1.8542 semanas; Te = (O + 4M + P) / 6 = 1.4833 semanas = 8.900 días; σ² = ((P − O) / 6)² = 0.0153. Esfuerzo: 63 h × $120 = $7,560 MXN. Holgura: 0 (ruta crítica única). / Calidad y sostenibilidad (2.3): AC-09 y AC-10 (regresión); AC-11; AC-12; AC-14 (UAT); AC-20; AC-16 (D10)
- 17: Desglose de la actividad (3.1a, Tabla 10): / 1. Preparar los ambientes de producción / 2. Desplegar la SPA, la API y la base de datos y verificar el funcionamiento (1.3.8.1) / 3. Elaborar la guía de operación y soporte (1.3.8.2) / 4. Capacitar a los usuarios ADMIN y CAJERO (1.3.8.3) / PERT: O = 0.3708, M = 0.7417, P = 1.1125 semanas; Te = (O + 4M + P) / 6 = 0.7417 semanas = 4.450 días; σ² = ((P − O) / 6)² = 0.0153. Esfuerzo: 31 h × $120 = $3,720 MXN. Holgura: 0 (ruta crítica única). / Calidad y sostenibilidad (2.3): AC-16 (D11); AC-20; SO-01; SO-06; SO-07; SO-08; SO-10
- 19: Desglose de la actividad (3.1a, Tabla 10): / 1. Integrar el paquete de entregables / 2. Realizar la revisión final con la propietaria / 3. Firmar el acta de aceptación (1.5.1.1) / 4. Transferir código, documentación y accesos (1.5.1.2) / PERT: O = 0.0742, M = 0.2225, P = 0.3708 semanas; Te = (O + 4M + P) / 6 = 0.2225 semanas = 1.335 días; σ² = ((P − O) / 6)² = 0.0024. Esfuerzo: 10 h × $120 = $1,200 MXN. Holgura: 0 (ruta crítica única). / Calidad y sostenibilidad (2.3): AC-16 (D12); AC-22
- 21: Desglose de la actividad (3.1a, Tabla 10): / 1. Realizar la retrospectiva final / 2. Documentar las lecciones aprendidas (1.5.2.1) / 3. Registrar y priorizar los pendientes de la versión 2 (1.5.2.2) / PERT: O = 0.1483, M = 0.2967, P = 0.4450 semanas; Te = (O + 4M + P) / 6 = 0.2967 semanas = 1.780 días; σ² = ((P − O) / 6)² = 0.0024. Esfuerzo: 13 h × $120 = $1,560 MXN. Holgura: 0 (ruta crítica única). / Calidad y sostenibilidad (2.3): AC-21; SO-06; SO-11
- 22: Desglose de la actividad (3.1a, Tabla 10): / 1. Comparar horas, costo y fechas reales contra la línea base / 2. Elaborar el reporte final de costo y plazo (1.5.3.1) / 3. Archivar la documentación y cerrar el proyecto (1.5.3.2) / PERT: O = 0.0742, M = 0.2225, P = 0.3708 semanas; Te = (O + 4M + P) / 6 = 0.2225 semanas = 1.335 días; σ² = ((P − O) / 6)² = 0.0024. Esfuerzo: 9 h × $120 = $1,080 MXN. Holgura: 0 (ruta crítica única). / Calidad y sostenibilidad (2.3): AC-21; AC-22; cálculo de M-R3
- 24: Actividad transversal: no forma parte de la red secuencial ni de la ruta crítica (documento 3.2, figura del diagrama de red). Se ejecuta en paralelo con 33 h repartidas en los 89 días (unos 22 minutos diarios). Cada semana: registrar horas; actualizar cronograma y valor ganado (1.4.1.2); revisar riesgos, incidencias y métricas de calidad (1.4.2.1, 1.4.2.2); analizar solicitudes de cambio (1.4.2.3); emitir el reporte de avance (1.4.1.1). Cada sprint: acta de Sprint Review y retrospectiva (1.4.3.1) los sábados 22-ago, 5-sep, 19-sep, 3-oct, 17-oct, 31-oct y 14-nov; etiquetar la versión liberada (1.4.3.2). / Calidad y sostenibilidad (2.3): AC-07; AC-15; AC-17; AC-18; AC-19; SO-05; SO-12
